# Simple Project Plan

Schedule from MS Project, 2016-04-18 to 2016-05-13.
Microsoft Corporation

## Calendars

- Estándar: Mon-Fri 09:00-13:00, 15:00-19:00; Sat-Sun off.

## Schedule

| ID | WBS | Task | Duration | Start | Finish | Predecessors | Total slack | Constraint |
| --- | --- | --- | --- | --- | --- | --- | --- | --- |
| 1 | 1 | **OT 25455 Ar. Compresor ES-8** | 19.44d | 2016-04-18 09:00 | 2016-05-13 12:30 |  | 0d |  |
| 2 | 1.1 | **Activar Subcontratos y compras** | 12d | 2016-04-18 09:00 | 2016-05-03 19:00 |  | 0d |  |
| 3 | 1.1.1 | Preparar subcontrato | 1d | 2016-04-18 09:00 | 2016-04-18 19:00 |  | 18.44d | start no earlier than 2016-04-18 09:00 |
| 4 | 1.1.2 | Comprar repuestos | 12d | 2016-04-18 09:00 | 2016-05-03 19:00 |  | 0d |  |
| 5 | 1.2 | **Limpieza y mantenimiento** | 3.38d | 2016-05-04 09:00 | 2016-05-09 12:00 |  | 0d |  |
| 6 | 1.2.1 | LIMPIEZA A EQUIPO COMPRESOR | 1h | 2016-05-04 09:00 | 2016-05-04 10:00 | 4 | 0d |  |
| 7 | 1.2.2 | LIMPIEZA A ENFRIADORES CON DESMONTAJE | 3h | 2016-05-04 10:00 | 2016-05-04 13:00 | 6 | 0d |  |
| 8 | 1.2.3 | MANTENIMIENTO A VALVULA DE ADMISION CON CAMBIO DE KIT | 1h | 2016-05-04 15:00 | 2016-05-04 16:00 | 7 | 0d |  |
| 9 | 1.2.4 | MANTENIMIENTO A VALVULA DE MINIMA PRESION CON CAMBIO DE KIT | 1h | 2016-05-04 16:00 | 2016-05-04 17:00 | 8 | 0d |  |
| 10 | 1.2.5 | MANTENIMIENTO A VALVULA TERMOSTATICA CON CAMBIO DE KIT | 1h | 2016-05-04 17:00 | 2016-05-04 18:00 | 9 | 0d |  |
| 11 | 1.2.6 | MANTENIMIENTO A VALVULA REGULADORA DE PRESION CON CAMBIO DE KIT | 1h | 2016-05-04 18:00 | 2016-05-04 19:00 | 10 | 0d |  |
| 12 | 1.2.7 | MANTENIMIENTO A SISTEMA DE ACOPLAMIENTO CON CAMBIO DE ELASTOMERO | 2h | 2016-05-05 09:00 | 2016-05-05 11:00 | 11 | 0d |  |
| 13 | 1.2.8 | MANTENIMIENTO A TABLERO DE CONTROL | 1h | 2016-05-05 11:00 | 2016-05-05 12:00 | 12 | 0d |  |
| 14 | 1.2.9 | MANTENIMIENTO A CONTACTORES | 2h | 2016-05-05 12:00 | 2016-05-05 16:00 | 13 | 0d |  |
| 15 | 1.2.10 | MANTENIMIENTO A VALVULAS SOLENOIDES CON CAMBIO DE KIT | 2h | 2016-05-05 16:00 | 2016-05-05 18:00 | 14 | 0d |  |
| 16 | 1.2.11 | MANTENIMIENTO A MOTOR CON CAMBIO DE RODAMIENTOS Y REFORZAMIENTO DE BOBINADO | 12h | 2016-05-05 18:00 | 2016-05-09 12:00 | 15 | 0d |  |
| 17 | 1.3 | **Armado** | 2.62d | 2016-05-09 12:00 | 2016-05-11 19:00 |  | 0d |  |
| 18 | 1.3.1 | MONTAJE DE MOTOR | 2h | 2016-05-09 12:00 | 2016-05-09 16:00 | 16 | 0d |  |
| 19 | 1.3.2 | REEMPLAZO DE FILTRO DE AIRE | 0.5h | 2016-05-09 16:00 | 2016-05-09 16:30 | 18 | 0d |  |
| 20 | 1.3.3 | REEMPLAZO DE FILTRO DE ACEITE | 0.5h | 2016-05-09 16:30 | 2016-05-09 17:00 | 19 | 0d |  |
| 21 | 1.3.4 | REEMPLAZO DE ELEMENTO SEPARADOR Y MANTENIMIENTO LINEA DE BARRIDO | 1h | 2016-05-09 17:00 | 2016-05-09 18:00 | 20 | 0d |  |
| 22 | 1.3.5 | REEMPLAZO DE ACEITE | 1h | 2016-05-09 18:00 | 2016-05-09 19:00 | 21 | 0d |  |
| 23 | 1.3.6 | REEMPLAZO DE CONTACTORES | 0.5h | 2016-05-10 09:00 | 2016-05-10 09:30 | 22 | 0d |  |
| 24 | 1.3.7 | REEMPLAZO DE RELE DE PROTECCION | 0.5h | 2016-05-10 09:30 | 2016-05-10 10:00 | 23 | 0d |  |
| 25 | 1.3.8 | REEMPLAZO DE MONITOR DE FASE | 0.5h | 2016-05-10 10:00 | 2016-05-10 10:30 | 24 | 0d |  |
| 26 | 1.3.9 | REEMPLAZO DE BASE MONITOR DE FASE | 0.5h | 2016-05-10 10:30 | 2016-05-10 11:00 | 25 | 0d |  |
| 27 | 1.3.10 | REEMPLAZO DE DUCTOS SEÑAL NEUMATICA | 2h | 2016-05-10 11:00 | 2016-05-10 13:00 | 26 | 0d |  |
| 28 | 1.3.11 | REEMPLAZO DE VALVULAS SOLENOIDES | 1h | 2016-05-10 15:00 | 2016-05-10 16:00 | 27 | 0d |  |
| 29 | 1.3.12 | REEMPLAZO DE UNIDAD COMPRESORA | 4h | 2016-05-10 16:00 | 2016-05-11 10:00 | 28 | 0d |  |
| 30 | 1.3.13 | REEMPLAZO DE CONTROLADOR | 1h | 2016-05-11 10:00 | 2016-05-11 11:00 | 29 | 0d |  |
| 31 | 1.3.14 | REEMPLAZO DE TARJETA I/O | 2h | 2016-05-11 11:00 | 2016-05-11 13:00 | 30 | 0d |  |
| 32 | 1.3.15 | REEMPLAZO DE MOTOR | 4h | 2016-05-11 15:00 | 2016-05-11 19:00 | 31 | 0d |  |

Notes:
- 1: Esta es una tarea de resumen. Use las tareas de resumen para poder organizar un proyecto en secciones.

| ID | WBS | Task | Duration | Start | Finish | Predecessors | Total slack |
| --- | --- | --- | --- | --- | --- | --- | --- |
| 33 | 1.4 | **Informe** | 0.25d | 2016-05-12 09:00 | 2016-05-12 11:00 |  | 1.19d |
| 34 | 1.4.1 | Emitir informe final | 2h | 2016-05-12 09:00 | 2016-05-12 11:00 | 32 | 1.19d |
| 35 | 1.5 | **Pintado y embalaje** | 1.44d | 2016-05-12 09:00 | 2016-05-13 12:30 |  | 0d |
| 36 | 1.5.1 | Pintado equipo y Secado | 8h | 2016-05-12 09:00 | 2016-05-12 19:00 | 32 | 0d |
| 37 | 1.5.2 | Pintar atril | 1h | 2016-05-13 09:00 | 2016-05-13 10:00 | 36 | 0d |
| 38 | 1.5.3 | Montar equipo en atril | 1h | 2016-05-13 10:00 | 2016-05-13 11:00 | 37 | 0d |
| 39 | 1.5.4 | Plastificar | 1h | 2016-05-13 11:00 | 2016-05-13 12:00 | 38 | 0d |
| 40 | 1.5.5 | Sacar fotografias de despacho | 0.5h | 2016-05-13 12:00 | 2016-05-13 12:30 | 39 | 0d |
