# Simple Project Plan

Schedule from MS Project, 2016-04-08 to 2016-04-14, A marks actual dates.
Microsoft Corporation

## Calendars

- Estándar: Mon-Fri 09:00-13:00, 15:00-19:00; Sat-Sun off.

## Schedule

| ID | WBS | Task | Duration | Start | Finish | Predecessors | Complete | Remaining | Total slack | Constraint |
| --- | --- | --- | --- | --- | --- | --- | --- | --- | --- | --- |
| 1 | 1 | **OT 25471 Ev. Compresor ES-8** | 4.2d | 2016-04-08 09:00 A | 2016-04-14 10:36 |  | 80% | 0.83d | 0d |  |
| 2 | 1.1 | **Activación OT** | 4.01d | 2016-04-08 09:00 A | 2016-04-14 09:06 A |  | 100% |  |  |  |
| 3 | 1.1.1 | Activar detalle de reparación | 0.1h | 2016-04-08 09:00 A | 2016-04-08 09:06 A |  | 100% |  |  | start no earlier than 2016-04-08 09:00 |
| 4 | 1.1.2 | VERIFICAR ESTADO DE RECEPCION DE EQUIPO (registro fotográfico R.F.) | 32h | 2016-04-08 09:06 A | 2016-04-14 09:06 A | 3 | 100% |  |  |  |
| 5 | 1.2 | **Limpieza** | 0.38d | 2016-04-08 09:06 A | 2016-04-08 12:06 A |  | 100% |  |  |  |
| 6 | 1.2.1 | Limpieza exterior a equipo | 2h | 2016-04-08 09:06 A | 2016-04-08 11:06 A | 3 | 100% |  |  | start no earlier than 2015-11-18 09:00 |
| 7 | 1.2.2 | Drenaje de aceite | 1h | 2016-04-08 11:06 A | 2016-04-08 12:06 A | 6 | 100% |  |  |  |
| 8 | 1.3 | **Desarme** | 0.56d | 2016-04-08 12:06 A | 2016-04-08 18:36 A |  | 100% |  |  |  |
| 9 | 1.3.1 | EVALUAR ESTADO DE FILTRO DE AIRE (R.F.) | 0.5h | 2016-04-08 12:06 A | 2016-04-08 12:36 A | 7 | 100% |  |  |  |
| 10 | 1.3.2 | EVALUAR ESTADO DEL FILTRO DE ACEITE (R.F.) | 0.5h | 2016-04-08 12:36 A | 2016-04-08 15:06 A | 9 | 100% |  |  |  |
| 11 | 1.3.3 | EVALUAR ESTADO DE ELEMENTO SEPARADOR (R.F.) | 1h | 2016-04-08 15:06 A | 2016-04-08 16:06 A | 10 | 100% |  |  |  |
| 12 | 1.3.4 | VERIFICAR NIVEL DE ACEITE (R.F.) | 0.5h | 2016-04-08 16:06 A | 2016-04-08 16:36 A | 11 | 100% |  |  |  |
| 13 | 1.3.5 | EVALUAR ESTADO DE COMPONENTES DEL TABLERO DE CONTROL (R.F.) | 1h | 2016-04-08 16:36 A | 2016-04-08 17:36 A | 12 | 100% |  |  |  |
| 14 | 1.3.6 | VERIFICAR GIRO MANUAL DE MOTOR Y UNIDAD COMPRESORA (R.F.) | 1h | 2016-04-08 17:36 A | 2016-04-08 18:36 A | 13 | 100% |  |  |  |
| 15 | 1.4 | **Controloes** | 0.75d | 2016-04-08 18:36 A | 2016-04-11 16:36 A |  | 100% |  |  |  |
| 16 | 1.4.1 | MEDIR AISLACION DE BOBINADO MOTOR PRINCIPAL (R.F.) | 1h | 2016-04-08 18:36 A | 2016-04-11 09:36 A | 14 | 100% |  |  |  |
| 17 | 1.4.2 | VERIFICAR ESTADO DE MANGUERAS (R.F.) | 1h | 2016-04-11 09:36 A | 2016-04-11 10:36 A | 16 | 100% |  |  |  |
| 18 | 1.4.3 | VERIFICAR ESTADO DE ELECTROVALVULAS (R.F.) | 1h | 2016-04-11 10:36 A | 2016-04-11 11:36 A | 17 | 100% |  |  |  |
| 19 | 1.4.4 | VERIFICAR ESTADO DEL CONTROLADOR (R.F.) | 0.5h | 2016-04-11 11:36 A | 2016-04-11 12:06 A | 18 | 100% |  |  |  |
| 20 | 1.4.5 | VERIFICAR ESTADO DE COMPONENTES SISTEMA CONTROL NEUMATICO (R.F.) | 1h | 2016-04-11 12:06 A | 2016-04-11 15:06 A | 19 | 100% |  |  |  |
| 21 | 1.4.6 | REALIZAR PRUEBAS DE OPERACIÓN CON REGISTRO DE PARAMETROS (R.F.) | 1h | 2016-04-11 15:06 A | 2016-04-11 16:06 A | 20 | 100% |  |  |  |
| 22 | 1.4.7 | Evaluación de atril | 0.5h | 2016-04-11 16:06 A | 2016-04-11 16:36 A | 21 | 100% |  |  |  |
| 23 | 1.5 | **Informe y preservación** | 1.38d | 2016-04-11 16:36 A | 2016-04-13 09:36 A |  | 100% |  |  |  |
| 24 | 1.5.1 | Llenar detalle de raparación | 2h | 2016-04-11 16:36 A | 2016-04-11 18:36 A | 22 | 100% |  |  |  |
| 25 | 1.5.2 | ELABORAR INFORME TECNICO | 4h | 2016-04-11 18:36 A | 2016-04-12 12:36 A | 21, 24 | 100% |  |  |  |
| 26 | 1.5.3 | Preservación de equipo | 5h | 2016-04-12 12:36 A | 2016-04-13 09:36 A | 25 | 100% |  |  |  |

Notes:
- 1: Esta es una tarea de resumen. Use las tareas de resumen para poder organizar un proyecto en secciones.
- 10: Esta es una tarea hito. Configure una tarea a una duración 0d para marcar un evento en el proyecto.

| ID | WBS | Task | Duration | Start | Finish | Predecessors | Total slack |
| --- | --- | --- | --- | --- | --- | --- | --- |
| 27 | 1.6 | **Presupuesto** | 1.75d | 2016-04-12 12:36 | 2016-04-14 10:36 |  | 0d |
| 28 | 1.6.1 | Realizar presupuesto | 14h | 2016-04-12 12:36 | 2016-04-14 10:36 | 25 | 0d |
