# Gantt Proyecto de Planificacion v1.0

Schedule from MS Project, 2016-07-07 to 2018-11-06, A marks actual dates.

## Calendars

- MD - 2015/2016: Mon-Fri 07:45-12:30, 13:15-17:00; Sat-Sun off. Exceptions (off unless hours are given): 2015-05-01 to 2024-05-01 (Día del trabajo, recurring), 2015-05-21 to 2024-05-21 (Glorias Navales, recurring), 2015-06-27 to 2024-06-27 (San Pedro y San Pablo, recurring), 2015-07-16 to 2024-07-16 (Solemnidad de la virgen del Carmen, recurring), 2015-08-15 to 2024-08-15 (Asuncion de la Virgen, recurring), 2015-09-18 to 2024-09-18 (Fiestas Patrias, recurring), 2015-09-19 to 2024-09-19 (Glorias Del Ejercito, recurring), 2015-10-12 to 2024-10-12 (Día de Descubrimiento de 2 Mundos, recurring), 2015-10-31 to 2024-10-31 (Día de las Iglesias Evangelicas y Protestantes, recurring), 2015-11-01 to 2024-11-01 (Día de Todos Los Santos, recurring), 2015-12-08 to 2024-12-08 (Día de la inmaculada Concepción, recurring), 2015-12-25 to 2024-12-25 (Navidad, recurring), 2016-01-01 to 2025-01-01 (Año Nuevo, recurring).

## Resources

| Resource |
| --- |
| Eduado Pino |
| Gabriel Medina |
| Hernan Cares |
| Claudio Alvarez |
| Ilic Alarcon |
| Carlos Belmar |
| Oscar Torres |
| Victor Acevedo |
| Francisco Vargas |
| Francisco Gomez |
| Cesar Toro |
| Sergio Soto |
| Luis Godoy |
| Juan Carlos Toro |
| Aldo Recabal |
| Danilo San martin |
| Diego Quezada |
| Daniel Gutierrez |
| Alonso Silva |
| Marcelo vargas |
| Hector Adriazola |
| Jendri Calderon |
| Daniel Osorio |

## Schedule

| ID | WBS | Task | Duration | Start | Finish | Predecessors | Complete | Remaining | Total slack | Free slack | Constraint | Work | Text3 |
| --- | --- | --- | --- | --- | --- | --- | --- | --- | --- | --- | --- | --- | --- |
| 1 | 1 | Reunion Introduccion Antofagasta | 1h | 2016-07-11 A | 2016-07-11 A |  | 100% |  |  |  | start no earlier than 2016-07-11 |  |  |
| 2 | 2 | Reunion Avances N°2 | 30min | 2016-07-15 A | 2016-07-15 A |  | 100% |  |  |  | start no earlier than 2016-07-15 |  |  |
| 3 | 3 | Definiciones Alcances y Compromisos | 1d? | 2016-07-07 A | 2016-07-07 A |  | 100% |  |  |  |  |  |  |
| 4 | 4 | **Definicion Capacidades de Recursos** | 11.53d | 2016-07-11 A | 2016-07-25 |  | 71% | 3.3d | 47.34d |  |  |  |  |
| 5 | 4.1 | Recepcion Capacidades Trabajadores CCP | 4.25d | 2016-07-11 A | 2016-07-14 A |  | 100% |  |  |  | start no earlier than 2016-07-11 |  | Manuel Morales |
| 6 | 4.2 | Recepcion Capacidades Trabajadores Stgo | 4.19d | 2016-07-11 A | 2016-07-14 A |  | 100% |  |  |  | finish no earlier than 2016-07-14 |  |  |
| 7 | 4.3 | Recepcion Capacidades Trabajadores Afta | 4d | 2016-07-11 A | 2016-07-15 | 1 | 90% | 0.4d | 1.84d | 0d | start no earlier than 2016-07-11 |  | Pablo Carrasco |
| 8 | 4.4 | Analisis de Capacidades Trabajadores | 4d | 2016-07-15 A | 2016-07-21 | 7, 6, 5 | 46% | 2.16d | 47.34d | 0d | start no earlier than 2016-07-13 |  |  |
| 9 | 4.5 | Pre definicion de Centros de Trabajo | 3d | 2016-07-21 | 2016-07-25 | 8 |  |  | 47.34d | 10.34d |  |  |  |
| 10 | 5 | **Definicion de Maestros de Reparacion** | 61d? | 2016-07-07 A | 2016-09-28 |  | 2% | 59.65d? | 557.06d |  |  | 816h |  |
| 11 | 5.1 | **Definicion y Ordenamiento de Modelos de Componente** | 40d | 2016-07-07 A | 2016-08-30 |  |  | 40d | 0d |  |  |  |  |
| 12 | 5.1.1 | Estadistica Rotacion de Componentes | 1mo | 2016-07-07 A | 2016-08-02 |  |  | 1mo | 0d |  | start no earlier than 2016-07-07 |  |  |
| 13 | 5.1.2 | Definicion de componentes Muestra Por Area | 1mo | 2016-08-02 | 2016-08-30 | 12 |  |  | 0d |  |  |  |  |
| 14 | 5.2 | **Diseño Listado de Tareas** | 47d? | 2016-07-11 A | 2016-09-13 |  | 20% | 37.4d? | 568.06d |  |  |  |  |
| 15 | 5.2.1 | Listado Inicial de Tareas - Reductores Paralelos | 1d? | 2016-07-11 A | 2016-08-31 | 13 | 40% | 0.6d? | 577.46d |  |  |  | Aldo Recabal |
| 16 | 5.2.2 | Listado Inicial de Tareas - Reductores Planetarios | 1d? | 2016-07-12 A | 2016-07-13 A | 15 | 100% |  |  |  |  |  | Aldo Recabal |
| 17 | 5.2.3 | Listado Inicial de Tareas - Transmisiones | 1d? | 2016-07-13 A | 2016-07-14 A | 16 | 100% |  |  |  |  |  | Aldo Recabal |
| 18 | 5.2.4 | Listado Inicial de Tareas - Cilindros | 1d? | 2016-07-11 A | 2016-08-31 | 13 | 60% | 0.4d? | 0.6d |  |  |  | Diego Quezada |
| 19 | 5.2.5 | Listado Inicial de Tareas - Bombas | 1d? | 2016-07-11 A | 2016-08-31 | 13 | 40% | 0.6d? | 0.4d |  |  |  | Daniel Gutierrez |
| 20 | 5.2.6 | Listado Inicial de Tareas - Compresores | 1d? | 2016-07-11 A | 2016-07-12 A | 13 | 100% |  |  |  |  |  |  |
| 21 | 5.2.7 | Listado Inicial de Tareas - Motores | 1d? | 2016-08-30 | 2016-08-31 | 13 |  |  | 0d |  |  |  |  |
| 22 | 5.2.8 | Listado Inicial de Tareas - Torno | 1d? | 2016-08-30 | 2016-08-31 | 13 |  |  | 0d |  |  |  |  |
| 23 | 5.2.9 | Listado Inicial de Tareas - Soldadura | 1d? | 2016-08-30 | 2016-08-31 | 13 |  |  | 0d |  |  |  |  |
| 24 | 5.2.10 | Analisis y consolidacion tipos de Tareas | 1w | 2016-08-31 | 2016-09-07 | 23, 22, 21, 19, 18, 17, 20 |  |  | 0d |  |  |  |  |

| ID | WBS | Task | Duration | Start | Finish | Predecessors | Complete | Remaining | Total slack | Free slack | Constraint | Resources | Work |
| --- | --- | --- | --- | --- | --- | --- | --- | --- | --- | --- | --- | --- | --- |
| 25 | 5.2.11 | **Definicion Tipos de Tareas** | 43d? | 2016-07-15 A | 2016-09-13 |  | 5% | 40.85d? | 10d |  |  |  |  |
| 26 | 5.2.11.1 | analisis tipo tareas - AFTA | 3d | 2016-07-15 A | 2016-09-09 | 24 | 17% | 2.5d | 10.5d | 0.5d |  |  |  |
| 27 | 5.2.11.2 | analisis tipo tareas - CCP | 3d | 2016-09-07 | 2016-09-12 | 24 |  |  | 10d | 0d |  |  |  |
| 28 | 5.2.11.3 | analisis tipo tareas - STGO | 3d | 2016-09-07 | 2016-09-12 | 24 |  |  | 10d | 0d |  |  |  |
| 29 | 5.2.11.4 | Consolidacion listado Tipos de Tareas | 1d? | 2016-09-12 | 2016-09-13 | 28, 27, 26 |  |  | 10d |  |  |  |  |
| 30 | 5.3 | **Diseño Listado de Repuestos** | 20d | 2016-08-30 | 2016-09-27 |  |  |  | 0d |  |  |  | 816h |
| 31 | 5.3.1 | Listado Inicial de Repuestos - Reductores Paralelos | 17d | 2016-08-30 | 2016-09-22 | 13 |  |  | 0d |  |  | Alonso Silva | 136h |
| 32 | 5.3.2 | Listado Inicial de Repuestos - Reductores Planetarios | 17d | 2016-08-30 | 2016-09-22 | 13 |  |  | 0d |  |  | Marcelo vargas | 136h |
| 33 | 5.3.3 | Listado Inicial de Repuestos - Transmisiones | 17d | 2016-08-30 | 2016-09-22 | 13 |  |  | 0d |  |  | Hector Adriazola | 136h |
| 34 | 5.3.4 | Listado Inicial de Repuestos - Cilindros | 17d | 2016-08-30 | 2016-09-22 | 13 |  |  | 0d |  |  | Jendri Calderon | 136h |
| 35 | 5.3.5 | Listado Inicial de Repuestos - Bombas | 17d | 2016-08-30 | 2016-09-22 | 13 |  |  | 0d |  |  |  |  |
| 36 | 5.3.6 | Listado Inicial de Repuestos - Compresores | 17d | 2016-08-30 | 2016-09-22 | 13 |  |  | 0d |  |  | Daniel Osorio | 136h |
| 37 | 5.3.7 | Listado Inicial de Repuestos - Motores | 17d | 2016-08-30 | 2016-09-22 | 13 |  |  | 0d |  |  | Juan Carlos Toro | 136h |
| 38 | 5.3.8 | Listado Inicial de Repuestos - Torno | 17d | 2016-08-30 | 2016-09-22 | 13 |  |  | 0d |  |  |  |  |
| 39 | 5.3.9 | Listado Inicial de Repuestos - Soldadura | 17d | 2016-08-30 | 2016-09-22 | 13 |  |  | 0d |  |  |  |  |
| 40 | 5.3.10 | Analisis y consolidacion tipos de Repuestos y Manuales de Parte | 3d | 2016-09-22 | 2016-09-27 | 31, 32, 33, 34, 35, 36, 37, 38, 39 |  |  | 0d |  |  |  |  |
| 41 | 5.4 | Diseño Tipos de Reparacion | 1d? | 2016-09-27 | 2016-09-28 | 40, 29 |  |  | 0d |  |  |  |  |
| 42 | 6 | **Centros De Trabajo** | 37.6d? | 2016-08-08 A | 2016-09-28 |  | 40% | 22.56d? | 555.46d |  |  |  |  |
| 43 | 6.1 | Revision estructura Centros de Trabajo | 1d? | 2016-08-08 A | 2016-09-28 | 9, 41 | 40% | 0.6d? | 555.46d | 0d |  |  |  |
| 44 | 7 | Analisis sistemas de planificacion otras Empresas | 1d? | 2016-09-28 | 2016-09-29 | 43 |  |  | 555.46d |  | start no earlier than 2016-07-29 |  |  |
| 45 | 8 | **Implementación Hojas de Ruta** | 10d | 2016-07-07 | 2016-07-20 |  |  |  | 608.06d |  |  |  |  |
| 46 | 8.1 | **implementacion Areas** | 10d | 2016-07-07 | 2016-07-20 |  |  |  | 608.06d |  |  |  |  |
| 47 | 8.1.1 | Transmisiones | 2w | 2016-07-07 | 2016-07-20 |  |  |  | 608.06d |  |  |  |  |
| 48 | 8.1.2 | Reductores | 2w | 2016-07-07 | 2016-07-20 |  |  |  | 608.06d |  |  |  |  |
| 49 | 8.1.3 | Compresores | 2w | 2016-07-07 | 2016-07-20 |  |  |  | 608.06d |  |  |  |  |
| 50 | 8.1.4 | Bombas | 2w | 2016-07-07 | 2016-07-20 |  |  |  | 608.06d |  |  |  |  |
| 51 | 8.1.5 | Equipos y Agmin | 2w | 2016-07-07 | 2016-07-20 |  |  |  | 608.06d |  |  |  |  |
| 52 | 8.1.6 | Cilindros | 2w | 2016-07-07 | 2016-07-20 |  |  |  | 608.06d |  |  |  |  |
| 53 | 8.1.7 | Fabricacion y Recuperacion | 2w | 2016-07-07 | 2016-07-20 |  |  |  | 608.06d |  |  |  |  |
| 54 | 8.1.8 | motores | 2w | 2016-07-07 | 2016-07-20 |  |  |  | 608.06d |  |  |  |  |

| ID | WBS | Task | Duration | Start | Finish | Predecessors | Complete | Remaining | Total slack | Free slack | Constraint |
| --- | --- | --- | --- | --- | --- | --- | --- | --- | --- | --- | --- |
| 55 | 9 | **requerimiento de especificaciones Tecnicas** | 42.25d | 2016-08-04 A | 2016-09-30 |  | 2% | 41.48d | 554.56d |  |  |
| 56 | 9.1 | Catastro funcional SISCOM según etapas | 2w | 2016-08-04 | 2016-08-18 |  |  |  | 583.69d | 29.12d | start no earlier than 2016-08-04 |
| 57 | 9.2 | Análisis e Informe del catastro | 2w | 2016-08-04 A | 2016-08-18 |  | 10% | 1.8w | 583.69d | 29.12d | start no earlier than 2016-08-04 |
| 58 | 9.3 | **Analisis software externos** | 31.69d | 2016-08-16 | 2016-09-27 |  |  |  | 557.69d |  |  |
| 59 | 9.3.1 | Revision proveedores | 4d | 2016-08-16 | 2016-08-19 |  |  |  | 565.38d | 0d | start no earlier than 2016-08-16 |
| 60 | 9.3.2 | **Envío de alcances** | 27.69d | 2016-08-19 | 2016-09-27 | 59 |  |  | 557.69d |  |  |
| 61 | 9.3.2.1 | Levantamiento externo | 1mo | 2016-08-19 | 2016-09-15 |  |  |  | 565.38d |  |  |
| 62 | 9.3.2.2 | Recepcion de propuestas | 5d | 2016-09-15 | 2016-09-22 |  |  |  | 554.56d | 0d | finish no earlier than 2016-09-22 |
| 63 | 9.3.2.3 | Análisis de propuestas | 3d | 2016-09-23 | 2016-09-27 | 62 |  |  | 554.56d | 0d |  |
| 64 | 9.4 | Análisis de alternativas | 3d | 2016-09-27 | 2016-09-30 | 56, 57, 63 |  |  | 554.56d | 0d |  |
| 65 | 9.5 | Presentación de alternativas | 1h | 2016-09-30 | 2016-09-30 | 64 |  |  | 554.56d |  |  |
| 66 | 10 | **Informe de Requerimiento y Propuesta de Solucion** | 576.62d | 2016-09-01 | 2018-11-06 |  |  |  | 0d |  |  |
| 67 | 10.1 | **Recepcion de componentes** | 15.5d | 2016-09-01 | 2016-09-22 |  |  |  | 105.12d |  |  |
| 68 | 10.1.1 | Toma de requerimientos | 4h | 2016-09-01 | 2016-09-01 |  |  |  | 105.12d | 0d | start no earlier than 2016-09-01 |
| 69 | 10.1.2 | Informe del requerimiento | 2d | 2016-09-01 | 2016-09-05 | 68 |  |  | 105.12d | 0d |  |
| 70 | 10.1.3 | Desarrollo del modulo | 1w | 2016-09-05 | 2016-09-12 | 69 |  |  | 105.12d | 0d |  |
| 71 | 10.1.4 | **Testing (Certificación)** | 2d | 2016-09-12 | 2016-09-13 |  |  |  | 561.12d |  |  |
| 72 | 10.1.4.1 | revision interna | 1d | 2016-09-12 | 2016-09-12 | 70 |  |  | 561.12d | 0d |  |
| 73 | 10.1.4.2 | revision usuario | 1d | 2016-09-13 | 2016-09-13 | 72 |  |  | 561.12d | 0d |  |
| 74 | 10.1.5 | Capacitaciones | 1d | 2016-09-13 | 2016-09-14 | 73 |  |  | 561.12d | 0d |  |
| 75 | 10.1.6 | Paso a producción y Puesta en marcha | 1w | 2016-09-14 | 2016-09-22 | 74 |  |  | 561.12d |  |  |
| 76 | 10.2 | **Evaluar trabajo** | 165.12d | 2016-09-12 | 2017-04-24 |  |  |  | 5.12d |  |  |
| 77 | 10.2.1 | Toma de requerimientos | 2w | 2016-09-12 | 2016-09-26 | 70 |  |  | 105.12d | 0d |  |
| 78 | 10.2.2 | Informe del requerimiento | 1w | 2016-09-26 | 2016-10-03 | 77 |  |  | 105.12d | 0d |  |
| 79 | 10.2.3 | Modelamiento de Datos | 1w | 2016-10-03 | 2016-10-07 | 78 |  |  | 105.12d | 0d |  |
| 80 | 10.2.4 | Ordenamiento de datos | 2w | 2016-10-07 | 2016-10-24 | 79 |  |  | 539.12d |  |  |

| ID | WBS | Task | Type | Duration | Start | Finish | Predecessors | Total slack | Free slack |
| --- | --- | --- | --- | --- | --- | --- | --- | --- | --- |
| 81 | 10.2.5 | **Desarrollo del modulo** |  | 6mo | 2016-09-16 | 2017-03-01 | 79 |  |  |
| 82 | 10.2.5.1 | Centros de trabajo | milestone | 0d | 2016-09-16 | 2016-09-16 |  | 120d |  |
| 83 | 10.2.5.2 | Mantenedor de componentes | milestone | 0d | 2016-09-16 | 2016-09-16 |  | 120d |  |
| 84 | 10.2.5.3 | Mantenedor de manuales de parte y repuestos | milestone | 0d | 2016-09-16 | 2016-09-16 |  | 120d |  |
| 85 | 10.2.5.4 | Mantenedor de temparios | milestone | 0d | 2016-09-16 | 2016-09-16 |  | 120d |  |
| 86 | 10.2.5.5 | Mantenedor de tareas y tiempos | milestone | 0d | 2016-09-16 | 2016-09-16 |  | 120d |  |
| 87 | 10.2.5.6 | **Detalle de evaluación** |  | 0d | 2016-09-16 | 2016-09-16 |  | 120d |  |
| 88 | 10.2.5.6.1 | Hojas de rutas | milestone | 0d | 2016-09-16 | 2016-09-16 |  | 120d |  |
| 89 | 10.2.5.7 | **Detalle de reparación** |  | 0d | 2016-09-16 | 2016-09-16 |  | 120d |  |
| 90 | 10.2.5.7.1 | Hojas de rutas | milestone | 0d | 2016-09-16 | 2016-09-16 |  | 120d |  |
| 91 | 10.2.6 | **Testing (Certificación)** |  | 15d | 2017-03-01 | 2017-03-21 |  | 0d |  |
| 92 | 10.2.6.1 | revision interna |  | 2w | 2017-03-01 | 2017-03-15 | 81 | 0d |  |
| 93 | 10.2.6.2 | revision usuario |  | 1w | 2017-03-15 | 2017-03-21 | 92 | 0d |  |
| 94 | 10.2.7 | Capacitaciones |  | 2w | 2017-03-21 | 2017-04-04 | 93 | 0d |  |
| 95 | 10.2.8 | Paso a producción y Puesta en marcha |  | 3w | 2017-04-04 | 2017-04-24 | 94 | 0d |  |
| 96 | 10.3 | **Reparacion** |  | 155d | 2017-03-01 | 2017-09-28 |  | 0d |  |
| 97 | 10.3.1 | Toma de requerimientos |  | 1w | 2017-03-01 | 2017-03-08 | 81 | 32d | 0d |
| 98 | 10.3.2 | Informe del requerimiento |  | 3d | 2017-03-08 | 2017-03-13 | 97 | 32d |  |
| 99 | 10.3.3 | Desarrollo del modulo |  | 4mo | 2017-04-24 | 2017-08-09 | 98, 95 | 0d |  |
| 100 | 10.3.4 | **Testing (Certificación)** |  | 15d | 2017-08-09 | 2017-08-30 |  | 0d |  |
| 101 | 10.3.4.1 | revision interna |  | 1w | 2017-08-09 | 2017-08-17 | 99 | 0d |  |
| 102 | 10.3.4.2 | revision usuario |  | 2w | 2017-08-17 | 2017-08-30 | 101 | 0d |  |
| 103 | 10.3.5 | Capacitaciones |  | 1w | 2017-08-30 | 2017-09-06 | 102 | 0d |  |
| 104 | 10.3.6 | Paso a producción y Puesta en marcha |  | 3w | 2017-09-06 | 2017-09-28 | 103 | 0d |  |

| ID | WBS | Task | Duration | Start | Finish | Predecessors | Total slack | Free slack |
| --- | --- | --- | --- | --- | --- | --- | --- | --- |
| 105 | 10.4 | **Proceso Compras** | 63d | 2017-08-09 | 2017-11-09 |  | 2d |  |
| 106 | 10.4.1 | Toma de requerimientos | 1w | 2017-08-09 | 2017-08-17 | 99 | 27d | 0d |
| 107 | 10.4.2 | Informe del requerimiento | 3d | 2017-08-17 | 2017-08-22 | 106 | 27d |  |
| 108 | 10.4.3 | Desarrollo del modulo | 2w | 2017-09-28 | 2017-10-13 | 107, 104 | 0d |  |
| 109 | 10.4.4 | **Testing (Certificación)** | 8d | 2017-10-13 | 2017-10-24 |  | 2d |  |
| 110 | 10.4.4.1 | revision interna | 3d | 2017-10-13 | 2017-10-17 | 108 | 2d | 0d |
| 111 | 10.4.4.2 | pruebas abiertas | 1w | 2017-10-17 | 2017-10-24 | 110 | 2d | 0d |
| 112 | 10.4.5 | Capacitaciones | 1w | 2017-10-24 | 2017-11-02 | 111 | 2d | 0d |
| 113 | 10.4.6 | Paso a producción y Puesta en Marcha | 1w | 2017-11-02 | 2017-11-09 | 112 | 2d |  |
| 114 | 10.5 | **Simulaciones** | 185d | 2017-10-13 | 2018-06-25 |  | 0d |  |
| 115 | 10.5.1 | Toma de requerimientos | 3w | 2017-10-13 | 2017-11-06 | 108 | 0d |  |
| 116 | 10.5.2 | Informe del requerimiento | 1w | 2017-11-06 | 2017-11-10 | 115 | 0d |  |
| 117 | 10.5.3 | Modelamiento de Datos | 2w | 2017-11-10 | 2017-11-24 | 116, 113 | 0d |  |
| 118 | 10.5.4 | Ordenamiento de datos | 2w | 2017-11-24 | 2017-12-07 | 117 | 239d |  |
| 119 | 10.5.5 | Desarrollo del modulo | 5mo | 2017-11-24 | 2018-04-10 | 117 | 0d |  |
| 120 | 10.5.6 | **Testing (Certificación)** | 25d | 2018-04-10 | 2018-05-14 |  | 0d |  |
| 121 | 10.5.6.1 | revision interna | 15d | 2018-04-10 | 2018-04-30 | 119 | 0d |  |
| 122 | 10.5.6.2 | revision usuario | 1w | 2018-04-30 | 2018-05-08 | 121 | 0d |  |
| 123 | 10.5.6.3 | pruebas abiertas | 1w | 2018-05-08 | 2018-05-14 | 122 | 0d |  |
| 124 | 10.5.7 | Capacitaciones | 2w | 2018-05-15 | 2018-05-29 | 123 | 0d |  |
| 125 | 10.5.8 | Paso a producción y Puesta en marcha | 1mo | 2018-05-29 | 2018-06-25 | 124 | 0d |  |
| 126 | 10.6 | **Despacho** | 83d | 2018-04-10 | 2018-08-02 |  | 0d |  |
| 127 | 10.6.1 | Toma de requerimientos | 3d | 2018-04-10 | 2018-04-13 | 119 | 49d | 0d |
| 128 | 10.6.2 | Informe del requerimiento | 3d | 2018-04-13 | 2018-04-18 | 127 | 49d |  |
| 129 | 10.6.3 | Desarrollo del modulo | 3w | 2018-06-25 | 2018-07-17 | 128, 125 | 0d |  |
| 130 | 10.6.4 | Testing (Certificación) | 1w | 2018-07-17 | 2018-07-24 | 129 | 0d |  |
| 131 | 10.6.5 | Capacitaciones | 3d | 2018-07-24 | 2018-07-26 | 130 | 0d |  |
| 132 | 10.6.6 | Paso a producción y Puesta en Marcha | 1w | 2018-07-26 | 2018-08-02 | 131 | 0d |  |

| ID | WBS | Task | Duration | Start | Finish | Predecessors | Total slack | Free slack |
| --- | --- | --- | --- | --- | --- | --- | --- | --- |
| 133 | 10.7 | **Liberación de componente** | 26d | 2018-07-17 | 2018-08-21 |  | 0d |  |
| 134 | 10.7.1 | Toma de requerimientos | 3d | 2018-07-17 | 2018-07-20 | 129 | 7d | 0d |
| 135 | 10.7.2 | Informe del requerimiento | 3d | 2018-07-20 | 2018-07-24 | 134 | 7d |  |
| 136 | 10.7.3 | Desarrollo del modulo | 1w | 2018-08-02 | 2018-08-09 | 135, 132 | 0d |  |
| 137 | 10.7.4 | Testing (Certificación) | 3d | 2018-08-09 | 2018-08-14 | 136 | 0d |  |
| 138 | 10.7.5 | Capacitaciones | 3d | 2018-08-14 | 2018-08-17 | 137 | 0d |  |
| 139 | 10.7.6 | Paso a producción | 2d | 2018-08-17 | 2018-08-21 | 138 | 0d |  |
| 140 | 10.8 | **Cotizar trabajo** | 41d | 2018-08-09 | 2018-10-05 |  | 0d |  |
| 141 | 10.8.1 | Toma de requerimientos | 1w | 2018-08-09 | 2018-08-16 | 136 | 0d |  |
| 142 | 10.8.2 | Informe del requerimiento | 3d | 2018-08-17 | 2018-08-21 | 141 | 0d |  |
| 143 | 10.8.3 | Desarrollo del modulo | 1mo | 2018-08-21 | 2018-09-17 | 142, 139 | 0d |  |
| 144 | 10.8.4 | Testing (Certificación) | 1w | 2018-09-17 | 2018-09-26 | 143 | 0d |  |
| 145 | 10.8.5 | Capacitaciones | 1w | 2018-09-26 | 2018-10-03 | 144 | 0d |  |
| 146 | 10.8.6 | Paso a producción | 3d | 2018-10-03 | 2018-10-05 | 145 | 0d |  |
| 147 | 10.9 | **Aprobar cotización** | 33d | 2018-09-17 | 2018-11-06 |  | 0d |  |
| 148 | 10.9.1 | Toma de requerimientos | 1d | 2018-09-17 | 2018-09-20 | 143, 146 | 10d | 0d |
| 149 | 10.9.2 | Informe del requerimiento | 2d | 2018-09-20 | 2018-09-24 | 148 | 10d |  |
| 150 | 10.9.3 | Desarrollo del modulo | 2w | 2018-10-05 | 2018-10-22 | 149, 146 | 0d |  |
| 151 | 10.9.4 | Testing (Certificación) | 2d | 2018-10-22 | 2018-10-24 | 150 | 0d |  |
| 152 | 10.9.5 | Capacitaciones | 3d | 2018-10-24 | 2018-10-26 | 151 | 0d |  |
| 153 | 10.9.6 | Paso a producción | 1w | 2018-10-29 | 2018-11-06 | 152 | 0d |  |
