# Gantt Proyecto de Planificacion v2.0

Schedule from MS Project, 2016-11-02 to 2017-06-14, status date 2016-11-28, A marks actual dates.

## Calendars

- MD - 2015/2016: Mon-Fri 07:45-12:30, 13:15-17:00; Sat-Sun off. Exceptions (off unless hours are given): 2015-05-01 to 2024-05-01 (Día del trabajo, recurring), 2015-05-21 to 2024-05-21 (Glorias Navales, recurring), 2015-06-27 to 2024-06-27 (San Pedro y San Pablo, recurring), 2015-07-16 to 2024-07-16 (Solemnidad de la virgen del Carmen, recurring), 2015-08-15 to 2024-08-15 (Asuncion de la Virgen, recurring), 2015-09-18 to 2024-09-18 (Fiestas Patrias, recurring), 2015-09-19 to 2024-09-19 (Glorias Del Ejercito, recurring), 2015-10-12 to 2024-10-12 (Día de Descubrimiento de 2 Mundos, recurring), 2015-10-31 to 2024-10-31 (Día de las Iglesias Evangelicas y Protestantes, recurring), 2015-11-01 to 2024-11-01 (Día de Todos Los Santos, recurring), 2015-12-08 to 2024-12-08 (Día de la inmaculada Concepción, recurring), 2015-12-25 to 2024-12-25 (Navidad, recurring), 2016-01-01 to 2025-01-01 (Año Nuevo, recurring).

## Resources

| Resource |
| --- |
| Eduado Pino |
| Gabriel Medina |
| Hernan Cares |
| Claudio Alvarez |
| Ilic Alarcon |
| Carlos Belmar |
| Oscar Torres |
| Victor Acevedo |
| Francisco Vargas |
| Francisco Gomez |
| Cesar Toro |
| Sergio Soto |
| Luis Godoy |
| Juan Carlos Toro |
| Aldo Recabal |
| Danilo San martin |
| Diego Quezada |
| Daniel Gutierrez |
| Alonso Silva |
| Marcelo vargas |
| Hector Adriazola |
| Jendri Calderon |
| Daniel Osorio |

## Schedule

| ID | WBS | Task | Duration | Start | Finish | Predecessors | Complete | Remaining | Total slack | Free slack | Constraint |
| --- | --- | --- | --- | --- | --- | --- | --- | --- | --- | --- | --- |
| 1 | 1 | **Implementación Hojas de Ruta** | 49.31d | 2016-11-02 A | 2017-01-06 |  | 26% | 36.73d | 119.56d |  |  |
| 2 | 1.1 | Tareas por areas (Evaluacion y Reparacion) | 2w | 2016-11-02 A | 2016-11-15 A |  | 100% |  |  |  | start no earlier than 2016-11-02 |
| 3 | 1.2 | Control Horas ( Aprobación) | 2w | 2016-11-22 A | 2016-12-05 | 2 | 53% | 0.94w | 144d | 0d | start no earlier than 2016-11-22 |
| 4 | 1.3 | Gestion Hojas de Ruta | 2w | 2016-11-22 A | 2016-12-05 | 3SS | 53% | 0.94w | 0d |  | start no earlier than 2016-11-22 |
| 5 | 1.4 | **implementacion Areas** | 49.31d | 2016-11-02 A | 2017-01-06 |  | 11% | 43.83d | 89.56d |  |  |
| 6 | 1.4.1 | Transmisiones | 2w | 2016-11-02 A | 2016-11-15 A |  | 100% |  |  |  | start no earlier than 2016-11-02 |
| 7 | 1.4.2 | Reductores | 2w | 2016-12-01 | 2016-12-15 | 6FS+10d |  |  | 17.56d |  | start no earlier than 2016-12-01 |
| 8 | 1.4.3 | Compresores | 2w | 2016-12-01 | 2016-12-15 | 7SS |  |  | 8.56d | 0d | start no earlier than 2016-12-01 |
| 9 | 1.4.4 | Bombas | 2w | 2016-12-01 | 2016-12-15 | 8SS |  |  | 8.56d | 3.38d | start no earlier than 2016-12-01 |
| 10 | 1.4.5 | Equipos | 2w | 2016-12-12 | 2016-12-23 | 9FS-7d |  |  | 5.19d | 0d | start no earlier than 2016-12-12 |
| 11 | 1.4.6 | Cilindros | 2w | 2016-12-12 | 2016-12-23 | 10SS |  |  | 5.19d | 2.31d | start no earlier than 2016-12-12 |
| 12 | 1.4.7 | Motores | 2w | 2016-12-19 | 2016-12-30 | 11FS-7d |  |  | 5.88d |  | start no earlier than 2016-12-19 |
| 13 | 1.4.8 | Torno y Fresa | 2w | 2016-12-19 | 2016-12-30 | 12SS |  |  | 2.88d | 2.31d | start no earlier than 2016-12-19 |
| 14 | 1.4.9 | Soldadura y Barrenado | 2w | 2016-12-26 | 2017-01-06 | 13FS-7d |  |  | 0.56d |  | start no earlier than 2016-12-26 |
| 15 | 2 | **Temparios** | 70d | 2016-12-05 | 2017-03-08 |  |  |  | 0d |  |  |
| 16 | 2.1 | **Definicion estructuras** | 30d | 2016-12-05 | 2017-01-13 |  |  |  | 0d |  |  |
| 17 | 2.1.1 | Tipo Componente / Marcas / Modelos | 2w | 2016-12-05 | 2016-12-19 | 4 |  |  | 0d |  |  |
| 18 | 2.1.2 | Revision Tareas (nivel detalle, estandarizacion) | 2w | 2016-12-19 | 2017-01-02 | 17 |  |  | 0d |  |  |
| 19 | 2.1.3 | Horas Cronologicas / H.H. | 2w | 2017-01-02 | 2017-01-13 | 18 |  |  | 0d |  |  |
| 20 | 2.2 | Rediseño H. Ruta con Temparios | 2w | 2017-01-13 | 2017-01-27 | 19 |  |  | 0d |  |  |
| 21 | 2.3 | Implementacion Produccion | 1.5mo | 2017-01-27 | 2017-03-08 | 20, 14 |  |  | 34d |  |  |
| 22 | 3 | **Detalle de reparación** | 45d | 2017-01-27 | 2017-03-28 |  |  |  | 0d |  |  |
| 23 | 3.1 | Revision Estructura Repuestos Materiales | 1mo | 2017-01-27 | 2017-02-22 | 20 |  |  | 0d |  |  |
| 24 | 3.2 | Controles Seguimientos repuestos/materiales | 3w | 2017-02-22 | 2017-03-14 | 23 |  |  | 0d |  |  |
| 25 | 3.3 | Incorporar Temparios a Detalle de Reparacion | 2w | 2017-03-15 | 2017-03-28 | 24 |  |  | 0d |  |  |

Notes:
- 21: Tarea considera impolementacion de temparios en paralelo con las distintas areas

| ID | WBS | Task | Duration | Start | Finish | Predecessors | Total slack | Constraint |
| --- | --- | --- | --- | --- | --- | --- | --- | --- |
| 26 | 4 | **Programacion de Trabajos** | 39d | 2017-03-28 | 2017-05-19 |  | 0d |  |
| 27 | 4.1 | **Generacion Centros de Trabajo** | 10d | 2017-03-28 | 2017-04-10 |  | 0d |  |
| 28 | 4.1.1 | Revision Capacidades y Tipo de recursos | 2w | 2017-03-28 | 2017-04-10 | 25 | 0d |  |
| 29 | 4.2 | Desarrollo sistema de Apoyo | 2w | 2017-04-10 | 2017-04-24 | 28 | 0d |  |
| 30 | 4.3 | **implementacion Areas** | 19d | 2017-04-24 | 2017-05-19 |  | 0d |  |
| 31 | 4.3.1 | Transmisiones | 2w | 2017-04-24 | 2017-05-08 | 29 | 0d | start no earlier than 2016-11-02 |
| 32 | 4.3.2 | Bombas | 2w | 2017-04-24 | 2017-05-08 | 31SS | 0d | start no earlier than 2016-12-01 |
| 33 | 4.3.3 | Reductores | 2w | 2017-04-27 | 2017-05-11 | 32FS-7d | 0d | start no earlier than 2016-12-01 |
| 34 | 4.3.4 | Compresores | 2w | 2017-04-27 | 2017-05-11 | 33SS | 0d | start no earlier than 2016-12-01 |
| 35 | 4.3.5 | Equipos | 2w | 2017-04-27 | 2017-05-11 | 34SS | 0d | start no earlier than 2016-12-12 |
| 36 | 4.3.6 | Cilindros | 2w | 2017-05-02 | 2017-05-16 | 35FS-7d | 0d | start no earlier than 2016-12-12 |
| 37 | 4.3.7 | Motores | 2w | 2017-05-02 | 2017-05-16 | 36SS | 0d | start no earlier than 2016-12-19 |
| 38 | 4.3.8 | Torno y Fresa | 2w | 2017-05-05 | 2017-05-19 | 37FS-7d | 0d | start no earlier than 2016-12-19 |
| 39 | 4.3.9 | Soldadura y Barrenado | 2w | 2017-05-05 | 2017-05-19 | 38SS | 0d | start no earlier than 2016-12-26 |
| 40 | 5 | Planificacion | 1mo | 2017-05-19 | 2017-06-14 | 39 | 0d |  |
