# Gantt Proyecto de Planificacion v2.1

Schedule from MS Project, 2016-11-02 to 2017-11-20, status date 2016-11-28, A marks actual dates.

## Calendars

- MD - 2015/2016: Mon-Fri 07:45-12:30, 13:15-17:00; Sat-Sun off. Exceptions (off unless hours are given): 2015-05-01 to 2024-05-01 (Día del trabajo, recurring), 2015-05-21 to 2024-05-21 (Glorias Navales, recurring), 2015-06-27 to 2024-06-27 (San Pedro y San Pablo, recurring), 2015-07-16 to 2024-07-16 (Solemnidad de la virgen del Carmen, recurring), 2015-08-15 to 2024-08-15 (Asuncion de la Virgen, recurring), 2015-09-18 to 2024-09-18 (Fiestas Patrias, recurring), 2015-09-19 to 2024-09-19 (Glorias Del Ejercito, recurring), 2015-10-12 to 2024-10-12 (Día de Descubrimiento de 2 Mundos, recurring), 2015-10-31 to 2024-10-31 (Día de las Iglesias Evangelicas y Protestantes, recurring), 2015-11-01 to 2024-11-01 (Día de Todos Los Santos, recurring), 2015-12-08 to 2024-12-08 (Día de la inmaculada Concepción, recurring), 2015-12-25 to 2024-12-25 (Navidad, recurring), 2016-01-01 to 2025-01-01 (Año Nuevo, recurring).

## Resources

| Resource |
| --- |
| Eduado Pino |
| Gabriel Medina |
| Hernan Cares |
| Claudio Alvarez |
| Ilic Alarcon |
| Carlos Belmar |
| Oscar Torres |
| Victor Acevedo |
| Francisco Vargas |
| Francisco Gomez |
| Cesar Toro |
| Sergio Soto |
| Luis Godoy |
| Juan Carlos Toro |
| Aldo Recabal |
| Danilo San martin |
| Diego Quezada |
| Daniel Gutierrez |
| Alonso Silva |
| Marcelo vargas |
| Hector Adriazola |
| Jendri Calderon |
| Daniel Osorio |
| Dpto. TI |
| Planificación |
| Jaime Burdiles |
| Marcelo Ortiz |
| Raul Tabilo |
| Adrian Toro |
| Reinaldo Salinas |

## Schedule

| ID | WBS | Task | Type | Duration | Start | Finish | Predecessors | Complete | Remaining | Total slack | Free slack | Constraint | Resources | Work | Actual work |
| --- | --- | --- | --- | --- | --- | --- | --- | --- | --- | --- | --- | --- | --- | --- | --- |
| 1 | 1 | **Implementación Hojas de Ruta** |  | 47d | 2016-11-02 A | 2017-01-04 |  | 22% | 36.46d | 233.94d |  |  |  | 1225.67h | 287.5h |
| 2 | 1.1 | Tareas por areas (Evaluacion y Reparacion) |  | 2w | 2016-11-02 A | 2016-11-15 A |  | 100% |  |  |  | start no earlier than 2016-11-02 |  |  |  |
| 3 | 1.2 | Control Horas ( Aprobación) |  | 2w | 2016-11-22 A | 2016-12-05 | 2 | 53% | 0.94w | 256.06d | 0d | start no earlier than 2016-11-22 | Dpto. TI [50%] | 61.25h | 42.5h |
| 4 | 1.3 | Gestion Hojas de Ruta |  | 2w | 2016-11-22 A | 2016-12-05 | 3SS | 53% | 0.94w | 256.06d |  | start no earlier than 2016-11-22 | Dpto. TI [50%]; Planificación [50%] | 122.5h | 85h |
| 5 | 1.4 | **implementacion Areas** |  | 47d | 2016-11-02 A | 2017-01-04 |  | 9% | 42.59d | 193.94d | 0d |  |  | 1041.92h | 160h |
| 6 | 1.4.1 | Transmisiones |  | 2w | 2016-11-02 A | 2016-11-15 A |  | 100% |  |  |  | start no earlier than 2016-11-02 | Cesar Toro; Gabriel Medina | 160h | 160h |
| 7 | 1.4.2 | Reductores |  | 2w | 2016-12-01 | 2016-12-15 | 6FS+10d |  |  | 0.62d | 0d | start no earlier than 2016-12-01 | Francisco Vargas [80%]; Gabriel Medina [70%] | 120h |  |
| 8 | 1.4.3 | Compresores |  | 2w | 2016-12-01 | 2016-12-15 | 7SS |  |  | 0.62d |  | start no earlier than 2016-12-01 | Francisco Vargas [20%]; Gabriel Medina [30%] | 32h |  |
| 9 | 1.4.4 | Bombas |  | 5.31w | 2016-11-10 | 2016-12-15 | 8FF |  |  | 0d |  | finish no earlier than 2016-12-15 | Eduado Pino [30%]; Luis Godoy [50%] | 169.92h |  |
| 10 | 1.4.5 | Equipos |  | 2w | 2016-12-12 | 2016-12-23 | 9FS-7d |  |  | 196.25d | 0d | start no earlier than 2016-12-12 | Eduado Pino [20%]; Luis Godoy [50%] | 56h |  |
| 11 | 1.4.6 | Cilindros |  | 2w | 2016-12-12 | 2016-12-23 | 10SS |  |  | 196.25d | 2.31d | start no earlier than 2016-12-12 | Carlos Belmar; Eduado Pino [40%] | 112h |  |
| 12 | 1.4.7 | Motores |  | 2w | 2016-12-19 | 2016-12-30 | 11FS-7d |  |  | 193.94d | 0d | start no earlier than 2016-12-19 | Cesar Toro; Gabriel Medina | 160h |  |
| 13 | 1.4.8 | Torno y Fresa |  | 2w | 2016-12-19 | 2016-12-30 | 12SS |  |  | 193.94d | 0d | start no earlier than 2016-12-19 | Eduado Pino [40%]; Juan Carlos Toro | 112h |  |
| 14 | 1.4.9 | Soldadura y Barrenado |  | 2w | 2016-12-21 | 2017-01-04 | 13FS-7d |  |  | 193.94d | 89.94d |  | Eduado Pino [50%]; Francisco Gomez | 120h |  |
| 15 | 2 | Reporte Traspaso desde Hojas de Ruta A Cargos Ot | milestone | 0d | 2017-01-04 | 2017-01-04 | 5 |  |  | 233.94d |  |  |  |  |  |
| 16 | 3 | **Temparios** |  | 144d | 2016-12-16 | 2017-06-26 |  |  |  | 0d |  |  |  | 2940h |  |
| 17 | 3.1 | **Definicion estructuras** |  | 92d | 2016-12-16 | 2017-04-17 |  |  |  | 0d |  |  |  | 2660h |  |
| 18 | 3.1.1 | **Tipo Componente / Marcas / Modelos** |  | 24d | 2016-12-16 | 2017-01-17 |  |  |  | 0d |  |  |  | 768h |  |
| 19 | 3.1.1.1 | Transmisiones y Ejes |  | 2w | 2016-12-16 | 2016-12-29 | 9 |  |  | 0d |  |  | Hector Adriazola; Planificación [20%] | 96h |  |
| 20 | 3.1.1.2 | Reductores Planetarios |  | 2w | 2016-12-16 | 2016-12-29 | 19SS |  |  | 0d |  |  | Marcelo vargas; Planificación [20%] | 96h |  |
| 21 | 3.1.1.3 | Reductores Paralelos |  | 2w | 2016-12-16 | 2016-12-29 | 20SS |  |  | 0d |  |  | Alonso Silva; Planificación [20%] | 96h |  |
| 22 | 3.1.1.4 | Cilindros |  | 2w | 2016-12-26 | 2017-01-06 | 21SS+7d |  |  | 0d |  |  | Jendri Calderon; Planificación [20%] | 96h |  |
| 23 | 3.1.1.5 | Compresores |  | 2w | 2016-12-26 | 2017-01-06 | 22SS |  |  | 0d |  |  | Daniel Osorio; Planificación [20%] | 96h |  |
| 24 | 3.1.1.6 | Bombas |  | 2w | 2017-01-04 | 2017-01-17 | 23SS+7d |  |  | 0d |  |  | Planificación [20%]; Marcelo Ortiz | 96h |  |
| 25 | 3.1.1.7 | Motores |  | 2w | 2017-01-04 | 2017-01-17 | 24SS |  |  | 0d |  |  | Planificación [20%]; Adrian Toro | 96h |  |
| 26 | 3.1.1.8 | Maestranza |  | 2w | 2017-01-04 | 2017-01-17 | 25SS |  |  | 0d |  |  | Planificación [20%]; Raul Tabilo | 96h |  |
| 27 | 3.1.2 | Listado de Productos por Marca y Modelo | milestone | 0d | 2017-01-17 | 2017-01-17 | 18 |  |  | 224d |  |  |  |  |  |

| ID | WBS | Task | Type | Duration | Start | Finish | Predecessors | Total slack | Free slack | Constraint | Resources | Work |
| --- | --- | --- | --- | --- | --- | --- | --- | --- | --- | --- | --- | --- |
| 28 | 3.1.3 | **Desarrollo Sistema de Apoyo** |  | 24d | 2016-12-21 | 2017-01-23 |  | 20d |  |  |  | 192h |
| 29 | 3.1.3.1 | Analisis Opciones de Sistema |  | 2w | 2016-12-21 | 2017-01-04 | 26FS-20d | 20d | 0d |  | Dpto. TI | 80h |
| 30 | 3.1.3.2 | Actualizacion de Opciones |  | 14d | 2017-01-04 | 2017-01-23 | 29 | 20d |  |  | Dpto. TI | 112h |
| 31 | 3.1.4 | **Revision Tareas (nivel detalle, estandarizacion)** |  | 24d | 2017-01-17 | 2017-02-17 |  | 0d |  |  |  | 500h |
| 32 | 3.1.4.1 | Transmisones |  | 2w | 2017-01-17 | 2017-01-30 | 26 | 0d |  |  | Planificación [25%]; Jaime Burdiles | 100h |
| 33 | 3.1.4.2 | Reductores |  | 2w | 2017-01-17 | 2017-01-30 | 32SS | 0d |  |  | Aldo Recabal; Planificación [25%] | 100h |
| 34 | 3.1.4.3 | Bombas |  | 2w | 2017-01-26 | 2017-02-08 | 33SS+7d | 0d |  |  | Daniel Gutierrez; Planificación [25%] | 100h |
| 35 | 3.1.4.4 | Cilindros |  | 2w | 2017-01-26 | 2017-02-08 | 34SS | 0d |  |  | Planificación [25%]; Reinaldo Salinas | 100h |
| 36 | 3.1.4.5 | Maestranza |  | 2w | 2017-02-03 | 2017-02-17 | 35SS+7d | 0d |  |  | Danilo San martin; Planificación [25%] | 100h |
| 37 | 3.1.5 | Horas Cronologicas / H.H. |  | 2w | 2017-02-17 | 2017-03-02 | 36, 30 | 0d |  |  | Dpto. TI; Planificación | 160h |
| 38 | 3.1.6 | Listado de Tareas Estándar | milestone | 0d | 2017-02-17 | 2017-02-17 | 31 | 200d |  |  |  |  |
| 39 | 3.1.7 | **Desarrollo de Temparios** |  | 34d | 2017-03-02 | 2017-04-17 |  | 0d |  |  |  | 800h |
| 40 | 3.1.7.1 | Transmisones |  | 1mo | 2017-03-02 | 2017-03-29 | 37 | 0d |  |  | Jaime Burdiles | 160h |
| 41 | 3.1.7.2 | Reductores |  | 1mo | 2017-03-02 | 2017-03-29 | 40SS | 156d | 0d |  | Aldo Recabal | 160h |
| 42 | 3.1.7.3 | Bombas |  | 1mo | 2017-03-13 | 2017-04-06 | 41SS+7d | 156d | 0d |  | Daniel Gutierrez | 160h |
| 43 | 3.1.7.4 | Cilindros |  | 1mo | 2017-03-13 | 2017-04-06 | 42SS | 156d | 0d |  | Reinaldo Salinas | 160h |
| 44 | 3.1.7.5 | Maestranza |  | 1mo | 2017-03-21 | 2017-04-17 | 43SS+7d | 156d |  |  | Danilo San martin | 160h |
| 45 | 3.1.8 | Listado de Temparios | milestone | 0d | 2017-04-17 | 2017-04-17 | 39 | 156d |  |  |  |  |
| 46 | 3.1.9 | Desarrollo sistema de Apoyo |  | 30d | 2017-03-02 | 2017-04-11 | 40SS | 0d |  | start no earlier than 2017-02-20 | Dpto. TI | 240h |
| 47 | 3.2 | Rediseño E Integracion H. Ruta con Temparios |  | 15d | 2017-04-12 | 2017-05-03 | 46FS+1d | 104d | 0d |  | Dpto. TI [50%]; Planificación [50%] | 120h |
| 48 | 3.3 | Implementacion Produccion |  | 2mo | 2017-05-03 | 2017-06-26 | 47, 14 | 104d |  |  | Planificación [50%] | 160h |
| 49 | 4 | Reporte GenecionReporte Generacion Hojas de Ruta con Remparios | milestone | 0d | 2017-06-26 | 2017-06-26 | 16 | 104d | 0d |  |  |  |
| 50 | 5 | **Detalle de reparación** |  | 35d | 2017-04-11 | 2017-05-29 |  | 0d |  |  |  | 296h |
| 51 | 5.1 | Controles Seguimientos repuestos/materiales |  | 2w | 2017-04-11 | 2017-04-25 | 46 | 0d |  |  | Dpto. TI [50%]; Planificación [15%] | 52h |
| 52 | 5.2 | Incorporar Temparios a Detalle de Reparacion |  | 2w | 2017-04-25 | 2017-05-09 | 51 | 0d |  |  | Dpto. TI [50%]; Planificación [15%] | 52h |
| 53 | 5.3 | Generacion Hr desde Detalle de Reparacion |  | 2w | 2017-05-09 | 2017-05-23 | 52 | 0d |  |  | Dpto. TI [50%]; Planificación [15%] | 52h |
| 54 | 5.4 | Desarrollo Sistema de Apoyo |  | 7w | 2017-04-11 | 2017-05-29 | 51SS | 125d |  |  | Dpto. TI [50%] | 140h |
| 55 | 6 | Reporte Modificaciones Detalle de Reparacion | milestone | 0d | 2017-06-26 | 2017-06-26 | 49 | 104d |  |  |  |  |

Notes:
- 48: Tarea considera impolementacion de temparios en paralelo con las distintas areas

| ID | WBS | Task | Type | Duration | Start | Finish | Predecessors | Total slack | Resources | Work |
| --- | --- | --- | --- | --- | --- | --- | --- | --- | --- | --- |
| 56 | 7 | **Programacion de Trabajos** |  | 50d | 2017-05-23 | 2017-07-28 |  | 0d |  | 280h |
| 57 | 7.1 | **Generacion Centros de Trabajo** |  | 10d | 2017-05-23 | 2017-06-05 |  | 0d |  | 80h |
| 58 | 7.1.1 | Revision Capacidades y Tipo de recursos |  | 2w | 2017-05-23 | 2017-06-05 | 53 | 0d | Dpto. TI [50%]; Planificación [50%] | 80h |
| 59 | 7.2 | Desarrollo sistema de Apoyo |  | 2w | 2017-06-05 | 2017-06-16 | 58 | 0d | Dpto. TI | 80h |
| 60 | 7.3 | implementacion Areas |  | 1.5mo | 2017-06-16 | 2017-07-28 | 59 | 0d | Planificación [50%] | 120h |
| 61 | 8 | Reporte programación Semanal de Trabajos | milestone | 0d | 2017-07-28 | 2017-07-28 | 56 | 80d |  |  |
| 62 | 9 | **Planificacion** |  | 80d | 2017-07-28 | 2017-11-20 |  | 0d |  | 1280h |
| 63 | 9.1 | Simulaciones |  | 2mo | 2017-07-28 | 2017-09-22 | 60 | 0d | Dpto. TI; Planificación | 640h |
| 64 | 9.2 | Reporte Criterios Simulacion y Muestra Simulaciones | milestone | 0d | 2017-09-22 | 2017-09-22 | 63 | 40d |  |  |
| 65 | 9.3 | Plan Maestro de Produccion |  | 2mo | 2017-09-22 | 2017-11-20 | 63 | 0d | Dpto. TI; Planificación | 640h |
| 66 | 9.4 | Reporte Escenario de Taller y reportes asociados | milestone | 0d | 2017-11-20 | 2017-11-20 | 65 | 0d |  |  |
| 67 | 10 | Resumen Final de Proyecto | milestone | 0d | 2017-11-20 | 2017-11-20 | 62 | 0d |  |  |
