# Gantt Proyecto de Planificacion v2.1

Schedule from MS Project, 2016-11-02 to 2017-12-22, status date 2016-12-12, A marks actual dates.

## Calendars

- MD - 2015/2016: Mon-Fri 07:45-12:30, 13:15-17:00; Sat-Sun off. Exceptions (off unless hours are given): 2015-05-01 to 2024-05-01 (Día del trabajo, recurring), 2015-05-21 to 2024-05-21 (Glorias Navales, recurring), 2015-06-27 to 2024-06-27 (San Pedro y San Pablo, recurring), 2015-07-16 to 2024-07-16 (Solemnidad de la virgen del Carmen, recurring), 2015-08-15 to 2024-08-15 (Asuncion de la Virgen, recurring), 2015-09-18 to 2024-09-18 (Fiestas Patrias, recurring), 2015-09-19 to 2024-09-19 (Glorias Del Ejercito, recurring), 2015-10-12 to 2024-10-12 (Día de Descubrimiento de 2 Mundos, recurring), 2015-10-31 to 2024-10-31 (Día de las Iglesias Evangelicas y Protestantes, recurring), 2015-11-01 to 2024-11-01 (Día de Todos Los Santos, recurring), 2015-12-08 to 2024-12-08 (Día de la inmaculada Concepción, recurring), 2015-12-25 to 2024-12-25 (Navidad, recurring), 2016-01-01 to 2025-01-01 (Año Nuevo, recurring).

## Resources

| Resource |
| --- |
| Eduado Pino |
| Gabriel Medina |
| Hernan Cares |
| Claudio Alvarez |
| Ilic Alarcon |
| Carlos Belmar |
| Oscar Torres |
| Victor Acevedo |
| Francisco Vargas |
| Francisco Gomez |
| Cesar Toro |
| Sergio Soto |
| Luis Godoy |
| Juan Carlos Toro |
| Aldo Recabal |
| Danilo San martin |
| Diego Quezada |
| Daniel Gutierrez |
| Alonso Silva |
| Marcelo vargas |
| Hector Adriazola |
| Jendri Calderon |
| Daniel Osorio |
| Dpto. TI |
| Planificación |
| Jaime Burdiles |
| Marcelo Ortiz |
| Raul Tabilo |
| Adrian Toro |
| Reinaldo Salinas |
| Jc toro |

## Schedule

| ID | WBS | Task | Type | Duration | Start | Finish | Predecessors | Complete | Remaining | Baseline start | Baseline finish | Baseline duration | Total slack | Free slack | Constraint | Resources | Work | Actual work |
| --- | --- | --- | --- | --- | --- | --- | --- | --- | --- | --- | --- | --- | --- | --- | --- | --- | --- | --- |
| 1 | 1 | **Implementación Hojas de Ruta** |  | 47d | 2016-11-02 A | 2017-01-04 |  | 57% | 20.03d | 2016-11-02 | 2017-01-04 | 47d | 258.44d |  |  |  | 1216.17h | 640.32h |
| 2 | 1.1 | Tareas por areas (Evaluacion y Reparacion) |  | 2w | 2016-11-02 A | 2016-11-15 A |  | 100% |  | 2016-11-02 | 2016-11-15 | 2w |  |  | start no earlier than 2016-11-02 |  |  |  |
| 3 | 1.2 | Control Horas ( Aprobación) |  | 2w | 2016-11-22 A | 2016-12-05 A | 2 | 100% |  | 2016-11-22 | 2016-12-05 | 2w |  |  | start no earlier than 2016-11-22 | Dpto. TI [50%] | 61.25h | 61.25h |
| 4 | 1.3 | Gestion Hojas de Ruta |  | 2.76w | 2016-11-22 A | 2016-12-09 A | 3SS | 100% |  | 2016-11-22 | 2016-12-05 | 2w |  |  | finish no earlier than 2016-12-09 | Dpto. TI [50%]; Planificación [50%] | 153h | 153h |
| 5 | 1.4 | **implementacion Areas** |  | 47d | 2016-11-02 A | 2017-01-04 |  | 44% | 26.38d | 2016-11-02 | 2017-01-04 | 47d | 258.44d | 0d |  |  | 1001.92h | 426.07h |
| 6 | 1.4.1 | Transmisiones |  | 2w | 2016-11-02 A | 2016-11-15 A |  | 100% |  | 2016-11-02 | 2016-11-15 | 2w |  |  | start no earlier than 2016-11-02 | Cesar Toro; Gabriel Medina | 160h | 160h |
| 7 | 1.4.2 | Reductores |  | 2w | 2016-12-01 A | 2016-12-15 | 6FS+10d | 74% | 0.51w | 2016-12-01 | 2016-12-15 | 2w | 273.12d | 2.12d | start no earlier than 2016-12-01 | Francisco Vargas [80%]; Gabriel Medina [70%] | 120h | 89.25h |
| 8 | 1.4.3 | Compresores |  | 2w | 2016-12-05 A | 2016-12-19 | 7SS | 53% | 0.94w | 2016-12-01 | 2016-12-15 | 2w | 0d |  | start no earlier than 2016-12-05 | Francisco Vargas [20%]; Gabriel Medina [30%] | 32h | 20.75h |
| 9 | 1.4.4 | Bombas |  | 5.31w | 2016-11-11 A | 2016-12-19 | 8FF | 82% | 0.94w | 2016-11-10 | 2016-12-15 | 5.31w | 0d |  | finish no earlier than 2016-12-15 | Eduado Pino [30%]; Luis Godoy [50%] | 169.92h | 139.92h |
| 10 | 1.4.5 | Equipos |  | 2w | 2016-12-12 A | 2016-12-23 | 9FS-7d | 11% | 1.79w | 2016-12-12 | 2016-12-23 | 2w | 266.75d | 0d | start no earlier than 2016-12-12 | Eduado Pino [10%]; Luis Godoy [50%] | 48h | 5.1h |
| 11 | 1.4.6 | Cilindros |  | 2w | 2016-12-12 A | 2016-12-23 | 10SS | 11% | 1.79w | 2016-12-12 | 2016-12-23 | 2w | 220.75d | 2.31d | start no earlier than 2016-12-12 | Carlos Belmar; Eduado Pino [30%] | 104h | 11.05h |
| 12 | 1.4.7 | Motores |  | 2w | 2016-12-19 | 2016-12-30 | 11FS-7d |  |  | 2016-12-19 | 2016-12-30 | 2w | 218.44d | 0d | start no earlier than 2016-12-19 | Cesar Toro; Gabriel Medina | 160h |  |
| 13 | 1.4.8 | Torno y Fresa |  | 2w | 2016-12-19 | 2016-12-30 | 12SS |  |  | 2016-12-19 | 2016-12-30 | 2w | 218.44d | 0d | start no earlier than 2016-12-19 | Eduado Pino [30%]; Juan Carlos Toro | 104h |  |
| 14 | 1.4.9 | Soldadura y Barrenado |  | 2w | 2016-12-21 | 2017-01-04 | 13FS-7d |  |  | 2016-12-21 | 2017-01-04 | 2w | 218.44d | 93.44d |  | Eduado Pino [30%]; Francisco Gomez | 104h |  |
| 15 | 2 | Reporte Traspaso desde Hojas de Ruta A Cargos Ot | milestone | 0d | 2017-01-04 | 2017-01-04 | 5 |  |  | 2017-01-04 | 2017-01-04 |  | 258.44d |  |  |  |  |  |
| 16 | 3 | **Temparios** |  | 146d | 2016-12-19 | 2017-06-30 |  |  |  | 2016-12-16 | 2017-06-29 | 146d | 0d |  |  |  | 4348h |  |
| 17 | 3.1 | **Definicion estructuras** |  | 92d | 2016-12-19 | 2017-04-18 |  |  |  | 2016-12-16 | 2017-04-17 | 92d | 0d |  |  |  | 4076h |  |
| 18 | 3.1.1 | **Tipo Componente / Marcas / Modelos** |  | 24d | 2016-12-19 | 2017-01-18 |  |  |  | 2016-12-16 | 2017-01-17 | 24d | 0d |  |  |  | 768h |  |
| 19 | 3.1.1.1 | Transmisiones y Ejes |  | 2w | 2016-12-19 | 2016-12-30 | 9 |  |  | 2016-12-16 | 2016-12-29 | 2w | 0d |  |  | Hector Adriazola; Planificación [20%] | 96h |  |
| 20 | 3.1.1.2 | Reductores Planetarios |  | 2w | 2016-12-19 | 2016-12-30 | 19SS |  |  | 2016-12-16 | 2016-12-29 | 2w | 0d |  |  | Marcelo vargas; Planificación [20%] | 96h |  |
| 21 | 3.1.1.3 | Reductores Paralelos |  | 2w | 2016-12-19 | 2016-12-30 | 20SS |  |  | 2016-12-16 | 2016-12-29 | 2w | 0d |  |  | Alonso Silva; Planificación [20%] | 96h |  |
| 22 | 3.1.1.4 | Cilindros |  | 2w | 2016-12-28 | 2017-01-10 | 21SS+7d |  |  | 2016-12-26 | 2017-01-06 | 2w | 0d |  |  | Jendri Calderon; Planificación [20%] | 96h |  |
| 23 | 3.1.1.5 | Compresores |  | 2w | 2016-12-28 | 2017-01-10 | 22SS |  |  | 2016-12-26 | 2017-01-06 | 2w | 0d |  |  | Daniel Osorio; Planificación [20%] | 96h |  |
| 24 | 3.1.1.6 | Bombas |  | 2w | 2017-01-05 | 2017-01-18 | 23SS+7d |  |  | 2017-01-04 | 2017-01-17 | 2w | 0d |  |  | Planificación [20%]; Marcelo Ortiz | 96h |  |
| 25 | 3.1.1.7 | Motores |  | 2w | 2017-01-05 | 2017-01-18 | 24SS |  |  | 2017-01-04 | 2017-01-17 | 2w | 0d |  |  | Planificación [20%]; Adrian Toro | 96h |  |
| 26 | 3.1.1.8 | Maestranza |  | 2w | 2017-01-05 | 2017-01-18 | 25SS |  |  | 2017-01-04 | 2017-01-17 | 2w | 0d |  |  | Planificación [20%]; Raul Tabilo | 96h |  |
| 27 | 3.1.2 | Listado de Productos por Marca y Modelo | milestone | 0d | 2017-01-18 | 2017-01-18 | 18 |  |  | 2017-01-17 | 2017-01-17 |  | 247d |  |  |  |  |  |

| ID | WBS | Task | Type | Duration | Start | Finish | Predecessors | Baseline start | Baseline finish | Baseline duration | Total slack | Free slack | Constraint | Resources | Work |
| --- | --- | --- | --- | --- | --- | --- | --- | --- | --- | --- | --- | --- | --- | --- | --- |
| 28 | 3.1.3 | **Desarrollo Sistema de Apoyo** |  | 24d | 2016-12-23 | 2017-01-24 |  | 2016-12-21 | 2017-01-23 | 24d | 20d | 0d |  |  | 192h |
| 29 | 3.1.3.1 | Analisis Opciones de Sistema |  | 2w | 2016-12-23 | 2017-01-05 | 26FS-20d | 2016-12-21 | 2017-01-04 | 2w | 20d | 0d |  | Dpto. TI | 80h |
| 30 | 3.1.3.2 | Actualizacion de Opciones |  | 14d | 2017-01-05 | 2017-01-24 | 29 | 2017-01-04 | 2017-01-23 | 14d | 20d |  |  | Dpto. TI | 112h |
| 31 | 3.1.4 | Aplicación con opciones actualizadas, Según analisis | milestone | 0d | 2017-01-24 | 2017-01-24 | 28 | 2017-01-23 | 2017-01-23 |  | 243d |  |  |  |  |
| 32 | 3.1.5 | **Revision Tareas (nivel detalle, estandarizacion)** |  | 24d | 2017-01-19 | 2017-02-20 |  | 2017-01-17 | 2017-02-17 | 24d | 0d |  |  |  | 500h |
| 33 | 3.1.5.1 | Transmisones |  | 2w | 2017-01-19 | 2017-02-01 | 26 | 2017-01-17 | 2017-01-30 | 2w | 0d |  |  | Planificación [25%]; Jaime Burdiles | 100h |
| 34 | 3.1.5.2 | Reductores |  | 2w | 2017-01-19 | 2017-02-01 | 33SS | 2017-01-17 | 2017-01-30 | 2w | 0d |  |  | Aldo Recabal; Planificación [25%] | 100h |
| 35 | 3.1.5.3 | Bombas |  | 2w | 2017-01-27 | 2017-02-09 | 34SS+7d | 2017-01-26 | 2017-02-08 | 2w | 0d |  |  | Daniel Gutierrez; Planificación [25%] | 100h |
| 36 | 3.1.5.4 | Cilindros |  | 2w | 2017-01-27 | 2017-02-09 | 35SS | 2017-01-26 | 2017-02-08 | 2w | 0d |  |  | Planificación [25%]; Reinaldo Salinas | 100h |
| 37 | 3.1.5.5 | Maestranza |  | 2w | 2017-02-07 | 2017-02-20 | 36SS+7d | 2017-02-03 | 2017-02-17 | 2w | 0d |  |  | Danilo San martin; Planificación [25%] | 100h |
| 38 | 3.1.6 | Horas Cronologicas / H.H. |  | 2w | 2017-02-20 | 2017-03-03 | 37, 30 | 2017-02-17 | 2017-03-02 | 2w | 0d |  |  | Dpto. TI; Planificación | 160h |
| 39 | 3.1.7 | Listado de Tareas Estándar | milestone | 0d | 2017-02-20 | 2017-02-20 | 32 | 2017-02-17 | 2017-02-17 |  | 223d |  |  |  |  |
| 40 | 3.1.8 | **Desarrollo de Temparios** |  | 34d | 2017-03-06 | 2017-04-18 |  | 2017-03-02 | 2017-04-17 | 34d | 0d |  |  |  | 2192h |
| 41 | 3.1.8.1 | Definicion Centros de Trabajo |  | 34d | 2017-03-06 | 2017-04-18 | 42SS | 2017-03-02 | 2017-04-17 | 34d | 179d |  |  | Planificación | 272h |
| 42 | 3.1.8.2 | Transmisones |  | 1mo | 2017-03-06 | 2017-03-30 | 38 | 2017-03-02 | 2017-03-29 | 1mo | 0d |  |  | Jaime Burdiles; Cesar Toro [50%] | 240h |
| 43 | 3.1.8.3 | Reductores |  | 1mo | 2017-03-06 | 2017-03-30 | 42SS | 2017-03-02 | 2017-03-29 | 1mo | 179d | 0d |  | Aldo Recabal; Francisco Vargas | 320h |
| 44 | 3.1.8.4 | Bombas |  | 1mo | 2017-03-14 | 2017-04-10 | 43SS+7d | 2017-03-13 | 2017-04-06 | 1mo | 179d | 0d |  | Daniel Gutierrez; Luis Godoy [50%] | 240h |
| 45 | 3.1.8.5 | Cilindros |  | 1mo | 2017-03-14 | 2017-04-10 | 44SS | 2017-03-13 | 2017-04-06 | 1mo | 179d | 0d |  | Reinaldo Salinas; Carlos Belmar | 320h |
| 46 | 3.1.8.6 | Maestranza |  | 1mo | 2017-03-23 | 2017-04-18 | 45SS+7d | 2017-03-21 | 2017-04-17 | 1mo | 179d | 0d |  | Danilo San martin; Jc toro; Francisco Gomez; Luis Godoy [50%] | 560h |
| 47 | 3.1.8.7 | Motores |  | 1mo | 2017-03-23 | 2017-04-18 | 46SS | 2017-03-21 | 2017-04-17 | 1mo | 179d |  |  | Adrian Toro; Cesar Toro [50%] | 240h |
| 48 | 3.1.9 | Listado de Temparios | milestone | 0d | 2017-04-18 | 2017-04-18 | 40 | 2017-04-17 | 2017-04-17 |  | 179d |  |  |  |  |
| 49 | 3.1.10 | Desarrollo sistema de Apoyo |  | 33d | 2017-03-06 | 2017-04-18 | 42SS | 2017-03-02 | 2017-04-14 | 33d | 0d |  | start no earlier than 2017-02-20 | Dpto. TI | 264h |
| 50 | 3.1.11 | Aplicación para Administracion de Temparios | milestone | 0d | 2017-04-18 | 2017-04-18 | 49 | 2017-04-14 | 2017-04-14 |  | 180d |  |  |  |  |
| 51 | 3.2 | Rediseño E Integracion H. Ruta con Temparios |  | 14d | 2017-04-19 | 2017-05-09 | 49FS+1d | 2017-04-17 | 2017-05-05 | 14d | 0d |  |  | Dpto. TI [50%]; Planificación [50%] | 112h |
| 52 | 3.3 | Aplicación HR incorporando Temparios | milestone | 0d | 2017-05-09 | 2017-05-09 | 51 | 2017-05-05 | 2017-05-05 |  | 165d |  |  |  |  |
| 53 | 3.4 | Implementacion Produccion |  | 2mo | 2017-05-09 | 2017-06-30 | 51, 14 | 2017-05-05 | 2017-06-29 | 2mo | 125d |  |  | Planificación [50%] | 160h |
| 54 | 4 | Reporte Generacion Hojas de Ruta con Temparios | milestone | 0d | 2017-06-30 | 2017-06-30 | 16 | 2017-06-29 | 2017-06-29 |  | 125d | 0d |  |  |  |

Notes:
- 53: Tarea considera impolementacion de temparios en paralelo con las distintas areas

| ID | WBS | Task | Type | Duration | Start | Finish | Predecessors | Baseline start | Baseline finish | Baseline duration | Total slack | Free slack | Resources | Work |
| --- | --- | --- | --- | --- | --- | --- | --- | --- | --- | --- | --- | --- | --- | --- |
| 55 | 5 | **Detalle de reparación** |  | 36d | 2017-05-09 | 2017-06-26 |  | 2017-05-05 | 2017-06-22 | 36d | 0d |  |  | 296h |
| 56 | 5.1 | Controles Seguimientos repuestos/materiales |  | 2w | 2017-05-09 | 2017-05-22 | 49, 51 | 2017-05-05 | 2017-05-19 | 2w | 0d |  | Dpto. TI [50%]; Planificación [15%] | 52h |
| 57 | 5.2 | Incorporar Temparios a Detalle de Reparacion |  | 2w | 2017-05-22 | 2017-06-02 | 56 | 2017-05-19 | 2017-06-01 | 2w | 0d |  | Dpto. TI [50%]; Planificación [15%] | 52h |
| 58 | 5.3 | Generacion HR desde Detalle de Reparacion |  | 2w | 2017-06-05 | 2017-06-16 | 57 | 2017-06-01 | 2017-06-14 | 2w | 0d |  | Dpto. TI [50%]; Planificación [15%] | 52h |
| 59 | 5.4 | Desarrollo Sistema de Apoyo |  | 7w | 2017-05-10 | 2017-06-26 | 56SS+1d | 2017-05-08 | 2017-06-22 | 7w | 129d | 0d | Dpto. TI [50%] | 140h |
| 60 | 5.5 | Aplicacion administracion DR incorporando Temparios | milestone | 0d | 2017-06-26 | 2017-06-26 | 59 | 2017-06-22 | 2017-06-22 |  | 129d |  |  |  |
| 61 | 6 | Reporte Modificaciones Detalle de Reparacion | milestone | 0d | 2017-06-30 | 2017-06-30 | 54 | 2017-06-29 | 2017-06-29 |  | 125d |  |  |  |
| 62 | 7 | **Programacion de Trabajos** |  | 55d | 2017-06-16 | 2017-08-31 |  | 2017-06-15 | 2017-08-29 | 55d | 0d |  |  | 320h |
| 63 | 7.1 | **Generacion Centros de Trabajo** |  | 10d | 2017-06-16 | 2017-06-30 |  | 2017-06-15 | 2017-06-29 | 10d | 0d |  |  | 80h |
| 64 | 7.1.1 | Revision Capacidades y Tipo de recursos |  | 2w | 2017-06-16 | 2017-06-30 | 58 | 2017-06-15 | 2017-06-29 | 2w | 0d |  | Dpto. TI [50%]; Planificación [50%] | 80h |
| 65 | 7.2 | Desarrollo sistema de Apoyo |  | 3w | 2017-06-30 | 2017-07-20 | 64 | 2017-06-29 | 2017-07-19 | 3w | 0d |  | Dpto. TI | 120h |
| 66 | 7.3 | Aplicación Administracion Centros de Trabajo | milestone | 0d | 2017-07-20 | 2017-07-20 | 65 | 2017-07-19 | 2017-07-19 |  | 110d |  |  |  |
| 67 | 7.4 | implementacion Areas |  | 1.5mo | 2017-07-20 | 2017-08-31 | 65 | 2017-07-19 | 2017-08-29 | 1.5mo | 0d |  | Planificación [50%] | 120h |
| 68 | 8 | Reporte programación Semanal de Trabajos | milestone | 0d | 2017-08-31 | 2017-08-31 | 62 | 2017-08-29 | 2017-08-29 |  | 80d |  |  |  |
| 69 | 9 | **Planificacion** |  | 80d | 2017-08-31 | 2017-12-22 |  | 2017-08-29 | 2017-12-21 | 80d | 0d |  |  | 1280h |
| 70 | 9.1 | Simulaciones |  | 2mo | 2017-08-31 | 2017-10-26 | 67 | 2017-08-29 | 2017-10-25 | 2mo | 0d |  | Dpto. TI; Planificación | 640h |
| 71 | 9.2 | Reporte Criterios Simulacion y Muestra Simulaciones | milestone | 0d | 2017-10-26 | 2017-10-26 | 70 | 2017-10-25 | 2017-10-25 |  | 40d |  |  |  |
| 72 | 9.3 | Plan Maestro de Produccion |  | 2mo | 2017-10-26 | 2017-12-22 | 70 | 2017-10-25 | 2017-12-21 | 2mo | 0d |  | Dpto. TI; Planificación | 640h |
| 73 | 9.4 | Reporte Escenario de Taller y reportes asociados | milestone | 0d | 2017-12-22 | 2017-12-22 | 72 | 2017-12-21 | 2017-12-21 |  | 0d |  |  |  |
| 74 | 9.5 | Aplicación Admnistracion plan de produccion | milestone | 0d | 2017-12-22 | 2017-12-22 | 70, 72 | 2017-12-21 | 2017-12-21 |  | 0d |  |  |  |
| 75 | 10 | Resumen Final de Proyecto | milestone | 0d | 2017-12-22 | 2017-12-22 | 69 | 2017-12-21 | 2017-12-21 |  | 0d |  |  |  |
