# ARMADO COMPRESOR ES-8

Schedule from MS Project, 2016-07-28 to 2016-08-04.
Microsoft Corporation

## Calendars

- MD - 2015/2016: Mon-Fri 07:45-12:30, 13:15-17:00; Sat-Sun off. Exceptions (off unless hours are given): 2015-05-01 to 2024-05-01 (Día del trabajo, recurring), 2015-05-21 to 2024-05-21 (Glorias Navales, recurring), 2015-06-27 to 2024-06-27 (San Pedro y San Pablo, recurring), 2015-07-16 to 2024-07-16 (Solemnidad de la virgen del Carmen, recurring), 2015-08-15 to 2024-08-15 (Asuncion de la Virgen, recurring), 2015-09-18 to 2024-09-18 (Fiestas Patrias, recurring), 2015-09-19 to 2024-09-19 (Glorias Del Ejercito, recurring), 2015-10-12 to 2024-10-12 (Día de Descubrimiento de 2 Mundos, recurring), 2015-10-31 to 2024-10-31 (Día de las Iglesias Evangelicas y Protestantes, recurring), 2015-11-01 to 2024-11-01 (Día de Todos Los Santos, recurring), 2015-12-08 to 2024-12-08 (Día de la inmaculada Concepción, recurring), 2015-12-25 to 2024-12-25 (Navidad, recurring), 2016-01-01 to 2025-01-01 (Año Nuevo, recurring).

## Schedule

| ID | WBS | Task | Type | Duration | Start | Finish | Predecessors | Total slack | Constraint |
| --- | --- | --- | --- | --- | --- | --- | --- | --- | --- |
| 1 | 1 | **Activar Subcontratos y compras** |  | 1d | 2016-07-28 07:45 | 2016-07-28 16:30 |  | 0d |  |
| 2 | 1.1 | Preparar subcontrato |  | 1d | 2016-07-28 07:45 | 2016-07-28 16:30 |  | 16.69d | start no earlier than 2016-07-28 07:45 |
| 3 | 1.2 | Comprar repuestos | milestone | 0d | 2016-07-28 07:45 | 2016-07-28 07:45 |  | 0d |  |
| 4 | 2 | **Limpieza y mantenimiento** |  | 3d | 2016-07-28 07:45 | 2016-08-01 15:30 |  | 0d |  |
| 5 | 2.1 | LIMPIEZA A EQUIPO COMPRESOR |  | 1h | 2016-07-28 07:45 | 2016-07-28 08:45 | 3 | 0d |  |
| 6 | 2.2 | LIMPIEZA A ENFRIADORES CON DESMONTAJE |  | 1.5h | 2016-07-28 08:45 | 2016-07-28 10:15 | 5 | 0d |  |
| 7 | 2.3 | MANTENIMIENTO A VALVULA DE ADMISION CON CAMBIO DE KIT |  | 1h | 2016-07-28 10:15 | 2016-07-28 11:15 | 6 | 0d |  |
| 8 | 2.4 | MANTENIMIENTO A VALVULA DE MINIMA PRESION CON CAMBIO DE KIT |  | 1h | 2016-07-28 11:15 | 2016-07-28 12:15 | 7 | 0d |  |
| 9 | 2.5 | MANTENIMIENTO A VALVULA TERMOSTATICA CON CAMBIO DE KIT |  | 1h | 2016-07-28 12:15 | 2016-07-28 14:00 | 8 | 0d |  |
| 10 | 2.6 | MANTENIMIENTO A VALVULA REGULADORA DE PRESION CON CAMBIO DE KIT |  | 1h | 2016-07-28 14:00 | 2016-07-28 15:00 | 9 | 0d |  |
| 11 | 2.7 | MANTENIMIENTO A SISTEMA DE ACOPLAMIENTO CON CAMBIO DE ELASTOMERO |  | 1.5h | 2016-07-28 15:00 | 2016-07-28 16:30 | 10 | 0d |  |
| 12 | 2.8 | MANTENIMIENTO A TABLERO DE CONTROL |  | 1h | 2016-07-28 16:30 | 2016-07-29 08:15 | 11 | 0d |  |
| 13 | 2.9 | MANTENIMIENTO A CONTACTORES |  | 1h | 2016-07-29 08:15 | 2016-07-29 09:15 | 12 | 0d |  |
| 14 | 2.10 | MANTENIMIENTO A VALVULAS SOLENOIDES CON CAMBIO DE KIT |  | 2h | 2016-07-29 09:15 | 2016-07-29 11:15 | 13 | 0d |  |
| 15 | 2.11 | MANTENIMIENTO A MOTOR CON CAMBIO DE RODAMIENTOS Y REFORZAMIENTO DE BOBINADO |  | 12h | 2016-07-29 11:15 | 2016-08-01 15:30 | 14 | 0d |  |
| 16 | 3 | **Armado** |  | 1.97d | 2016-08-01 15:30 | 2016-08-03 14:15 |  | 0d |  |
| 17 | 3.1 | MONTAJE DE MOTOR |  | 2h | 2016-08-01 15:30 | 2016-08-02 08:15 | 15 | 0d |  |
| 18 | 3.2 | REEMPLAZO DE FILTRO DE AIRE |  | 0.25h | 2016-08-02 08:15 | 2016-08-02 08:30 | 17 | 0d |  |
| 19 | 3.3 | REEMPLAZO DE FILTRO DE ACEITE |  | 0.25h | 2016-08-02 08:30 | 2016-08-02 08:45 | 18 | 0d |  |
| 20 | 3.4 | REEMPLAZO DE ELEMENTO SEPARADOR Y MANTENIMIENTO LINEA DE BARRIDO |  | 1h | 2016-08-02 08:45 | 2016-08-02 09:45 | 19 | 0d |  |
| 21 | 3.5 | REEMPLAZO DE ACEITE |  | 1h | 2016-08-02 09:45 | 2016-08-02 10:45 | 20 | 0d |  |
| 22 | 3.6 | REEMPLAZO DE CONTACTORES |  | 0.5h | 2016-08-02 10:45 | 2016-08-02 11:15 | 21 | 0d |  |
| 23 | 3.7 | REEMPLAZO DE RELE DE PROTECCION |  | 0.25h | 2016-08-02 11:15 | 2016-08-02 11:30 | 22 | 0d |  |
| 24 | 3.8 | REEMPLAZO DE MONITOR DE FASE CON BASE |  | 0.5h | 2016-08-02 11:30 | 2016-08-02 12:00 | 23 | 0d |  |
| 25 | 3.9 | REEMPLAZO DE DUCTOS SEÑAL NEUMATICA |  | 2h | 2016-08-02 12:00 | 2016-08-02 14:45 | 24 | 0d |  |
| 26 | 3.10 | REEMPLAZO DE VALVULAS SOLENOIDES |  | 1h | 2016-08-02 14:45 | 2016-08-02 15:45 | 25 | 0d |  |
| 27 | 3.11 | REEMPLAZO DE UNIDAD COMPRESORA |  | 4h | 2016-08-02 15:45 | 2016-08-03 10:30 | 26 | 0d |  |
| 28 | 3.12 | REEMPLAZO DE CONTROLADOR |  | 1h | 2016-08-03 10:30 | 2016-08-03 11:30 | 27 | 0d |  |
| 29 | 3.13 | REEMPLAZO DE TARJETA I/O |  | 2h | 2016-08-03 11:30 | 2016-08-03 14:15 | 28 | 0d |  |

| ID | WBS | Task | Duration | Start | Finish | Predecessors | Total slack | Free slack |
| --- | --- | --- | --- | --- | --- | --- | --- | --- |
| 30 | 4 | **Prueba** | 0.58d | 2016-08-03 14:15 | 2016-08-04 09:40 |  | 0d |  |
| 31 | 4.1 | Conectar Equipo compresor | 20min | 2016-08-03 14:15 | 2016-08-03 14:35 | 29 | 0d |  |
| 32 | 4.2 | Prueba de funcionamiento | 4h | 2016-08-03 14:35 | 2016-08-04 09:20 | 31 | 0d |  |
| 33 | 4.3 | Desconectar Compresor y Retirar Sensores | 20min | 2016-08-04 09:20 | 2016-08-04 09:40 | 32 | 0d |  |
| 34 | 5 | **Informe** | 0.25d | 2016-08-03 14:15 | 2016-08-03 16:15 |  | 0.33d |  |
| 35 | 5.1 | Emitir informe final | 2h | 2016-08-03 14:15 | 2016-08-03 16:15 | 29 | 0.33d |  |
| 36 | 6 | **Pintado y embalaje** | 1.44d | 2016-07-28 07:45 | 2016-07-29 10:45 |  | 4.11d |  |
| 37 | 6.1 | Pintado equipo y Secado | 8h | 2016-07-28 07:45 | 2016-07-28 16:30 |  | 4.36d | 0d |
| 38 | 6.2 | Pintar atril | 1h | 2016-07-28 16:30 | 2016-07-29 08:15 | 37 | 4.36d | 0d |
| 39 | 6.3 | Montar equipo en atril | 1h | 2016-07-29 08:15 | 2016-07-29 09:15 | 38 | 4.36d | 0d |
| 40 | 6.4 | Plastificar | 1h | 2016-07-29 09:15 | 2016-07-29 10:15 | 39 | 4.36d | 0d |
| 41 | 6.5 | Sacar fotografias de despacho | 0.5h | 2016-07-29 10:15 | 2016-07-29 10:45 | 40 | 4.36d |  |
