# Compresor ES-8 Evaluacion

Schedule from MS Project, 2016-04-08 to 2016-04-15.
Microsoft Corporation

## Calendars

- MD - 2015/2016: Mon-Fri 07:45-12:30, 13:15-17:00; Sat-Sun off. Exceptions (off unless hours are given): 2015-05-01 to 2024-05-01 (Día del trabajo, recurring), 2015-05-21 to 2024-05-21 (Glorias Navales, recurring), 2015-06-27 to 2024-06-27 (San Pedro y San Pablo, recurring), 2015-07-16 to 2024-07-16 (Solemnidad de la virgen del Carmen, recurring), 2015-08-15 to 2024-08-15 (Asuncion de la Virgen, recurring), 2015-09-18 to 2024-09-18 (Fiestas Patrias, recurring), 2015-09-19 to 2024-09-19 (Glorias Del Ejercito, recurring), 2015-10-12 to 2024-10-12 (Día de Descubrimiento de 2 Mundos, recurring), 2015-10-31 to 2024-10-31 (Día de las Iglesias Evangelicas y Protestantes, recurring), 2015-11-01 to 2024-11-01 (Día de Todos Los Santos, recurring), 2015-12-08 to 2024-12-08 (Día de la inmaculada Concepción, recurring), 2015-12-25 to 2024-12-25 (Navidad, recurring), 2016-01-01 to 2025-01-01 (Año Nuevo, recurring).

## Schedule

| ID | WBS | Task | Duration | Start | Finish | Predecessors | Total slack | Free slack | Constraint |
| --- | --- | --- | --- | --- | --- | --- | --- | --- | --- |
| 1 | 1 | **Activación OT** | 5.51d | 2016-04-08 07:45 | 2016-04-15 09:21 |  | 0d |  |  |
| 2 | 1.1 | Activar detalle de reparación | 0.1h | 2016-04-08 07:45 | 2016-04-08 07:51 |  | 0d |  | start no earlier than 2016-04-08 07:45 |
| 3 | 1.2 | VERIFICAR ESTADO DE RECEPCION DE EQUIPO (registro fotográfico R.F.) | 32h | 2016-04-08 07:51 | 2016-04-15 09:21 | 2 | 0d |  |  |
| 4 | 2 | **Limpieza** | 0.38d | 2016-04-08 07:51 | 2016-04-08 10:51 |  | 0.56d |  |  |
| 5 | 2.1 | Limpieza exterior a equipo | 2h | 2016-04-08 07:51 | 2016-04-08 09:51 | 2 | 0.56d | 0d | start no earlier than 2015-11-18 09:00 |
| 6 | 2.2 | Drenaje de aceite | 1h | 2016-04-08 09:51 | 2016-04-08 10:51 | 5 | 0.56d | 0d |  |
| 7 | 3 | **Desarme** | 0.78d | 2016-04-08 10:51 | 2016-04-11 08:36 |  | 0.56d |  |  |
| 8 | 3.1 | EVALUAR ESTADO DE FILTRO DE AIRE (R.F.) | 0.5h | 2016-04-08 10:51 | 2016-04-08 11:21 | 6 | 0.56d | 0d |  |
| 9 | 3.2 | EVALUAR ESTADO DEL FILTRO DE ACEITE (R.F.) | 0.5h | 2016-04-08 11:21 | 2016-04-08 14:21 | 8 | 0.56d | 0d |  |
| 10 | 3.3 | EVALUAR ESTADO DE ELEMENTO SEPARADOR (R.F.) | 1h | 2016-04-08 14:21 | 2016-04-08 15:21 | 9 | 0.56d | 0d |  |
| 11 | 3.4 | VERIFICAR NIVEL DE ACEITE (R.F.) | 0.5h | 2016-04-08 15:21 | 2016-04-08 15:51 | 10 | 0.56d | 0d |  |
| 12 | 3.5 | EVALUAR ESTADO DE COMPONENTES DEL TABLERO DE CONTROL (R.F.) | 1h | 2016-04-08 15:51 | 2016-04-08 16:51 | 11 | 0.56d | 0d |  |
| 13 | 3.6 | VERIFICAR GIRO MANUAL DE MOTOR Y UNIDAD COMPRESORA (R.F.) | 1h | 2016-04-08 16:51 | 2016-04-11 08:36 | 12 | 0.56d | 0d |  |
| 14 | 4 | **Controloes** | 1.12d | 2016-04-11 08:36 | 2016-04-12 09:06 |  | 0.56d |  |  |
| 15 | 4.1 | MEDIR AISLACION DE BOBINADO MOTOR PRINCIPAL (R.F.) | 1h | 2016-04-11 08:36 | 2016-04-11 10:51 | 13 | 0.56d | 0d |  |
| 16 | 4.2 | VERIFICAR ESTADO DE MANGUERAS (R.F.) | 1h | 2016-04-11 10:51 | 2016-04-11 11:51 | 15 | 0.56d | 0d |  |
| 17 | 4.3 | VERIFICAR ESTADO DE ELECTROVALVULAS (R.F.) | 1h | 2016-04-11 11:51 | 2016-04-11 13:36 | 16 | 0.56d | 0d |  |
| 18 | 4.4 | VERIFICAR ESTADO DEL CONTROLADOR (R.F.) | 0.5h | 2016-04-11 13:36 | 2016-04-11 14:06 | 17 | 0.56d | 0d |  |
| 19 | 4.5 | VERIFICAR ESTADO DE COMPONENTES SISTEMA CONTROL NEUMATICO (R.F.) | 1h | 2016-04-11 14:06 | 2016-04-11 16:51 | 18 | 0.56d | 0d |  |
| 20 | 4.6 | REALIZAR PRUEBAS DE OPERACIÓN CON REGISTRO DE PARAMETROS (R.F.) | 1h | 2016-04-11 16:51 | 2016-04-12 08:36 | 19 | 0.56d | 0d |  |
| 21 | 4.7 | Evaluación de atril | 0.5h | 2016-04-12 08:36 | 2016-04-12 09:06 | 20 | 0.56d | 0d |  |
| 22 | 5 | **Informe y preservación** | 1.91d | 2016-04-12 09:06 | 2016-04-13 16:36 |  | 0.56d |  |  |
| 23 | 5.1 | Llenar detalle de raparación | 2h | 2016-04-12 09:06 | 2016-04-12 11:06 | 21 | 0.56d | 0d |  |
| 24 | 5.2 | ELABORAR INFORME TECNICO | 4h | 2016-04-12 11:06 | 2016-04-13 07:51 | 20, 23 | 0.56d | 0d |  |
| 25 | 5.3 | Preservación de equipo | 5h | 2016-04-13 07:51 | 2016-04-13 16:36 | 24 | 1.31d |  |  |

Notes:
- 9: Esta es una tarea hito. Configure una tarea a una duración 0d para marcar un evento en el proyecto.

| ID | WBS | Task | Duration | Start | Finish | Predecessors | Total slack |
| --- | --- | --- | --- | --- | --- | --- | --- |
| 26 | 6 | **Presupuesto** | 1.75d | 2016-04-13 07:51 | 2016-04-14 14:06 |  | 0.56d |
| 27 | 6.1 | Realizar presupuesto | 14h | 2016-04-13 07:51 | 2016-04-14 14:06 | 24 | 0.56d |
