# GFA 355 K Armado

Schedule from MS Project, 2016-07-26 to 2016-08-12.
Microsoft Corporation

## Calendars

- Estándar: Mon-Fri 09:00-13:00, 15:00-19:00; Sat-Sun off.

## Schedule

| ID | WBS | Task | Duration | Start | Finish | Predecessors | Total slack | Free slack | Constraint |
| --- | --- | --- | --- | --- | --- | --- | --- | --- | --- |
| 1 | 1 | **Activar Subcontrato y Compras** | 0.06d | 2016-07-26 09:00 | 2016-07-26 09:30 |  | 0.19d |  |  |
| 2 | 1.1 | Comprar repuestos | 0.1h | 2016-07-26 09:00 | 2016-07-26 09:06 |  | 0.17d | 0d | start no earlier than 2016-07-26 09:00 |
| 3 | 1.2 | Prepara para metalizados | 0.5h | 2016-07-26 09:00 | 2016-07-26 09:30 |  | 0.19d | 0d |  |
| 4 | 2 | **Mecanizado** | 4.75d | 2016-07-26 09:30 | 2016-08-01 17:30 |  | 0.19d |  |  |
| 5 | 2.1 | Mecanizado carcasa de entrada | 8h | 2016-07-26 09:30 | 2016-07-27 09:30 | 3 | 0.19d | 0d |  |
| 6 | 2.2 | Fabricar camisa | 4h | 2016-07-27 09:30 | 2016-07-27 15:30 | 5 | 0.19d | 0d |  |
| 7 | 2.3 | Mecanizado final carcasa de entrada | 6h | 2016-07-27 15:30 | 2016-07-28 11:30 | 6 | 0.19d | 0d |  |
| 8 | 2.4 | Mecanizado tapa portarodamiento | 8h | 2016-07-28 11:30 | 2016-07-29 11:30 | 7 | 0.19d | 0d |  |
| 9 | 2.5 | Encamisar tapa porta rodamiento | 4h | 2016-07-29 11:30 | 2016-07-29 17:30 | 8 | 0.19d | 0d |  |
| 10 | 2.6 | Mecanizado final tapa porta rodamiento | 8h | 2016-07-29 17:30 | 2016-08-01 17:30 | 9 | 0.19d |  |  |
| 11 | 3 | **Armado** | 10.62d | 2016-07-26 09:00 | 2016-08-09 16:00 |  | 0d |  |  |
| 12 | 3.1 | Limpieza de todos los componentes | 40h | 2016-07-26 09:00 | 2016-08-01 19:00 |  | 0d |  | start no earlier than 2016-07-26 09:00 |
| 13 | 3.2 | Revisar repuestos | 4h | 2016-07-26 09:00 | 2016-07-26 13:00 |  | 4.5d |  | start no earlier than 2016-07-26 09:00 |
| 14 | 3.3 | Dar ajustes a conjunto de entrada | 2h | 2016-08-02 09:00 | 2016-08-02 11:00 | 10, 12, 13 | 0d |  |  |
| 15 | 3.4 | preparar porta satelites | 3h | 2016-08-02 11:00 | 2016-08-02 16:00 | 14 | 0d |  |  |
| 16 | 3.5 | Montar disco axial | 3h | 2016-08-02 16:00 | 2016-08-02 19:00 | 15 | 0d |  |  |
| 17 | 3.6 | Preparar porta planetarios | 2h | 2016-08-03 09:00 | 2016-08-03 11:00 | 16 | 0d |  |  |
| 18 | 3.7 | Preparar componentes para armado de piñones satelites | 1h | 2016-08-03 11:00 | 2016-08-03 12:00 | 17 | 0d |  |  |
| 19 | 3.8 | montar rodamiento en piñón | 2h | 2016-08-03 12:00 | 2016-08-03 16:00 | 18 | 0d |  |  |
| 20 | 3.9 | Montar piñón armado en puño porta satelite | 2h | 2016-08-03 16:00 | 2016-08-03 18:00 | 19 | 0d |  |  |
| 21 | 3.10 | Posicionar porta planetario | 1h | 2016-08-03 18:00 | 2016-08-03 19:00 | 20 | 0d |  |  |
| 22 | 3.11 | Montar rodamiento en pista porta planetario | 1h | 2016-08-04 09:00 | 2016-08-04 10:00 | 21 | 0d |  |  |
| 23 | 3.12 | Posicionar piñón planetario y montar rodamiento | 5h | 2016-08-04 10:00 | 2016-08-04 17:00 | 22 | 0d |  |  |
| 24 | 3.13 | Montar piñones en porta planetario | 5h | 2016-08-04 17:00 | 2016-08-05 12:00 | 23 | 0d |  |  |
| 25 | 3.14 | Invertir conjunto de salida ensamblado | 1h | 2016-08-05 12:00 | 2016-08-05 13:00 | 24 | 0d |  |  |
| 26 | 3.15 | Montar piñón solar | 1h | 2016-08-05 15:00 | 2016-08-05 16:00 | 25 | 0d |  |  |
| 27 | 3.16 | Montar conjunto porta planetario intermedio en estriado de piñón solar | 1h | 2016-08-05 16:00 | 2016-08-05 17:00 | 26 | 0d |  |  |
| 28 | 3.17 | Montar anillo | 1h | 2016-08-05 17:00 | 2016-08-05 18:00 | 27 | 0d |  |  |
| 29 | 3.18 | posicionar anillo dentado con dentado hacia arriba | 0.5h | 2016-08-05 18:00 | 2016-08-05 18:30 | 28 | 0d |  |  |
| 30 | 3.19 | Montar anillo porta rodamiento | 0.5h | 2016-08-05 18:30 | 2016-08-05 19:00 | 29 | 0d |  |  |
| 31 | 3.20 | Montar conjunto porta planetario en anillo dentado | 0.5h | 2016-08-08 09:00 | 2016-08-08 09:30 | 30 | 0d |  |  |
| 32 | 3.21 | Montar cubierta de salida | 0.5h | 2016-08-08 09:30 | 2016-08-08 10:00 | 31 | 0d |  |  |
| 33 | 3.22 | Montar sellos de alojamiento de tapa | 1h | 2016-08-08 10:00 | 2016-08-08 11:00 | 32 | 0d |  |  |
| 34 | 3.23 | Montar tapa porta sellos | 0.5h | 2016-08-08 11:00 | 2016-08-08 11:30 | 33 | 0d |  |  |
| 35 | 3.24 | Montaje conjunto masa corona | 1h | 2016-08-08 11:30 | 2016-08-08 12:30 | 34 | 0d |  |  |
| 36 | 3.25 | Montar cubierta | 0.5h | 2016-08-08 12:30 | 2016-08-08 13:00 | 35 | 0d |  |  |
| 37 | 3.26 | Montar conjunto de entrada | 2h | 2016-08-08 15:00 | 2016-08-08 17:00 | 36 | 0d |  |  |
| 38 | 3.27 | Dar juego Backlash | 1h | 2016-08-08 17:00 | 2016-08-08 18:00 | 37 | 0d |  |  |
| 39 | 3.28 | Montar caja porta eje de entrada | 2h | 2016-08-08 18:00 | 2016-08-09 10:00 | 38 | 0d |  |  |
| 40 | 3.29 | Montar tapa axial | 1h | 2016-08-09 10:00 | 2016-08-09 11:00 | 39 | 0d |  |  |
| 41 | 3.30 | Torqueado general de pernos | 3h | 2016-08-09 11:00 | 2016-08-09 16:00 | 40 | 0d |  |  |

| ID | WBS | Task | Duration | Start | Finish | Predecessors | Total slack |
| --- | --- | --- | --- | --- | --- | --- | --- |
| 42 | 4 | **Prueba** | 1.38d | 2016-08-09 16:00 | 2016-08-10 19:00 |  | 0d |
| 43 | 4.1 | Preparar equipo para prueba | 8h | 2016-08-09 16:00 | 2016-08-10 16:00 | 41 | 0d |
| 44 | 4.2 | Realizar prueba y tomar controles de T° y RPM | 2h | 2016-08-10 16:00 | 2016-08-10 18:00 | 43 | 0d |
| 45 | 4.3 | Instalar machones | 1h | 2016-08-10 18:00 | 2016-08-10 19:00 | 44 | 0d |
| 46 | 5 | **Informe** | 0.75d | 2016-08-11 09:00 | 2016-08-11 17:00 |  | 1.01d |
| 47 | 5.1 | Emitir informe final | 6h | 2016-08-11 09:00 | 2016-08-11 17:00 | 45 | 1.01d |
| 48 | 6 | **Pintado y embalaje** | 1.76d | 2016-08-11 09:00 | 2016-08-12 17:06 |  | 0d |
| 49 | 6.1 | Pintado y secado de equipo | 8h | 2016-08-11 09:00 | 2016-08-11 19:00 | 45 | 0d |
| 50 | 6.2 | Pintar atril | 2h | 2016-08-12 09:00 | 2016-08-12 11:00 | 49 | 0d |
| 51 | 6.3 | Montar equipo en atril | 2h | 2016-08-12 11:00 | 2016-08-12 13:00 | 50 | 0d |
| 52 | 6.4 | Plastificar | 2h | 2016-08-12 15:00 | 2016-08-12 17:00 | 51 | 0d |
| 53 | 6.5 | Sacar fotografias de despacho | 0.1h | 2016-08-12 17:00 | 2016-08-12 17:06 | 52 | 0d |
