# GFA 355 K Evaluacion

Schedule from MS Project, 2016-07-26 to 2016-08-11.
Microsoft Corporation

## Calendars

- Estándar: Mon-Fri 09:00-13:00, 15:00-19:00; Sat-Sun off.

## Resources

| Resource |
| --- |
| 9 |
| 10 |
| 11 |
| 12 |
| 13 |
| 14 |
| 15 |
| 16 |
| 17 |
| 18 |
| 19 |
| 20 |
| 21 |
| 22 |
| 23 |
| 24 |
| 25 |
| 26 |
| 27 |
| 28 |
| 29 |
| 30 |
| 31 |
| 32 |
| 33 |
| 34 |
| 35 |
| 36 |
| 37 |
| 38 |
| 39 |
| 40 |
| 41 |
| 45 |
| 46 |
| 47 |
| 48 |
| 49 |
| 50 |
| 51 |
| 52 |
| 53 |
| 54 |
| 55 |
| 56 |
| 57 |
| 58 |
| 59 |
| 60 |
| 61 |
| 62 |
| 63 |
| 64 |
| 65 |
| 66 |
| 67 |
| 68 |
| 69 |
| 70 |
| 71 |
| 72 |
| 73 |
| 74 |
| 75 |
| 76 |
| 77 |
| 43 |

## Schedule

| ID | WBS | Task | Duration | Start | Finish | Predecessors | Total slack | Free slack | Constraint | Resources | Work |
| --- | --- | --- | --- | --- | --- | --- | --- | --- | --- | --- | --- |
| 1 | 1 | **Activacion OT** | 12.25d | 2016-07-26 09:00 | 2016-08-11 11:00 |  | 0.69d |  |  |  |  |
| 2 | 1.1 | Activar detalle de reparación | 8h | 2016-07-26 09:00 | 2016-07-26 19:00 |  | 0.69d | 0d | start no earlier than 2016-07-26 09:00 |  |  |
| 3 | 1.2 | Registro Fotografico | 90h | 2016-07-27 09:00 | 2016-08-11 11:00 | 2 | 0.69d |  | start no earlier than 2015-12-09 09:00 |  |  |
| 4 | 2 | **Limpieza** | 0.5d | 2016-07-26 09:00 | 2016-07-26 13:00 |  | 0d |  |  |  |  |
| 5 | 2.1 | Limpieza exterior de componente | 3h | 2016-07-26 09:00 | 2016-07-26 12:00 |  | 0d |  | start no earlier than 2016-07-26 09:00 |  |  |
| 6 | 2.2 | Drenaje de aceite | 1h | 2016-07-26 12:00 | 2016-07-26 13:00 | 5 | 0d |  | start no earlier than 2015-12-09 09:00 |  |  |
| 7 | 3 | **Desarme** | 3.19d | 2016-07-26 15:00 | 2016-07-29 16:30 |  | 0d |  |  |  | 23.5h |
| 8 | 3.1 | posicionar reductor | 2h | 2016-07-26 15:00 | 2016-07-26 17:00 | 6 | 0d |  | start no earlier than 2015-12-09 09:00 |  |  |
| 9 | 3.2 | desmontar cubierta frontal | 1h | 2016-07-26 17:00 | 2016-07-26 18:00 | 8 | 0d |  |  | 10 | 1h |
| 10 | 3.3 | desmontar eje de entrada | 1h | 2016-07-26 18:00 | 2016-07-26 19:00 | 9 | 0d |  |  | 11 | 1h |
| 11 | 3.4 | desmontar rodamientos de eje de entrada | 0.5h | 2016-07-27 09:00 | 2016-07-27 09:30 | 10 | 0d |  |  | 12 | 0.5h |
| 12 | 3.5 | desmontar tapa axial central | 0.5h | 2016-07-27 09:30 | 2016-07-27 10:00 | 11 | 0d |  |  | 13 | 0.5h |
| 13 | 3.6 | desmontar rodamiento central | 3h | 2016-07-27 10:00 | 2016-07-27 13:00 | 12 | 0d |  |  | 14 | 3h |
| 14 | 3.7 | invertir posicion de tapa frontal | 0.5h | 2016-07-27 15:00 | 2016-07-27 15:30 | 13 | 0d |  |  | 15 | 0.5h |
| 15 | 3.8 | desmontar anillo porta rodamiento | 0.5h | 2016-07-27 15:30 | 2016-07-27 16:00 | 14 | 0d |  |  | 16 | 0.5h |
| 16 | 3.9 | desmontar corona de primera reduccion | 0.5h | 2016-07-27 16:00 | 2016-07-27 16:30 | 15 | 0d |  |  | 17 | 0.5h |
| 17 | 3.10 | desmontar solar intermedio | 0.5h | 2016-07-27 16:30 | 2016-07-27 17:00 | 16 | 0d |  |  | 18 | 0.5h |
| 18 | 3.11 | desmontar porta planetario intermedio | 0.5h | 2016-07-27 17:00 | 2016-07-27 17:30 | 17 | 0d |  |  | 19 | 0.5h |
| 19 | 3.12 | desmontar solar de salida | 0.5h | 2016-07-27 17:30 | 2016-07-27 18:00 | 18 | 0d |  |  | 20 | 0.5h |
| 20 | 3.13 | invertir posicion de cuerpo de salida | 1h | 2016-07-27 18:00 | 2016-07-27 19:00 | 19 | 0d |  |  | 21 | 1h |
| 21 | 3.14 | desmontar tapa porta reten de salida | 0.5h | 2016-07-28 09:00 | 2016-07-28 09:30 | 20 | 0d |  |  | 22 | 0.5h |
| 22 | 3.15 | desmontar cubierta de anillos partidos | 0.5h | 2016-07-28 09:30 | 2016-07-28 10:00 | 21 | 0d |  |  | 23 | 0.5h |
| 23 | 3.16 | desmontar anillos partidos | 2h | 2016-07-28 10:00 | 2016-07-28 12:00 | 22 | 0d |  |  | 24 | 2h |
| 24 | 3.17 | desmontar cubierta de salida | 0.5h | 2016-07-28 12:00 | 2016-07-28 12:30 | 23 | 0d |  |  | 25 | 0.5h |
| 25 | 3.18 | desmontar rodamientos de salida | 2h | 2016-07-28 12:30 | 2016-07-28 16:30 | 24 | 0d |  |  | 26 | 2h |
| 26 | 3.19 | posicionar porta planetario de salida | 1h | 2016-07-28 16:30 | 2016-07-28 17:30 | 25 | 0d |  |  | 27 | 1h |
| 27 | 3.20 | desmontar pasadores de planetario | 2h | 2016-07-28 17:30 | 2016-07-29 09:30 | 26 | 0d |  |  | 28 | 2h |
| 28 | 3.21 | desmontar piñones y rodamientos de planetarios de salida | 1h | 2016-07-29 09:30 | 2016-07-29 10:30 | 27 | 0d |  |  | 29 | 1h |
| 29 | 3.22 | Desmontar rodamientos de porta planetario intermedio | 2h | 2016-07-29 10:30 | 2016-07-29 12:30 | 28 | 0d |  |  | 30 | 2h |
| 30 | 3.23 | Desmontar masa porta rodamiento, rodamiento,seguros y o-ring de salida | 1h | 2016-07-29 12:30 | 2016-07-29 15:30 | 29 | 0d |  |  | 31 | 1h |
| 31 | 3.24 | Desmontar sellos de salida y entrada | 1h | 2016-07-29 15:30 | 2016-07-29 16:30 | 30 | 0d |  |  | 32 | 1h |

| ID | WBS | Task | Duration | Start | Finish | Predecessors | Total slack | Resources | Work |
| --- | --- | --- | --- | --- | --- | --- | --- | --- | --- |
| 32 | 4 | **Evaluación** | 6.75d | 2016-07-29 16:30 | 2016-08-09 12:30 |  | 0d |  | 52h |
| 33 | 4.1 | Lavar componentes para evaluación | 30h | 2016-07-29 16:30 | 2016-08-04 12:30 | 31 | 0d | 37 | 30h |
| 34 | 4.2 | Realizar END | 20h | 2016-08-04 12:30 | 2016-08-08 18:30 | 33 | 0d | 38 | 20h |
| 35 | 4.3 | Realizar control dimensional en alojamientos de rodamientos | 2h | 2016-08-08 18:30 | 2016-08-09 10:30 | 34 | 0d | 39 | 2h |
| 36 | 4.4 | Realizar cotrol dimensional a carcasa | 2h | 2016-08-09 10:30 | 2016-08-09 12:30 | 35 | 0d |  |  |
| 37 | 5 | **Informe y preservación** | 2.5d | 2016-08-09 12:30 | 2016-08-11 18:30 |  | 0d | 41 | 26h |
| 38 | 5.1 | Llenar detalle de reparación | 6h | 2016-08-09 12:30 | 2016-08-10 10:30 | 36 | 0d |  | 6h |
| 39 | 5.2 | Emitir informar de evaluación | 6h | 2016-08-10 10:30 | 2016-08-10 18:30 | 38 | 0d |  |  |
| 40 | 5.3 | Preservación de equipo | 8h | 2016-08-10 18:30 | 2016-08-11 18:30 | 39 | 0d |  |  |
| 41 | 6 | **Presupuesto** | 1d | 2016-08-10 18:30 | 2016-08-11 18:30 |  | 0d |  |  |
| 42 | 6.1 | Realizar Presupuesto | 8h | 2016-08-10 18:30 | 2016-08-11 18:30 | 39 | 0d |  |  |
