# GFA 400 W Evaluacion

Schedule from MS Project, 2016-07-26 to 2016-08-15.
Microsoft Corporation

## Calendars

- Estándar: Mon-Fri 09:00-13:00, 15:00-19:00; Sat-Sun off.

## Resources

| Resource |
| --- |
| 9 |
| 10 |
| 11 |
| 12 |
| 13 |
| 14 |
| 15 |
| 16 |
| 17 |
| 18 |
| 19 |
| 20 |
| 21 |
| 22 |
| 23 |
| 24 |
| 25 |
| 26 |
| 27 |
| 28 |
| 29 |
| 30 |
| 31 |
| 32 |
| 33 |
| 34 |
| 35 |
| 36 |
| 37 |
| 38 |
| 39 |
| 40 |
| 41 |
| 45 |
| 46 |
| 47 |
| 48 |
| 49 |
| 50 |
| 51 |
| 52 |
| 53 |
| 54 |
| 55 |
| 56 |
| 57 |
| 58 |
| 59 |
| 60 |
| 61 |
| 62 |
| 63 |
| 64 |
| 65 |
| 66 |
| 67 |
| 68 |
| 69 |
| 70 |
| 71 |
| 72 |
| 73 |
| 74 |
| 75 |
| 76 |
| 77 |
| 43 |

## Schedule

| ID | WBS | Task | Duration | Start | Finish | Predecessors | Total slack | Free slack | Constraint | Resources | Work |
| --- | --- | --- | --- | --- | --- | --- | --- | --- | --- | --- | --- |
| 1 | 1 | **Activacion OT** | 12.88d | 2016-07-26 09:00 | 2016-08-11 18:00 |  | 2.06d |  |  |  |  |
| 2 | 1.1 | Activar detalle de reparación | 8h | 2016-07-26 09:00 | 2016-07-26 19:00 |  | 0.25d | 0d | start no earlier than 2016-07-26 09:00 |  |  |
| 3 | 1.2 | Registro Fotografico | 95h | 2016-07-27 09:00 | 2016-08-11 18:00 | 2 | 0.25d |  | start no earlier than 2015-12-09 09:00 |  |  |
| 4 | 2 | **Limpieza** | 0.5d | 2016-07-26 09:00 | 2016-07-26 13:00 |  | 0d |  |  |  |  |
| 5 | 2.1 | Limpieza exterior de componente | 3h | 2016-07-26 09:00 | 2016-07-26 12:00 |  | 0d |  | start no earlier than 2016-07-26 09:00 |  |  |
| 6 | 2.2 | Drenaje de aceite | 1h | 2016-07-26 12:00 | 2016-07-26 13:00 | 5 | 0d |  | start no earlier than 2015-12-09 09:00 |  |  |
| 7 | 3 | **Desarme** | 4.06d | 2016-07-26 15:00 | 2016-08-01 15:30 |  | 0d |  |  |  | 23.5h |
| 8 | 3.1 | posicionar reductor sobre cubieta de salida | 2h | 2016-07-26 15:00 | 2016-07-26 17:00 | 6 | 0d |  | start no earlier than 2015-12-09 09:00 |  |  |
| 9 | 3.2 | desmontar caja porta eje de entrada | 1h | 2016-07-26 17:00 | 2016-07-26 18:00 | 8 | 0d |  |  | 10 | 1h |
| 10 | 3.3 | desmontar cubierta frontal | 1h | 2016-07-26 18:00 | 2016-07-26 19:00 | 9 | 0d |  |  | 11 | 1h |
| 11 | 3.4 | desmontar eje porta corona | 0.5h | 2016-07-27 09:00 | 2016-07-27 09:30 | 10 | 0d |  |  | 12 | 0.5h |
| 12 | 3.5 | desmontar anillo porta rodamiento | 0.5h | 2016-07-27 09:30 | 2016-07-27 10:00 | 11 | 0d |  |  | 13 | 0.5h |
| 13 | 3.6 | desmontar solar de entrada | 0.5h | 2016-07-27 10:00 | 2016-07-27 10:30 | 12 | 0d |  |  | 14 | 0.5h |
| 14 | 3.7 | desmontar primer planetario | 0.5h | 2016-07-27 10:30 | 2016-07-27 11:00 | 13 | 0d |  |  | 15 | 0.5h |
| 15 | 3.8 | desmontar rodamientos y satelites de primer planetario | 2h | 2016-07-27 11:00 | 2016-07-27 13:00 | 14 | 0d |  |  | 16 | 2h |
| 16 | 3.9 | desmontar solar intermedio | 0.5h | 2016-07-27 15:00 | 2016-07-27 15:30 | 15 | 0d |  |  | 17 | 0.5h |
| 17 | 3.10 | desmontar porta planetario intermedio | 0.5h | 2016-07-27 15:30 | 2016-07-27 16:00 | 16 | 0d |  |  | 18 | 0.5h |
| 18 | 3.11 | desmontar cuerpo dentado intermedio | 1h | 2016-07-27 16:00 | 2016-07-27 17:00 | 17 | 0d |  |  | 19 | 1h |
| 19 | 3.12 | desmontar solar de salida | 0.5h | 2016-07-27 17:00 | 2016-07-27 17:30 | 18 | 0d |  |  | 20 | 0.5h |
| 20 | 3.13 | desmontar cubierta intermedia | 2h | 2016-07-27 17:30 | 2016-07-28 09:30 | 19 | 0d |  |  | 21 | 2h |
| 21 | 3.14 | desmontar porta planetario de salida | 1h | 2016-07-28 09:30 | 2016-07-28 10:30 | 20 | 0d |  |  | 22 | 1h |
| 22 | 3.15 | invertir posicion de cuerpo de salida | 1h | 2016-07-28 10:30 | 2016-07-28 11:30 | 21 | 0d |  |  | 23 | 1h |
| 23 | 3.16 | desmontar tapa porta retenes de salida | 0.5h | 2016-07-28 11:30 | 2016-07-28 12:00 | 22 | 0d |  |  | 24 | 0.5h |
| 24 | 3.17 | desmontar cubierta de salida | 1h | 2016-07-28 12:00 | 2016-07-28 13:00 | 23 | 0d |  |  | 25 | 1h |
| 25 | 3.18 | desmontar anillo porta rodamiento | 0.5h | 2016-07-28 15:00 | 2016-07-28 15:30 | 24 | 0d |  |  | 26 | 0.5h |
| 26 | 3.19 | posicionar componentes para desarme completo | 1h | 2016-07-28 15:30 | 2016-07-28 16:30 | 25 | 0d |  |  | 27 | 1h |
| 27 | 3.20 | Desmontar tapa porta sellos de entrada | 0.5h | 2016-07-28 16:30 | 2016-07-28 17:00 | 26 | 0d |  |  | 28 | 0.5h |
| 28 | 3.21 | Desmontar tuerca de ajuste axial | 0.5h | 2016-07-28 17:00 | 2016-07-28 17:30 | 27 | 0d |  |  | 29 | 0.5h |
| 29 | 3.22 | Posicionar caja porta rodamiento en prensa | 1h | 2016-07-28 17:30 | 2016-07-28 18:30 | 28 | 0d |  |  | 30 | 1h |
| 30 | 3.23 | Desmontar eje desde caja | 0.5h | 2016-07-28 18:30 | 2016-07-28 19:00 | 29 | 0d |  |  | 31 | 0.5h |
| 31 | 3.24 | Desmontar demás componentes del eje | 1h | 2016-07-29 09:00 | 2016-07-29 10:00 | 30 | 0d |  |  | 32 | 1h |
| 32 | 3.25 | Desmontar tapas axiales desde cubierta | 0.5h | 2016-07-29 10:00 | 2016-07-29 10:30 | 31 | 0d |  |  | 33 | 0.5h |
| 33 | 3.26 | Desmontar rodamientos desde eje porta corona | 1h | 2016-07-29 10:30 | 2016-07-29 11:30 | 32 | 0d |  |  | 34 | 1h |
| 34 | 3.27 | Desmontar cubeta desde anillo porta rodamiento | 1h | 2016-07-29 11:30 | 2016-07-29 12:30 | 33 | 0d |  |  | 35 | 1h |
| 35 | 3.28 | Desmontar rodamientos de porta planetario intermedio | 2h | 2016-07-29 12:30 | 2016-07-29 16:30 | 34 | 0d |  |  | 36 | 2h |
| 36 | 3.29 | Desmontar rodamiento desde solar | 1h | 2016-07-29 16:30 | 2016-07-29 17:30 | 35 | 0d |  |  |  |  |
| 37 | 3.30 | Desmontar pasadores y piñones desde porta planetario de salida | 3h | 2016-07-29 17:30 | 2016-08-01 10:30 | 36 | 0d |  |  |  |  |
| 38 | 3.31 | Desmontar rodamiento desde anillo y tapa porta rodamiento | 1h | 2016-08-01 10:30 | 2016-08-01 11:30 | 37 | 0d |  |  |  |  |
| 39 | 3.32 | Desmontar masa porta rodamiento, seguros y o-ring de salida | 1h | 2016-08-01 11:30 | 2016-08-01 12:30 | 38 | 0d |  |  |  |  |
| 40 | 3.33 | Desmontar sellos de salida y entrada | 1h | 2016-08-01 12:30 | 2016-08-01 15:30 | 39 | 10.38d |  |  |  |  |

| ID | WBS | Task | Duration | Start | Finish | Predecessors | Total slack | Resources | Work |
| --- | --- | --- | --- | --- | --- | --- | --- | --- | --- |
| 41 | 4 | **Evaluación** | 8d | 2016-08-01 12:30 | 2016-08-11 12:30 |  | 0d |  | 62h |
| 42 | 4.1 | Lavar componentes para evaluación | 35h | 2016-08-01 12:30 | 2016-08-05 17:30 | 39 | 0d | 37 | 35h |
| 43 | 4.2 | Realizar END | 25h | 2016-08-05 17:30 | 2016-08-10 18:30 | 42 | 0d | 38 | 25h |
| 44 | 4.3 | Realizar control dimensional en alojamientos de rodamientos | 2h | 2016-08-10 18:30 | 2016-08-11 10:30 | 43 | 0d | 39 | 2h |
| 45 | 4.4 | Realizar cotrol dimensional a carcasa | 2h | 2016-08-11 10:30 | 2016-08-11 12:30 | 44 | 0d |  |  |
| 46 | 5 | **Informe y preservación** | 2.5d | 2016-08-11 12:30 | 2016-08-15 18:30 |  | 0d | 41 | 26h |
| 47 | 5.1 | Llenar detalle de reparación | 6h | 2016-08-11 12:30 | 2016-08-12 10:30 | 45 | 0d |  | 6h |
| 48 | 5.2 | Emitir informar de evaluación | 6h | 2016-08-12 10:30 | 2016-08-12 18:30 | 47 | 0d |  |  |
| 49 | 5.3 | Preservación de equipo | 8h | 2016-08-12 18:30 | 2016-08-15 18:30 | 48 | 0d |  |  |
| 50 | 6 | **Presupuesto** | 1d | 2016-08-12 18:30 | 2016-08-15 18:30 |  | 0d |  |  |
| 51 | 6.1 | Realizar Presupuesto | 8h | 2016-08-12 18:30 | 2016-08-15 18:30 | 48 | 0d |  |  |
