# GFB 174E Armado

Schedule from MS Project, 2016-06-14 to 2016-10-03.

## Calendars

- MD - 2015/2016: Mon-Fri 07:45-12:30, 13:15-17:00; Sat-Sun off. Exceptions (off unless hours are given): 2015-05-01 to 2024-05-01 (Día del trabajo, recurring), 2015-05-21 to 2024-05-21 (Glorias Navales, recurring), 2015-06-27 to 2024-06-27 (San Pedro y San Pablo, recurring), 2015-07-16 to 2024-07-16 (Solemnidad de la virgen del Carmen, recurring), 2015-08-15 to 2024-08-15 (Asuncion de la Virgen, recurring), 2015-09-18 to 2024-09-18 (Fiestas Patrias, recurring), 2015-09-19 to 2024-09-19 (Glorias Del Ejercito, recurring), 2015-10-12 to 2024-10-12 (Día de Descubrimiento de 2 Mundos, recurring), 2015-10-31 to 2024-10-31 (Día de las Iglesias Evangelicas y Protestantes, recurring), 2015-11-01 to 2024-11-01 (Día de Todos Los Santos, recurring), 2015-12-08 to 2024-12-08 (Día de la inmaculada Concepción, recurring), 2015-12-25 to 2024-12-25 (Navidad, recurring), 2016-01-01 to 2025-01-01 (Año Nuevo, recurring).

## Schedule

| ID | WBS | Task | Duration | Start | Finish | Predecessors | Total slack | Constraint |
| --- | --- | --- | --- | --- | --- | --- | --- | --- |
| 1 | 1 | Compra de Repuestos | 15w | 2016-06-14 07:45 | 2016-09-23 13:30 |  | 0d |  |
| 2 | 2 | Lavar ,controlar componentes | 6h | 2016-09-23 13:30 | 2016-09-26 10:15 | 1 | 0d | start no earlier than 2016-06-14 07:45 |
| 3 | 3 | **Etapa planetaria de primera reducción** | 0.25d | 2016-09-26 10:15 | 2016-09-26 12:15 |  | 0d |  |
| 4 | 3.1 | Montar rodamientos en piñones | 30min | 2016-09-26 10:15 | 2016-09-26 10:45 | 2 | 0d |  |
| 5 | 3.2 | Montar y fijar eje solar en porta satelites | 30min | 2016-09-26 10:45 | 2016-09-26 11:15 | 4 | 0d |  |
| 6 | 3.3 | Montar y fijar piñones en porta satelites | 1h | 2016-09-26 11:15 | 2016-09-26 12:15 | 5 | 0d |  |
| 7 | 4 | **Etapa planetaria de segunda reducción** | 0.56d | 2016-09-26 12:15 | 2016-09-27 08:15 |  | 0d |  |
| 8 | 4.1 | Montar rodamientos en piñones satelites | 2h | 2016-09-26 12:15 | 2016-09-26 15:00 | 6 | 0d |  |
| 9 | 4.2 | Montar piñones en porta satelite | 30min | 2016-09-26 15:00 | 2016-09-26 15:30 | 8 | 0d |  |
| 10 | 4.3 | Enfriar y montar pasadores en porta satelite | 2h | 2016-09-26 15:30 | 2016-09-27 08:15 | 9 | 0d |  |
| 11 | 5 | **Linea de salida** | 0.62d | 2016-09-27 08:15 | 2016-09-27 14:00 |  | 0d |  |
| 12 | 5.1 | Posicionar eje , montar anillo, sellos y rodamiento central | 2h | 2016-09-27 08:15 | 2016-09-27 10:15 | 10 | 0d |  |
| 13 | 5.2 | Montar rodamiento y cuerpo de salida | 2h | 2016-09-27 10:15 | 2016-09-27 12:15 | 12 | 0d |  |
| 14 | 5.3 | Montar seguro y tapa axial | 1h | 2016-09-27 12:15 | 2016-09-27 14:00 | 13 | 0d |  |
| 15 | 6 | **Conjunto** | 0.56d | 2016-09-27 14:00 | 2016-09-28 09:15 |  | 0d |  |
| 16 | 6.1 | Ensamblar cuerpo de salida y cuerpo central | 3h | 2016-09-27 14:00 | 2016-09-27 17:00 | 14 | 0d |  |
| 17 | 6.2 | Montar linea planetaria segunda reduccion | 30min | 2016-09-28 07:45 | 2016-09-28 08:15 | 16 | 0d |  |
| 18 | 6.3 | Montar linea planetaria de primera reduccion | 30min | 2016-09-28 08:15 | 2016-09-28 08:45 | 17 | 0d |  |
| 19 | 6.4 | Montar eje solar de entrada | 30min | 2016-09-28 08:45 | 2016-09-28 09:15 | 18 | 0d |  |
| 20 | 7 | **Sistema de frenos** | 0.75d | 2016-09-28 09:15 | 2016-09-28 16:00 |  | 0d |  |
| 21 | 7.1 | Montar discos de freno | 30min | 2016-09-28 09:15 | 2016-09-28 09:45 | 19 | 0d |  |
| 22 | 7.2 | Montar pistón | 30min | 2016-09-28 09:45 | 2016-09-28 10:15 | 21 | 0d |  |
| 23 | 7.3 | Montar resortes | 30min | 2016-09-28 10:15 | 2016-09-28 10:45 | 22 | 0d |  |
| 24 | 7.4 | Montar sellos | 30min | 2016-09-28 10:45 | 2016-09-28 11:15 | 23 | 0d |  |
| 25 | 7.5 | Montar sistema de freno en reductor | 30min | 2016-09-28 11:15 | 2016-09-28 11:45 | 24 | 0d |  |
| 26 | 7.6 | Realizar prueba de presión al sistema de frenos | 1h | 2016-09-28 11:45 | 2016-09-28 13:30 | 25 | 0d |  |
| 27 | 7.7 | Montar cuerpo porta discos en cuerpo central | 1h | 2016-09-28 13:30 | 2016-09-28 14:30 | 26 | 0d |  |
| 28 | 7.8 | Montar anillo porta motor | 30min | 2016-09-28 14:30 | 2016-09-28 15:00 | 27 | 0d |  |
| 29 | 7.9 | Montar cañerias | 1h | 2016-09-28 15:00 | 2016-09-28 16:00 | 28 | 0d |  |

| ID | WBS | Task | Duration | Start | Finish | Predecessors | Total slack |
| --- | --- | --- | --- | --- | --- | --- | --- |
| 30 | 8 | **Etapa de prueba** | 1.81d | 2016-09-28 16:00 | 2016-09-30 13:30 |  | 0d |
| 31 | 8.1 | Posicionar el componente | 4h | 2016-09-28 16:00 | 2016-09-29 10:45 | 29 | 0d |
| 32 | 8.2 | Preparar dispositivos de prueba | 4h | 2016-09-29 10:45 | 2016-09-29 15:30 | 31 | 0d |
| 33 | 8.3 | Montar elementos de prueba | 2h | 2016-09-29 15:30 | 2016-09-30 08:15 | 32 | 0d |
| 34 | 8.4 | Aporta lubricante | 1h | 2016-09-30 08:15 | 2016-09-30 09:15 | 33 | 0d |
| 35 | 8.5 | Realizar prueba | 1h | 2016-09-30 09:15 | 2016-09-30 10:15 | 34 | 0d |
| 36 | 8.6 | Drenar lubricante de prueba | 30min | 2016-09-30 10:15 | 2016-09-30 10:45 | 35 | 0d |
| 37 | 8.7 | Desmontar elementos de prueba | 2h | 2016-09-30 10:45 | 2016-09-30 13:30 | 36 | 0d |
| 38 | 9 | **Despacho** | 0.62d | 2016-09-30 13:30 | 2016-10-03 09:15 |  | 0d |
| 39 | 9.1 | Pintar ,embalar componente para despacho | 5h | 2016-09-30 13:30 | 2016-10-03 09:15 | 37 | 0d |
