# GFB 174E Evaluacion

Schedule from MS Project, 2016-06-14 to 2016-06-22.

## Calendars

- MD - 2015/2016: Mon-Fri 07:45-12:30, 13:15-17:00; Sat-Sun off. Exceptions (off unless hours are given): 2015-05-01 to 2024-05-01 (Día del trabajo, recurring), 2015-05-21 to 2024-05-21 (Glorias Navales, recurring), 2015-06-27 to 2024-06-27 (San Pedro y San Pablo, recurring), 2015-07-16 to 2024-07-16 (Solemnidad de la virgen del Carmen, recurring), 2015-08-15 to 2024-08-15 (Asuncion de la Virgen, recurring), 2015-09-18 to 2024-09-18 (Fiestas Patrias, recurring), 2015-09-19 to 2024-09-19 (Glorias Del Ejercito, recurring), 2015-10-12 to 2024-10-12 (Día de Descubrimiento de 2 Mundos, recurring), 2015-10-31 to 2024-10-31 (Día de las Iglesias Evangelicas y Protestantes, recurring), 2015-11-01 to 2024-11-01 (Día de Todos Los Santos, recurring), 2015-12-08 to 2024-12-08 (Día de la inmaculada Concepción, recurring), 2015-12-25 to 2024-12-25 (Navidad, recurring), 2016-01-01 to 2025-01-01 (Año Nuevo, recurring).

## Schedule

| ID | WBS | Task | Duration | Start | Finish | Predecessors | Total slack | Constraint |
| --- | --- | --- | --- | --- | --- | --- | --- | --- |
| 1 | 1 | **Desarme del conjunto** | 1.25d | 2016-06-14 07:45 | 2016-06-15 09:15 |  | 0d |  |
| 2 | 1.1 | Limpieza exterior del componente | 2h | 2016-06-14 07:45 | 2016-06-14 09:45 |  | 0d | start no earlier than 2016-06-14 07:45 |
| 3 | 1.2 | Drenar el lubricante desde la caja de engranajes. | 1h | 2016-06-14 09:45 | 2016-06-14 10:45 | 2 | 0d |  |
| 4 | 1.3 | Desmontar cañerias | 30min | 2016-06-14 10:45 | 2016-06-14 11:15 | 3 | 0d |  |
| 5 | 1.4 | Desmontar seguro y cuerpo porta motor | 30min | 2016-06-14 11:15 | 2016-06-14 11:45 | 4 | 0d |  |
| 6 | 1.5 | desmontar cuerpo porta freno | 1h | 2016-06-14 11:45 | 2016-06-14 13:30 | 5 | 0d |  |
| 7 | 1.6 | Desmontar eje solar | 30min | 2016-06-14 13:30 | 2016-06-14 14:00 | 6 | 0d |  |
| 8 | 1.7 | Desmontar linea planetaria de entrada | 30min | 2016-06-14 14:00 | 2016-06-14 14:30 | 7 | 0d |  |
| 9 | 1.8 | Desmontar seguro y linea planetaria de segunda reduccion | 1h | 2016-06-14 14:30 | 2016-06-14 15:30 | 8 | 0d |  |
| 10 | 1.9 | Desmontar pernos y cuerpo dentado central | 1h | 2016-06-14 15:30 | 2016-06-14 16:30 | 9 | 0d |  |
| 11 | 1.10 | Desmontar tapa de salida | 1h | 2016-06-14 16:30 | 2016-06-15 08:15 | 10 | 0d |  |
| 12 | 1.11 | Desmontar cuerpo de salida | 1h | 2016-06-15 08:15 | 2016-06-15 09:15 | 11 | 0d |  |
| 13 | 2 | **Sistema de frenos multidiscos** | 0.25d | 2016-06-15 09:15 | 2016-06-15 11:15 |  | 0d |  |
| 14 | 2.1 | Desmontar eje central | 30min | 2016-06-15 09:15 | 2016-06-15 09:45 | 12 | 0d |  |
| 15 | 2.2 | Prensar, desmontar seguro y resortes | 30min | 2016-06-15 09:45 | 2016-06-15 10:15 | 14 | 0d |  |
| 16 | 2.3 | Desmontar piston y discos | 30min | 2016-06-15 10:15 | 2016-06-15 10:45 | 15 | 0d |  |
| 17 | 2.4 | Desmontar rodamientos y sellos | 30min | 2016-06-15 10:45 | 2016-06-15 11:15 | 16 | 0d |  |
| 18 | 3 | **Etapa planetaria de primera reducción** | 0.31d | 2016-06-15 11:15 | 2016-06-15 14:30 |  | 0d |  |
| 19 | 3.1 | Desmontar seguros axiales | 30min | 2016-06-15 11:15 | 2016-06-15 11:45 | 17 | 0d |  |
| 20 | 3.2 | Desmontar piñones satélites | 1h | 2016-06-15 11:45 | 2016-06-15 13:30 | 19 | 0d |  |
| 21 | 3.3 | Desmontar rodamientos | 30min | 2016-06-15 13:30 | 2016-06-15 14:00 | 20 | 0d |  |
| 22 | 3.4 | Desmontar seguro y eje solar | 30min | 2016-06-15 14:00 | 2016-06-15 14:30 | 21 | 0d |  |
| 23 | 4 | **Etapa planetaria de segunda reducción** | 0.56d | 2016-06-15 14:30 | 2016-06-16 09:45 |  | 0d |  |
| 24 | 4.1 | Desmontar seguros axiales | 30min | 2016-06-15 14:30 | 2016-06-15 15:00 | 22 | 0d |  |
| 25 | 4.2 | Desmontar pasadores | 3h | 2016-06-15 15:00 | 2016-06-16 08:45 | 24 | 0d |  |
| 26 | 4.3 | Desmontar piñones satélites | 30min | 2016-06-16 08:45 | 2016-06-16 09:15 | 25 | 0d |  |
| 27 | 4.4 | Desmontar rodamientos | 30min | 2016-06-16 09:15 | 2016-06-16 09:45 | 26 | 0d |  |

| ID | WBS | Task | Duration | Start | Finish | Predecessors | Total slack |
| --- | --- | --- | --- | --- | --- | --- | --- |
| 28 | 5 | **Linea de salida** | 0.88d | 2016-06-16 09:45 | 2016-06-17 08:15 |  | 0d |
| 29 | 5.1 | Desmontar tapa de salida | 2h | 2016-06-16 09:45 | 2016-06-16 11:45 | 27 | 0d |
| 30 | 5.2 | Desacoplar cuerpo y rodamiento de salida | 2h | 2016-06-16 11:45 | 2016-06-16 14:30 | 29 | 0d |
| 31 | 5.3 | Posicionar en prensa y desmontar eje de salida de anillo | 2h | 2016-06-16 14:30 | 2016-06-16 16:30 | 30 | 0d |
| 32 | 5.4 | Desmontar seguros y rodamientos | 1h | 2016-06-16 16:30 | 2016-06-17 08:15 | 31 | 0d |
| 33 | 6 | **Conjunto** | 3.5d | 2016-06-17 08:15 | 2016-06-22 10:45 |  | 0d |
| 34 | 6.1 | Preparar componentes para evaluacion | 8h | 2016-06-17 08:15 | 2016-06-17 17:00 | 32 | 0d |
| 35 | 6.2 | Realizar control dimensional | 4h | 2016-06-20 07:45 | 2016-06-20 11:45 | 34 | 0d |
| 36 | 6.3 | Realizar END | 6h | 2016-06-20 11:45 | 2016-06-21 09:15 | 35 | 0d |
| 37 | 6.4 | Realizar evaluación | 10h | 2016-06-21 09:15 | 2016-06-22 10:45 | 36 | 0d |
