# Caja PTO GFC 395 Armado

Schedule from MS Project, 2016-10-27 to 2016-11-11.

## Calendars

- MD - 2015/2016: Mon-Fri 07:45-12:30, 13:15-17:00; Sat-Sun off. Exceptions (off unless hours are given): 2015-05-01 to 2024-05-01 (Día del trabajo, recurring), 2015-05-21 to 2024-05-21 (Glorias Navales, recurring), 2015-06-27 to 2024-06-27 (San Pedro y San Pablo, recurring), 2015-07-16 to 2024-07-16 (Solemnidad de la virgen del Carmen, recurring), 2015-08-15 to 2024-08-15 (Asuncion de la Virgen, recurring), 2015-09-18 to 2024-09-18 (Fiestas Patrias, recurring), 2015-09-19 to 2024-09-19 (Glorias Del Ejercito, recurring), 2015-10-12 to 2024-10-12 (Día de Descubrimiento de 2 Mundos, recurring), 2015-10-31 to 2024-10-31 (Día de las Iglesias Evangelicas y Protestantes, recurring), 2015-11-01 to 2024-11-01 (Día de Todos Los Santos, recurring), 2015-12-08 to 2024-12-08 (Día de la inmaculada Concepción, recurring), 2015-12-25 to 2024-12-25 (Navidad, recurring), 2016-01-01 to 2025-01-01 (Año Nuevo, recurring).

## Schedule

| ID | WBS | Task | Duration | Start | Finish | Predecessors | Total slack |
| --- | --- | --- | --- | --- | --- | --- | --- |
| 1 | 1 | **Armado** | 6.5d | 2016-10-27 07:45 | 2016-11-08 08:45 |  | 0d |
| 2 | 1.1 | Limpieza y preparacion de carcasa | 6h | 2016-10-27 07:45 | 2016-10-27 14:30 |  | 0d |
| 3 | 1.2 | Preparacion de todos los componentes internos | 5h | 2016-10-27 14:30 | 2016-10-28 10:15 | 2 | 0d |
| 4 | 1.3 | Revisar repuestos | 3h | 2016-10-28 10:15 | 2016-10-28 14:00 | 3 | 0d |
| 5 | 1.4 | Posicionar carcasa en forma horizontal | 1h | 2016-10-28 14:00 | 2016-10-28 15:00 | 4 | 0d |
| 6 | 1.5 | Montar rodamientos en piñones laterales | 1h | 2016-10-28 15:00 | 2016-10-28 16:00 | 5 | 0d |
| 7 | 1.6 | Armar eje de entrada | 4h | 2016-10-28 16:00 | 2016-11-02 10:45 | 6 | 0d |
| 8 | 1.7 | Montar rodamientos en carcasa | 2h | 2016-11-02 10:45 | 2016-11-02 13:30 | 7 | 0d |
| 9 | 1.8 | Montar piñones en carcasa | 3h | 2016-11-02 13:30 | 2016-11-02 16:30 | 8 | 0d |
| 10 | 1.9 | Montar tapas laterales y torquear pernos de fijación | 3h | 2016-11-02 16:30 | 2016-11-03 10:15 | 9 | 0d |
| 11 | 1.10 | Controlar juego axial de piñones | 1h | 2016-11-03 10:15 | 2016-11-03 11:15 | 10 | 0d |
| 12 | 1.11 | Montar sellos en tapas laterales | 1h | 2016-11-03 11:15 | 2016-11-03 12:15 | 11 | 0d |
| 13 | 1.12 | Invertir posición de carcasa | 30min | 2016-11-03 12:15 | 2016-11-03 13:30 | 12 | 0d |
| 14 | 1.13 | Montar piñones laterales faltantes | 3h | 2016-11-03 13:30 | 2016-11-03 16:30 | 13 | 0d |
| 15 | 1.14 | Montar tapas laterales y torquear pernos de fijación | 3h | 2016-11-03 16:30 | 2016-11-04 10:15 | 14 | 0d |
| 16 | 1.15 | Montar eje de entrada y torquear pernos de fijación | 2h | 2016-11-04 10:15 | 2016-11-04 12:15 | 15 | 0d |
| 17 | 1.16 | Controlar juego axial de piñones | 1h | 2016-11-04 12:15 | 2016-11-04 14:00 | 16 | 0d |
| 18 | 1.17 | Montar sellos en tapas laterales | 1h | 2016-11-04 14:00 | 2016-11-04 15:00 | 17 | 0d |
| 19 | 1.18 | Posicionar carcasa en forma vertical | 30min | 2016-11-04 15:00 | 2016-11-04 15:30 | 18 | 0d |
| 20 | 1.19 | Montar sistema de cañerías y tapones | 5h | 2016-11-04 15:30 | 2016-11-07 11:15 | 19 | 0d |
| 21 | 1.20 | Montar tapas registro, tapones y visores de aceite | 3h | 2016-11-07 11:15 | 2016-11-07 15:00 | 20 | 0d |
| 22 | 1.21 | Revisar y terminar detalles finales | 3h | 2016-11-07 15:00 | 2016-11-08 08:45 | 21 | 0d |
| 23 | 2 | **Prueba** | 1.62d | 2016-11-08 08:45 | 2016-11-09 14:00 |  | 0d |
| 24 | 2.1 | Preparar equipo y acacesorios para prueba | 4h | 2016-11-08 08:45 | 2016-11-08 13:30 | 22 | 0d |
| 25 | 2.2 | Aportar lubricante | 2h | 2016-11-08 13:30 | 2016-11-08 15:30 | 24 | 0d |
| 26 | 2.3 | Realizar prueba y tomar controles de T° y RPM | 5h | 2016-11-08 15:30 | 2016-11-09 11:15 | 25 | 0d |
| 27 | 2.4 | Drenar lubricante | 2h | 2016-11-09 11:15 | 2016-11-09 14:00 | 26 | 0d |

| ID | WBS | Task | Duration | Start | Finish | Predecessors | Total slack |
| --- | --- | --- | --- | --- | --- | --- | --- |
| 28 | 3 | **Informe** | 1d | 2016-11-09 14:00 | 2016-11-10 13:30 |  | 0d |
| 29 | 3.1 | Emitir informe final | 8h | 2016-11-09 14:00 | 2016-11-10 13:30 | 27 | 0d |
| 30 | 4 | **Pintado y embalaje** | 0.56d | 2016-11-10 13:30 | 2016-11-11 08:45 |  | 0d |
| 31 | 4.1 | Pintado y secado de equipo | 2h | 2016-11-10 13:30 | 2016-11-10 15:30 | 29 | 0d |
| 32 | 4.2 | Montar equipo en atril | 1h | 2016-11-10 15:30 | 2016-11-10 16:30 | 31 | 0d |
| 33 | 4.3 | Plastificar | 1h | 2016-11-10 16:30 | 2016-11-11 08:15 | 32 | 0d |
| 34 | 4.4 | Sacar fotografías de despacho | 0.5h | 2016-11-11 08:15 | 2016-11-11 08:45 | 33 | 0d |
