# Caja PTO GFC 395 W1001 Evaluacion

Schedule from MS Project, 2016-10-27 to 2016-11-08.

## Calendars

- MD - 2015/2016: Mon-Fri 07:45-12:30, 13:15-17:00; Sat-Sun off. Exceptions (off unless hours are given): 2015-05-01 to 2024-05-01 (Día del trabajo, recurring), 2015-05-21 to 2024-05-21 (Glorias Navales, recurring), 2015-06-27 to 2024-06-27 (San Pedro y San Pablo, recurring), 2015-07-16 to 2024-07-16 (Solemnidad de la virgen del Carmen, recurring), 2015-08-15 to 2024-08-15 (Asuncion de la Virgen, recurring), 2015-09-18 to 2024-09-18 (Fiestas Patrias, recurring), 2015-09-19 to 2024-09-19 (Glorias Del Ejercito, recurring), 2015-10-12 to 2024-10-12 (Día de Descubrimiento de 2 Mundos, recurring), 2015-10-31 to 2024-10-31 (Día de las Iglesias Evangelicas y Protestantes, recurring), 2015-11-01 to 2024-11-01 (Día de Todos Los Santos, recurring), 2015-12-08 to 2024-12-08 (Día de la inmaculada Concepción, recurring), 2015-12-25 to 2024-12-25 (Navidad, recurring), 2016-01-01 to 2025-01-01 (Año Nuevo, recurring).

## Schedule

| ID | WBS | Task | Duration | Start | Finish | Predecessors | Total slack |
| --- | --- | --- | --- | --- | --- | --- | --- |
| 1 | 1 | **Limpieza** | 0.75d | 2016-10-27 07:45 | 2016-10-27 14:30 |  | 0d |
| 2 | 1.1 | Limpieza exterior de componente | 4h | 2016-10-27 07:45 | 2016-10-27 11:45 |  | 0d |
| 3 | 1.2 | Drenaje de aceite | 2h | 2016-10-27 11:45 | 2016-10-27 14:30 | 2 | 0d |
| 4 | 2 | **Desarme** | 2.88d | 2016-10-27 14:30 | 2016-11-03 11:15 |  | 0d |
| 5 | 2.1 | Preparar htas para desarme | 1h | 2016-10-27 14:30 | 2016-10-27 15:30 | 3 | 0d |
| 6 | 2.2 | Posicionar verticalmente componente | 1h | 2016-10-27 15:30 | 2016-10-27 16:30 | 5 | 0d |
| 7 | 2.3 | Desmontar sistema de cañerías | 2h | 2016-10-27 16:30 | 2016-10-28 09:15 | 6 | 0d |
| 8 | 2.4 | Posicionar Horizontalmente componente | 30min | 2016-10-28 09:15 | 2016-10-28 09:45 | 7 | 0d |
| 9 | 2.5 | Extraer pernos de fijación y tapas porta rodamientos Axiales | 2h | 2016-10-28 09:45 | 2016-10-28 11:45 | 8 | 0d |
| 10 | 2.6 | Desmontar piñones laterales | 1h | 2016-10-28 11:45 | 2016-10-28 13:30 | 9 | 0d |
| 11 | 2.7 | Invertir posición de cuerpo | 1h | 2016-10-28 13:30 | 2016-10-28 14:30 | 10 | 0d |
| 12 | 2.8 | Soltar pernos y desmontar eje de entrada | 1h | 2016-10-28 14:30 | 2016-10-28 15:30 | 11 | 0d |
| 13 | 2.9 | Soltar pernos de fijación y desmontar tapas laterales faltantes | 2h | 2016-10-28 15:30 | 2016-11-02 08:15 | 12 | 0d |
| 14 | 2.10 | Desmontar piñones laterales faltantes | 1h | 2016-11-02 08:15 | 2016-11-02 09:15 | 13 | 0d |
| 15 | 2.11 | Desmontar rodamientos desde piñones | 1h | 2016-11-02 09:15 | 2016-11-02 10:15 | 14 | 0d |
| 16 | 2.12 | Desmontar rodamientos desde caja | 1h | 2016-11-02 10:15 | 2016-11-02 11:15 | 15 | 0d |
| 17 | 2.13 | Desmontar sellos de tapas | 30min | 2016-11-02 11:15 | 2016-11-02 11:45 | 16 | 0d |
| 18 | 2.14 | Desmontar tapa axial de fijación de eje de entrada | 1h | 2016-11-02 11:45 | 2016-11-02 13:30 | 17 | 0d |
| 19 | 2.15 | Desmontar piñón central desde eje | 1h | 2016-11-02 13:30 | 2016-11-02 14:30 | 18 | 0d |
| 20 | 2.16 | Desmontar rodamiento y porta sellos de eje de entrada | 1h | 2016-11-02 14:30 | 2016-11-02 15:30 | 19 | 0d |
| 21 | 2.17 | Preparar carcasa para arenado | 5h | 2016-11-02 15:30 | 2016-11-03 11:15 | 20 | 0d |
| 22 | 3 | **Evaluación** | 1.38d | 2016-11-03 11:15 | 2016-11-04 14:30 |  | 0d |
| 23 | 3.1 | Lavar componentes para evaluación | 3h | 2016-11-03 11:15 | 2016-11-03 15:00 | 21 | 0d |
| 24 | 3.2 | Realizar END | 4h | 2016-11-03 15:00 | 2016-11-04 09:45 | 23 | 0d |
| 25 | 3.3 | Realizar control dimensional en pistas de rodamientos de piñones | 1h | 2016-11-04 09:45 | 2016-11-04 10:45 | 24 | 0d |
| 26 | 3.4 | Realizar control dimensional en tapas | 1h | 2016-11-04 10:45 | 2016-11-04 11:45 | 25 | 0d |
| 27 | 3.5 | Realizar control dimensional a carcasa | 2h | 2016-11-04 11:45 | 2016-11-04 14:30 | 26 | 0d |

| ID | WBS | Task | Duration | Start | Finish | Predecessors | Total slack |
| --- | --- | --- | --- | --- | --- | --- | --- |
| 28 | 4 | **Informe y preservación** | 1.75d | 2016-11-04 14:30 | 2016-11-08 10:45 |  | 0d |
| 29 | 4.1 | Llenar detalle de reparación | 1h | 2016-11-04 14:30 | 2016-11-04 15:30 | 27 | 0d |
| 30 | 4.2 | Emitir informar de evaluación | 8h | 2016-11-04 15:30 | 2016-11-07 15:00 | 29 | 0d |
| 31 | 4.3 | Preservación y almacenaje del equipo | 5h | 2016-11-07 15:00 | 2016-11-08 10:45 | 30 | 0d |
