# Evaluacion y Armado GFT 260 OT 25936

Schedule from MS Project, 2016-06-13 to 2016-10-13.

## Calendars

- MD - 2015/2016: Mon-Fri 07:45-12:30, 13:15-17:00; Sat-Sun off. Exceptions (off unless hours are given): 2015-05-01 to 2024-05-01 (Día del trabajo, recurring), 2015-05-21 to 2024-05-21 (Glorias Navales, recurring), 2015-06-27 to 2024-06-27 (San Pedro y San Pablo, recurring), 2015-07-16 to 2024-07-16 (Solemnidad de la virgen del Carmen, recurring), 2015-08-15 to 2024-08-15 (Asuncion de la Virgen, recurring), 2015-09-18 to 2024-09-18 (Fiestas Patrias, recurring), 2015-09-19 to 2024-09-19 (Glorias Del Ejercito, recurring), 2015-10-12 to 2024-10-12 (Día de Descubrimiento de 2 Mundos, recurring), 2015-10-31 to 2024-10-31 (Día de las Iglesias Evangelicas y Protestantes, recurring), 2015-11-01 to 2024-11-01 (Día de Todos Los Santos, recurring), 2015-12-08 to 2024-12-08 (Día de la inmaculada Concepción, recurring), 2015-12-25 to 2024-12-25 (Navidad, recurring), 2016-01-01 to 2025-01-01 (Año Nuevo, recurring).

## Schedule

| ID | WBS | Task | Duration | Start | Finish | Predecessors | Total slack | Free slack |
| --- | --- | --- | --- | --- | --- | --- | --- | --- |
| 1 | 1 | **Evaluacion** | 8.44d | 2016-06-13 07:45 | 2016-06-22 16:30 |  | 80.94d |  |
| 2 | 1.1 | **Desarme del conjunto** | 2d | 2016-06-13 07:45 | 2016-06-14 16:00 |  | 80.94d |  |
| 3 | 1.1.1 | Limpieza exterior del componente | 2h | 2016-06-13 07:45 | 2016-06-13 09:45 |  | 80.94d | 0d |
| 4 | 1.1.2 | Drenar el lubricante desde la caja de engranajes. | 30min | 2016-06-13 09:45 | 2016-06-13 10:15 | 3 | 80.94d | 0d |
| 5 | 1.1.3 | desmontar tapa frontal | 30min | 2016-06-13 10:15 | 2016-06-13 10:45 | 4 | 80.94d | 0d |
| 6 | 1.1.4 | desmontar etapa planetaria de primera reducción | 30min | 2016-06-13 10:45 | 2016-06-13 11:15 | 5 | 80.94d | 0d |
| 7 | 1.1.5 | desmontar etapa planetaria de segunda reducción | 30min | 2016-06-13 11:15 | 2016-06-13 11:45 | 6 | 80.94d | 0d |
| 8 | 1.1.6 | desmontar etapa planetaria de salida | 30min | 2016-06-13 11:45 | 2016-06-13 12:15 | 7 | 80.94d | 0d |
| 9 | 1.1.7 | desmontar eje solar de salida | 30min | 2016-06-13 12:15 | 2016-06-13 13:30 | 8 | 80.94d | 0d |
| 10 | 1.1.8 | desmontar cuerpo dentado | 30min | 2016-06-13 13:30 | 2016-06-13 14:00 | 9 | 80.94d | 0d |
| 11 | 1.1.9 | desmontaje de tuerca de ajuste axial(cortar) | 4h | 2016-06-13 14:00 | 2016-06-14 08:45 | 10 | 80.94d | 0d |
| 12 | 1.1.10 | desmontar eje central | 30min | 2016-06-14 08:45 | 2016-06-14 09:15 | 11 | 80.94d | 0d |
| 13 | 1.1.11 | desmontar disco porta sproket | 1.5h | 2016-06-14 09:15 | 2016-06-14 10:45 | 12 | 80.94d | 0d |
| 14 | 1.1.12 | desmontar sistema freno multidiscos | 1h | 2016-06-14 10:45 | 2016-06-14 11:45 | 13 | 80.94d | 0d |
| 15 | 1.1.13 | desmontar eje central | 1h | 2016-06-14 11:45 | 2016-06-14 13:30 | 14 | 80.94d | 0d |
| 16 | 1.1.14 | desmontar disco y cuerpo porta cubeta de salida | 30min | 2016-06-14 13:30 | 2016-06-14 14:00 | 15 | 80.94d | 0d |
| 17 | 1.1.15 | lavar elementos para su evaluacion | 2h | 2016-06-14 14:00 | 2016-06-14 16:00 | 16 | 80.94d | 0d |
| 18 | 1.2 | **Etapa planetaria de primera reducción** | 0.31d | 2016-06-14 16:00 | 2016-06-15 09:15 |  | 80.94d |  |
| 19 | 1.2.1 | Desmontar seguros axiales | 30min | 2016-06-14 16:00 | 2016-06-14 16:30 | 17 | 80.94d | 0d |
| 20 | 1.2.2 | desmontar piñones satélites | 1h | 2016-06-14 16:30 | 2016-06-15 08:15 | 19 | 80.94d | 0d |
| 21 | 1.2.3 | Desmontar rodamientos | 30min | 2016-06-15 08:15 | 2016-06-15 08:45 | 20 | 80.94d | 0d |
| 22 | 1.2.4 | desmontar eje solar | 30min | 2016-06-15 08:45 | 2016-06-15 09:15 | 21 | 80.94d | 0d |
| 23 | 1.3 | **Etapa planetaria de segunda reducción** | 0.31d | 2016-06-15 09:15 | 2016-06-15 11:45 |  | 80.94d |  |
| 24 | 1.3.1 | Desmontar seguros axiales | 30min | 2016-06-15 09:15 | 2016-06-15 09:45 | 22 | 80.94d | 0d |
| 25 | 1.3.2 | desmontar piñones satélites | 1h | 2016-06-15 09:45 | 2016-06-15 10:45 | 24 | 80.94d | 0d |
| 26 | 1.3.3 | Desmontar rodamientos | 30min | 2016-06-15 10:45 | 2016-06-15 11:15 | 25 | 80.94d | 0d |
| 27 | 1.3.4 | desmontar eje solar | 30min | 2016-06-15 11:15 | 2016-06-15 11:45 | 26 | 80.94d | 0d |

| ID | WBS | Task | Type | Duration | Start | Finish | Predecessors | Total slack | Free slack | Constraint |
| --- | --- | --- | --- | --- | --- | --- | --- | --- | --- | --- |
| 28 | 1.4 | **Etapa planetaria de salida** |  | 0.25d | 2016-06-15 11:45 | 2016-06-15 14:30 |  | 80.94d |  |  |
| 29 | 1.4.1 | Desmontar seguros axiales |  | 30min | 2016-06-15 11:45 | 2016-06-15 12:15 | 27 | 80.94d | 0d |  |
| 30 | 1.4.2 | Desmontar rodamientos |  | 30min | 2016-06-15 12:15 | 2016-06-15 13:30 | 29 | 80.94d | 0d |  |
| 31 | 1.4.3 | desmontar piñones satélites |  | 1h | 2016-06-15 13:30 | 2016-06-15 14:30 | 30 | 80.94d | 0d |  |
| 32 | 1.5 | **eje central** |  | 0.19d | 2016-06-15 14:30 | 2016-06-15 16:00 |  | 80.94d |  |  |
| 33 | 1.5.1 | Desmontar rodamientos |  | 1h | 2016-06-15 14:30 | 2016-06-15 15:30 | 31 | 80.94d | 0d |  |
| 34 | 1.5.2 | Desmontar sellos |  | 30min | 2016-06-15 15:30 | 2016-06-15 16:00 | 33 | 80.94d | 0d |  |
| 35 | 1.6 | **Eje de entrada** |  | 0.12d | 2016-06-15 16:00 | 2016-06-15 17:00 |  | 80.94d |  |  |
| 36 | 1.6.1 | desacoplar eje decubierta frontal |  | 30min | 2016-06-15 16:00 | 2016-06-15 16:30 | 34 | 80.94d | 0d |  |
| 37 | 1.6.2 | desmontar solar de entrada |  | 30min | 2016-06-15 16:30 | 2016-06-15 17:00 | 36 | 80.94d | 0d |  |
| 38 | 1.7 | **Sistema de frenos** |  | 0.25d | 2016-06-16 07:45 | 2016-06-16 09:45 |  | 80.94d |  |  |
| 39 | 1.7.1 | Desmontar pistón |  | 30min | 2016-06-16 07:45 | 2016-06-16 08:15 | 37 | 80.94d | 0d |  |
| 40 | 1.7.2 | desmontar resortes |  | 30min | 2016-06-16 08:15 | 2016-06-16 08:45 | 39 | 80.94d | 0d |  |
| 41 | 1.7.3 | desmontar discos |  | 30min | 2016-06-16 08:45 | 2016-06-16 09:15 | 40 | 80.94d | 0d |  |
| 42 | 1.7.4 | desmontar sellos |  | 30min | 2016-06-16 09:15 | 2016-06-16 09:45 | 41 | 80.94d | 0d |  |
| 43 | 1.8 | **Conjunto** |  | 2.5d | 2016-06-16 09:45 | 2016-06-20 13:30 |  | 80.94d |  |  |
| 44 | 1.8.1 | preparar componentes para evaluacion |  | 2h | 2016-06-16 09:45 | 2016-06-16 11:45 | 42 | 80.94d | 0d |  |
| 45 | 1.8.2 | Realizar control dimensional |  | 4h | 2016-06-16 11:45 | 2016-06-16 16:30 | 44 | 80.94d | 0d |  |
| 46 | 1.8.3 | Realizar END |  | 6h | 2016-06-16 16:30 | 2016-06-17 14:00 | 45 | 80.94d | 0d |  |
| 47 | 1.8.4 | Realizar evaluación |  | 8h | 2016-06-17 14:00 | 2016-06-20 13:30 | 46 | 80.94d | 0d |  |
| 48 | 1.9 | Informe Técnico |  | 4h | 2016-06-20 13:30 | 2016-06-21 08:15 | 47 | 80.94d | 0d |  |
| 49 | 1.10 | Presupuesto |  | 2d | 2016-06-21 08:15 | 2016-06-22 16:30 | 48 | 80.94d |  |  |
| 50 | 2 | Aceptacion | milestone | 0d | 2016-07-21 07:45 | 2016-07-21 07:45 |  | 0d |  | start no earlier than 2016-07-21 07:45 |
| 51 | 3 | Compra de Repuestos |  | 53d | 2016-07-21 07:45 | 2016-09-30 16:00 | 50 | 0d |  |  |

| ID | WBS | Task | Duration | Start | Finish | Predecessors | Total slack |
| --- | --- | --- | --- | --- | --- | --- | --- |
| 52 | 4 | **Etapa de armado** | 7.69d | 2016-09-30 16:00 | 2016-10-13 08:45 |  | 0d |
| 53 | 4.1 | lavar ,controlar componentes | 16h | 2016-09-30 16:00 | 2016-10-04 15:00 | 50, 51 | 0d |
| 54 | 4.2 | **Etapa planetaria de primera reducción** | 0.19d | 2016-10-04 15:00 | 2016-10-04 16:30 |  | 0d |
| 55 | 4.2.1 | Montar rodamientos en piñones | 30min | 2016-10-04 15:00 | 2016-10-04 15:30 | 53 | 0d |
| 56 | 4.2.2 | montar y fijar piñones en porta satélite | 30min | 2016-10-04 15:30 | 2016-10-04 16:00 | 55 | 0d |
| 57 | 4.2.3 | montar eje solar | 30min | 2016-10-04 16:00 | 2016-10-04 16:30 | 56 | 0d |
| 58 | 4.3 | **Etapa planetaria de segunda reducción** | 0.19d | 2016-10-04 16:30 | 2016-10-05 08:45 |  | 0d |
| 59 | 4.3.1 | Montar rodamientos en piñones | 30min | 2016-10-04 16:30 | 2016-10-04 17:00 | 57 | 0d |
| 60 | 4.3.2 | montar y fijar piñones en porta satélite | 30min | 2016-10-05 07:45 | 2016-10-05 08:15 | 59 | 0d |
| 61 | 4.3.3 | montar eje solar | 30min | 2016-10-05 08:15 | 2016-10-05 08:45 | 60 | 0d |
| 62 | 4.4 | **Etapa planetaria de salida** | 0.25d | 2016-10-05 08:45 | 2016-10-05 10:45 |  | 0d |
| 63 | 4.4.1 | Montar rodamientos en piñones | 1h | 2016-10-05 08:45 | 2016-10-05 09:45 | 61 | 0d |
| 64 | 4.4.2 | montar y fijar piñones en porta satélite | 1h | 2016-10-05 09:45 | 2016-10-05 10:45 | 63 | 0d |
| 65 | 4.5 | **eje central** | 1.31d | 2016-10-05 10:45 | 2016-10-06 13:30 |  | 0d |
| 66 | 4.5.1 | montar disco | 1h | 2016-10-05 10:45 | 2016-10-05 11:45 | 64 | 0d |
| 67 | 4.5.2 | montar sellos | 1h | 2016-10-05 11:45 | 2016-10-05 13:30 | 66 | 0d |
| 68 | 4.5.3 | montar rodamientos cónicos | 1h | 2016-10-05 13:30 | 2016-10-05 14:30 | 67 | 0d |
| 69 | 4.5.4 | montar cuerpo porta rodamientos | 1h | 2016-10-05 14:30 | 2016-10-05 15:30 | 68 | 0d |
| 70 | 4.5.5 | montar y torquear tuerca axial | 6h | 2016-10-05 15:30 | 2016-10-06 12:15 | 69 | 0d |
| 71 | 4.5.6 | realizar pruena deestanqueidad | 30min | 2016-10-06 12:15 | 2016-10-06 13:30 | 70 | 0d |
| 72 | 4.6 | **Conjunto** | 0.94d | 2016-10-06 13:30 | 2016-10-07 11:45 |  | 0d |
| 73 | 4.6.1 | montar anillo | 1.5h | 2016-10-06 13:30 | 2016-10-06 15:00 | 71 | 0d |
| 74 | 4.6.2 | montar cuerpo dentado | 1h | 2016-10-06 15:00 | 2016-10-06 16:00 | 73 | 0d |
| 75 | 4.6.3 | ensamblar líneas planetarias | 1h | 2016-10-06 16:00 | 2016-10-06 17:00 | 74 | 0d |
| 76 | 4.6.4 | montar eje de entrada | 1h | 2016-10-07 07:45 | 2016-10-07 08:45 | 75 | 0d |
| 77 | 4.6.5 | montar tapa frontal | 1h | 2016-10-07 08:45 | 2016-10-07 09:45 | 76 | 0d |
| 78 | 4.6.6 | torquear pernos de amarre | 2h | 2016-10-07 09:45 | 2016-10-07 11:45 | 77 | 0d |

| ID | WBS | Task | Duration | Start | Finish | Predecessors | Total slack |
| --- | --- | --- | --- | --- | --- | --- | --- |
| 79 | 4.7 | **Sistema de frenos** | 0.44d | 2016-10-07 11:45 | 2016-10-07 16:00 |  | 0d |
| 80 | 4.7.1 | montar discos de freno | 30min | 2016-10-07 11:45 | 2016-10-07 12:15 | 78 | 0d |
| 81 | 4.7.2 | montar pistón | 30min | 2016-10-07 12:15 | 2016-10-07 13:30 | 80 | 0d |
| 82 | 4.7.3 | Montar resortes | 30min | 2016-10-07 13:30 | 2016-10-07 14:00 | 81 | 0d |
| 83 | 4.7.4 | montar sellos | 30min | 2016-10-07 14:00 | 2016-10-07 14:30 | 82 | 0d |
| 84 | 4.7.5 | montar sistema de freno en reductor | 30min | 2016-10-07 14:30 | 2016-10-07 15:00 | 83 | 0d |
| 85 | 4.7.6 | realizar prueba de presión al sistema de frenos | 1h | 2016-10-07 15:00 | 2016-10-07 16:00 | 84 | 0d |
| 86 | 4.8 | **Etapa de prueba** | 1.88d | 2016-10-07 16:00 | 2016-10-11 14:00 |  | 0d |
| 87 | 4.8.1 | Posicionar el componente | 3h | 2016-10-07 16:00 | 2016-10-10 09:45 | 85 | 0d |
| 88 | 4.8.2 | Preparar dispositivos de prueba | 3h | 2016-10-10 09:45 | 2016-10-10 13:30 | 87 | 0d |
| 89 | 4.8.3 | Montar elementos de prueba | 1h | 2016-10-10 13:30 | 2016-10-10 14:30 | 88 | 0d |
| 90 | 4.8.4 | Aporta lubricante | 1h | 2016-10-10 14:30 | 2016-10-10 15:30 | 89 | 0d |
| 91 | 4.8.5 | Realizar prueba | 3h | 2016-10-10 15:30 | 2016-10-11 09:15 | 90 | 0d |
| 92 | 4.8.6 | Drenar lubricante de prueba | 1h | 2016-10-11 09:15 | 2016-10-11 10:15 | 91 | 0d |
| 93 | 4.8.7 | Desmontar elementos de prueba | 3h | 2016-10-11 10:15 | 2016-10-11 14:00 | 92 | 0d |
| 94 | 4.9 | **Despacho** | 0.5d | 2016-10-11 14:00 | 2016-10-13 08:45 |  | 0d |
| 95 | 4.9.1 | Pintar ,embalar componente para despacho | 4h | 2016-10-11 14:00 | 2016-10-13 08:45 | 93 | 0d |
