# eVALUACION Y ARMADO GFT 260

Schedule from MS Project, 2016-10-20 to 2016-11-02.

## Calendars

- MD - 2015/2016: Mon-Fri 07:45-12:30, 13:15-17:00; Sat-Sun off. Exceptions (off unless hours are given): 2015-05-01 to 2024-05-01 (Día del trabajo, recurring), 2015-05-21 to 2024-05-21 (Glorias Navales, recurring), 2015-06-27 to 2024-06-27 (San Pedro y San Pablo, recurring), 2015-07-16 to 2024-07-16 (Solemnidad de la virgen del Carmen, recurring), 2015-08-15 to 2024-08-15 (Asuncion de la Virgen, recurring), 2015-09-18 to 2024-09-18 (Fiestas Patrias, recurring), 2015-09-19 to 2024-09-19 (Glorias Del Ejercito, recurring), 2015-10-12 to 2024-10-12 (Día de Descubrimiento de 2 Mundos, recurring), 2015-10-31 to 2024-10-31 (Día de las Iglesias Evangelicas y Protestantes, recurring), 2015-11-01 to 2024-11-01 (Día de Todos Los Santos, recurring), 2015-12-08 to 2024-12-08 (Día de la inmaculada Concepción, recurring), 2015-12-25 to 2024-12-25 (Navidad, recurring), 2016-01-01 to 2025-01-01 (Año Nuevo, recurring).

## Schedule

| ID | WBS | Task | Duration | Start | Finish | Predecessors | Total slack |
| --- | --- | --- | --- | --- | --- | --- | --- |
| 1 | 1 | **Evaluacion** | 8.44d | 2016-10-20 07:45 | 2016-11-02 16:30 |  | 0d |
| 2 | 1.1 | **Desarme del conjunto** | 2d | 2016-10-20 07:45 | 2016-10-21 16:00 |  | 0d |
| 3 | 1.1.1 | Limpieza exterior del componente | 2h | 2016-10-20 07:45 | 2016-10-20 09:45 |  | 0d |
| 4 | 1.1.2 | Drenar el lubricante desde la caja de engranajes. | 30min | 2016-10-20 09:45 | 2016-10-20 10:15 | 3 | 0d |
| 5 | 1.1.3 | desmontar tapa frontal | 30min | 2016-10-20 10:15 | 2016-10-20 10:45 | 4 | 0d |
| 6 | 1.1.4 | desmontar etapa planetaria de primera reducción | 30min | 2016-10-20 10:45 | 2016-10-20 11:15 | 5 | 0d |
| 7 | 1.1.5 | desmontar etapa planetaria de segunda reducción | 30min | 2016-10-20 11:15 | 2016-10-20 11:45 | 6 | 0d |
| 8 | 1.1.6 | desmontar etapa planetaria de salida | 30min | 2016-10-20 11:45 | 2016-10-20 12:15 | 7 | 0d |
| 9 | 1.1.7 | desmontar eje solar de salida | 30min | 2016-10-20 12:15 | 2016-10-20 13:30 | 8 | 0d |
| 10 | 1.1.8 | desmontar cuerpo dentado | 30min | 2016-10-20 13:30 | 2016-10-20 14:00 | 9 | 0d |
| 11 | 1.1.9 | desmontaje de tuerca de ajuste axial(cortar) | 4h | 2016-10-20 14:00 | 2016-10-21 08:45 | 10 | 0d |
| 12 | 1.1.10 | desmontar eje central | 30min | 2016-10-21 08:45 | 2016-10-21 09:15 | 11 | 0d |
| 13 | 1.1.11 | desmontar disco porta sproket | 1.5h | 2016-10-21 09:15 | 2016-10-21 10:45 | 12 | 0d |
| 14 | 1.1.12 | desmontar sistema freno multidiscos | 1h | 2016-10-21 10:45 | 2016-10-21 11:45 | 13 | 0d |
| 15 | 1.1.13 | desmontar eje central | 1h | 2016-10-21 11:45 | 2016-10-21 13:30 | 14 | 0d |
| 16 | 1.1.14 | desmontar disco y cuerpo porta cubeta de salida | 30min | 2016-10-21 13:30 | 2016-10-21 14:00 | 15 | 0d |
| 17 | 1.1.15 | lavar elementos para su evaluacion | 2h | 2016-10-21 14:00 | 2016-10-21 16:00 | 16 | 0d |
| 18 | 1.2 | **Etapa planetaria de primera reducción** | 0.31d | 2016-10-21 16:00 | 2016-10-24 09:15 |  | 0d |
| 19 | 1.2.1 | Desmontar seguros axiales | 30min | 2016-10-21 16:00 | 2016-10-21 16:30 | 17 | 0d |
| 20 | 1.2.2 | desmontar piñones satélites | 1h | 2016-10-21 16:30 | 2016-10-24 08:15 | 19 | 0d |
| 21 | 1.2.3 | Desmontar rodamientos | 30min | 2016-10-24 08:15 | 2016-10-24 08:45 | 20 | 0d |
| 22 | 1.2.4 | desmontar eje solar | 30min | 2016-10-24 08:45 | 2016-10-24 09:15 | 21 | 0d |
| 23 | 1.3 | **Etapa planetaria de segunda reducción** | 0.31d | 2016-10-24 09:15 | 2016-10-24 11:45 |  | 0d |
| 24 | 1.3.1 | Desmontar seguros axiales | 30min | 2016-10-24 09:15 | 2016-10-24 09:45 | 22 | 0d |
| 25 | 1.3.2 | desmontar piñones satélites | 1h | 2016-10-24 09:45 | 2016-10-24 10:45 | 24 | 0d |
| 26 | 1.3.3 | Desmontar rodamientos | 30min | 2016-10-24 10:45 | 2016-10-24 11:15 | 25 | 0d |
| 27 | 1.3.4 | desmontar eje solar | 30min | 2016-10-24 11:15 | 2016-10-24 11:45 | 26 | 0d |

| ID | WBS | Task | Type | Duration | Start | Finish | Predecessors | Total slack | Free slack |
| --- | --- | --- | --- | --- | --- | --- | --- | --- | --- |
| 28 | 1.4 | **Etapa planetaria de salida** |  | 0.25d | 2016-10-24 11:45 | 2016-10-24 14:30 |  | 0d |  |
| 29 | 1.4.1 | Desmontar seguros axiales |  | 30min | 2016-10-24 11:45 | 2016-10-24 12:15 | 27 | 0d |  |
| 30 | 1.4.2 | Desmontar rodamientos |  | 30min | 2016-10-24 12:15 | 2016-10-24 13:30 | 29 | 0d |  |
| 31 | 1.4.3 | desmontar piñones satélites |  | 1h | 2016-10-24 13:30 | 2016-10-24 14:30 | 30 | 0d |  |
| 32 | 1.5 | **eje central** |  | 0.19d | 2016-10-24 14:30 | 2016-10-24 16:00 |  | 0d |  |
| 33 | 1.5.1 | Desmontar rodamientos |  | 1h | 2016-10-24 14:30 | 2016-10-24 15:30 | 31 | 0d |  |
| 34 | 1.5.2 | Desmontar sellos |  | 30min | 2016-10-24 15:30 | 2016-10-24 16:00 | 33 | 0d |  |
| 35 | 1.6 | **Eje de entrada** |  | 0.12d | 2016-10-24 16:00 | 2016-10-24 17:00 |  | 0d |  |
| 36 | 1.6.1 | desacoplar eje decubierta frontal |  | 30min | 2016-10-24 16:00 | 2016-10-24 16:30 | 34 | 0d |  |
| 37 | 1.6.2 | desmontar solar de entrada |  | 30min | 2016-10-24 16:30 | 2016-10-24 17:00 | 36 | 0d |  |
| 38 | 1.7 | **Sistema de frenos** |  | 0.25d | 2016-10-25 07:45 | 2016-10-25 09:45 |  | 0d |  |
| 39 | 1.7.1 | Desmontar pistón |  | 30min | 2016-10-25 07:45 | 2016-10-25 08:15 | 37 | 0d |  |
| 40 | 1.7.2 | desmontar resortes |  | 30min | 2016-10-25 08:15 | 2016-10-25 08:45 | 39 | 0d |  |
| 41 | 1.7.3 | desmontar discos |  | 30min | 2016-10-25 08:45 | 2016-10-25 09:15 | 40 | 0d |  |
| 42 | 1.7.4 | desmontar sellos |  | 30min | 2016-10-25 09:15 | 2016-10-25 09:45 | 41 | 0d |  |
| 43 | 1.8 | **Conjunto** |  | 2.5d | 2016-10-25 09:45 | 2016-10-27 13:30 |  | 0d |  |
| 44 | 1.8.1 | preparar componentes para evaluacion |  | 2h | 2016-10-25 09:45 | 2016-10-25 11:45 | 42 | 0d |  |
| 45 | 1.8.2 | Realizar control dimensional |  | 4h | 2016-10-25 11:45 | 2016-10-25 16:30 | 44 | 0d |  |
| 46 | 1.8.3 | Realizar END |  | 6h | 2016-10-25 16:30 | 2016-10-26 14:00 | 45 | 0d |  |
| 47 | 1.8.4 | Realizar evaluación |  | 8h | 2016-10-26 14:00 | 2016-10-27 13:30 | 46 | 0d |  |
| 48 | 1.9 | Informe Técnico |  | 4h | 2016-10-27 13:30 | 2016-10-28 08:15 | 47 | 0d |  |
| 49 | 1.10 | Presupuesto |  | 2d | 2016-10-28 08:15 | 2016-11-02 16:30 | 48 | 0d |  |
| 50 | 2 | Aceptacion | milestone | 0d | 2016-10-20 07:45 | 2016-10-20 07:45 |  | 0.75d | 0d |
| 51 | 3 | **Etapa de armado** |  | 7.69d | 2016-10-20 07:45 | 2016-11-02 09:45 |  | 0.75d |  |
| 52 | 3.1 | lavar ,controlar componentes |  | 16h | 2016-10-20 07:45 | 2016-10-21 16:00 | 50 | 0.75d | 0d |

| ID | WBS | Task | Duration | Start | Finish | Predecessors | Total slack | Free slack |
| --- | --- | --- | --- | --- | --- | --- | --- | --- |
| 53 | 3.2 | **Etapa planetaria de primera reducción** | 0.19d | 2016-10-21 16:00 | 2016-10-24 08:15 |  | 0.75d |  |
| 54 | 3.2.1 | Montar rodamientos en piñones | 30min | 2016-10-21 16:00 | 2016-10-21 16:30 | 52 | 0.75d | 0d |
| 55 | 3.2.2 | montar y fijar piñones en porta satélite | 30min | 2016-10-21 16:30 | 2016-10-21 17:00 | 54 | 0.75d | 0d |
| 56 | 3.2.3 | montar eje solar | 30min | 2016-10-24 07:45 | 2016-10-24 08:15 | 55 | 0.75d | 0d |
| 57 | 3.3 | **Etapa planetaria de segunda reducción** | 0.19d | 2016-10-24 08:15 | 2016-10-24 09:45 |  | 0.75d |  |
| 58 | 3.3.1 | Montar rodamientos en piñones | 30min | 2016-10-24 08:15 | 2016-10-24 08:45 | 56 | 0.75d | 0d |
| 59 | 3.3.2 | montar y fijar piñones en porta satélite | 30min | 2016-10-24 08:45 | 2016-10-24 09:15 | 58 | 0.75d | 0d |
| 60 | 3.3.3 | montar eje solar | 30min | 2016-10-24 09:15 | 2016-10-24 09:45 | 59 | 0.75d | 0d |
| 61 | 3.4 | **Etapa planetaria de salida** | 0.25d | 2016-10-24 09:45 | 2016-10-24 11:45 |  | 0.75d |  |
| 62 | 3.4.1 | Montar rodamientos en piñones | 1h | 2016-10-24 09:45 | 2016-10-24 10:45 | 60 | 0.75d | 0d |
| 63 | 3.4.2 | montar y fijar piñones en porta satélite | 1h | 2016-10-24 10:45 | 2016-10-24 11:45 | 62 | 0.75d | 0d |
| 64 | 3.5 | **eje central** | 1.31d | 2016-10-24 11:45 | 2016-10-25 14:30 |  | 0.75d |  |
| 65 | 3.5.1 | montar disco | 1h | 2016-10-24 11:45 | 2016-10-24 13:30 | 63 | 0.75d | 0d |
| 66 | 3.5.2 | montar sellos | 1h | 2016-10-24 13:30 | 2016-10-24 14:30 | 65 | 0.75d | 0d |
| 67 | 3.5.3 | montar rodamientos cónicos | 1h | 2016-10-24 14:30 | 2016-10-24 15:30 | 66 | 0.75d | 0d |
| 68 | 3.5.4 | montar cuerpo porta rodamientos | 1h | 2016-10-24 15:30 | 2016-10-24 16:30 | 67 | 0.75d | 0d |
| 69 | 3.5.5 | montar y torquear tuerca axial | 6h | 2016-10-24 16:30 | 2016-10-25 14:00 | 68 | 0.75d | 0d |
| 70 | 3.5.6 | realizar pruena deestanqueidad | 30min | 2016-10-25 14:00 | 2016-10-25 14:30 | 69 | 0.75d | 0d |
| 71 | 3.6 | **Conjunto** | 0.94d | 2016-10-25 14:30 | 2016-10-26 13:30 |  | 0.75d |  |
| 72 | 3.6.1 | montar anillo | 1.5h | 2016-10-25 14:30 | 2016-10-25 16:00 | 70 | 0.75d | 0d |
| 73 | 3.6.2 | montar cuerpo dentado | 1h | 2016-10-25 16:00 | 2016-10-25 17:00 | 72 | 0.75d | 0d |
| 74 | 3.6.3 | ensamblar líneas planetarias | 1h | 2016-10-26 07:45 | 2016-10-26 08:45 | 73 | 0.75d | 0d |
| 75 | 3.6.4 | montar eje de entrada | 1h | 2016-10-26 08:45 | 2016-10-26 09:45 | 74 | 0.75d | 0d |
| 76 | 3.6.5 | montar tapa frontal | 1h | 2016-10-26 09:45 | 2016-10-26 10:45 | 75 | 0.75d | 0d |
| 77 | 3.6.6 | torquear pernos de amarre | 2h | 2016-10-26 10:45 | 2016-10-26 13:30 | 76 | 0.75d | 0d |

| ID | WBS | Task | Duration | Start | Finish | Predecessors | Total slack | Free slack |
| --- | --- | --- | --- | --- | --- | --- | --- | --- |
| 78 | 3.7 | **Sistema de frenos** | 0.44d | 2016-10-26 13:30 | 2016-10-26 17:00 |  | 0.75d |  |
| 79 | 3.7.1 | montar discos de freno | 30min | 2016-10-26 13:30 | 2016-10-26 14:00 | 77 | 0.75d | 0d |
| 80 | 3.7.2 | montar pistón | 30min | 2016-10-26 14:00 | 2016-10-26 14:30 | 79 | 0.75d | 0d |
| 81 | 3.7.3 | Montar resortes | 30min | 2016-10-26 14:30 | 2016-10-26 15:00 | 80 | 0.75d | 0d |
| 82 | 3.7.4 | montar sellos | 30min | 2016-10-26 15:00 | 2016-10-26 15:30 | 81 | 0.75d | 0d |
| 83 | 3.7.5 | montar sistema de freno en reductor | 30min | 2016-10-26 15:30 | 2016-10-26 16:00 | 82 | 0.75d | 0d |
| 84 | 3.7.6 | realizar prueba de presión al sistema de frenos | 1h | 2016-10-26 16:00 | 2016-10-26 17:00 | 83 | 0.75d | 0d |
| 85 | 3.8 | **Etapa de prueba** | 1.88d | 2016-10-27 07:45 | 2016-10-28 15:00 |  | 0.75d |  |
| 86 | 3.8.1 | Posicionar el componente | 3h | 2016-10-27 07:45 | 2016-10-27 10:45 | 84 | 0.75d | 0d |
| 87 | 3.8.2 | Preparar dispositivos de prueba | 3h | 2016-10-27 10:45 | 2016-10-27 14:30 | 86 | 0.75d | 0d |
| 88 | 3.8.3 | Montar elementos de prueba | 1h | 2016-10-27 14:30 | 2016-10-27 15:30 | 87 | 0.75d | 0d |
| 89 | 3.8.4 | Aporta lubricante | 1h | 2016-10-27 15:30 | 2016-10-27 16:30 | 88 | 0.75d | 0d |
| 90 | 3.8.5 | Realizar prueba | 3h | 2016-10-27 16:30 | 2016-10-28 10:15 | 89 | 0.75d | 0d |
| 91 | 3.8.6 | Drenar lubricante de prueba | 1h | 2016-10-28 10:15 | 2016-10-28 11:15 | 90 | 0.75d | 0d |
| 92 | 3.8.7 | Desmontar elementos de prueba | 3h | 2016-10-28 11:15 | 2016-10-28 15:00 | 91 | 0.75d | 0d |
| 93 | 3.9 | **Despacho** | 0.5d | 2016-10-28 15:00 | 2016-11-02 09:45 |  | 0.75d |  |
| 94 | 3.9.1 | Pintar ,embalar componente para despacho | 4h | 2016-10-28 15:00 | 2016-11-02 09:45 | 92 | 0.75d |  |
