# CAJA PTO LETORNEAU CFL07 1850

Schedule from MS Project, 2016-11-07 to 2017-01-16.

## Calendars

- MD - 2015/2016: Mon-Fri 07:45-12:30, 13:15-17:00; Sat-Sun off. Exceptions (off unless hours are given): 2015-05-01 to 2024-05-01 (Día del trabajo, recurring), 2015-05-21 to 2024-05-21 (Glorias Navales, recurring), 2015-06-27 to 2024-06-27 (San Pedro y San Pablo, recurring), 2015-07-16 to 2024-07-16 (Solemnidad de la virgen del Carmen, recurring), 2015-08-15 to 2024-08-15 (Asuncion de la Virgen, recurring), 2015-09-18 to 2024-09-18 (Fiestas Patrias, recurring), 2015-09-19 to 2024-09-19 (Glorias Del Ejercito, recurring), 2015-10-12 to 2024-10-12 (Día de Descubrimiento de 2 Mundos, recurring), 2015-10-31 to 2024-10-31 (Día de las Iglesias Evangelicas y Protestantes, recurring), 2015-11-01 to 2024-11-01 (Día de Todos Los Santos, recurring), 2015-12-08 to 2024-12-08 (Día de la inmaculada Concepción, recurring), 2015-12-25 to 2024-12-25 (Navidad, recurring), 2016-01-01 to 2025-01-01 (Año Nuevo, recurring).

## Schedule

| ID | WBS | Task | Duration | Start | Finish | Predecessors | Total slack | Free slack | Constraint |
| --- | --- | --- | --- | --- | --- | --- | --- | --- | --- |
| 1 | 1 | Compra de Repuestos y Reparacion de Bombas | 10w | 2016-11-07 07:45 | 2017-01-12 08:15 |  | 0d |  |  |
| 2 | 2 | Limpieza y preparación de componentes | 12h | 2017-01-09 07:45 | 2017-01-10 11:15 |  | 1d | 0d | start no earlier than 2017-01-09 07:45 |
| 3 | 3 | **Eje de entrada** | 1.75d | 2017-01-10 11:15 | 2017-01-12 08:15 |  | 0d |  |  |
| 4 | 3.1 | Mecanizar Pista de reten 88 x 30mm | 1h | 2017-01-10 11:15 | 2017-01-10 12:15 | 2 | 1d | 0d |  |
| 5 | 3.2 | Metalizar Pista de Reten | 3h | 2017-01-10 12:15 | 2017-01-10 16:00 | 4 | 1d |  |  |
| 6 | 3.3 | Rectificado pista de Reten | 2h | 2017-01-11 15:30 | 2017-01-12 08:15 | 5, 1FF | 0d |  |  |
| 7 | 4 | Montaje de rodamientos en piñones | 3h | 2017-01-12 08:15 | 2017-01-12 11:15 | 2, 6, 1 | 0d |  |  |
| 8 | 5 | montaje de tapas de una cara axial | 1.5h | 2017-01-12 11:15 | 2017-01-12 13:30 | 7 | 0d |  |  |
| 9 | 6 | montaje de piñones en carcasa | 1h | 2017-01-12 13:30 | 2017-01-12 14:30 | 8 | 0d |  |  |
| 10 | 7 | volterar carcasa en posicion de piñones en vertical | 2h | 2017-01-12 14:30 | 2017-01-12 16:30 | 9 | 0d |  |  |
| 11 | 8 | montaje y ajuste de tapas (para juego axial) | 3h | 2017-01-12 16:30 | 2017-01-13 10:15 | 10 | 0d |  |  |
| 12 | 9 | voltear carcasa en posicion horizontal | 2h | 2017-01-13 10:15 | 2017-01-13 12:15 | 11 | 0d |  |  |
| 13 | 10 | Moltaje de sitema de lubricacion | 2h | 2017-01-13 12:15 | 2017-01-13 15:00 | 12 | 0d |  |  |
| 14 | 11 | montaje de eje de entrada y machon | 2h | 2017-01-13 15:00 | 2017-01-13 17:00 | 13 | 0d |  |  |
| 15 | 12 | montaje de tapa de registro y niveles de aceite | 3h | 2017-01-16 07:45 | 2017-01-16 10:45 | 14 | 0d |  |  |
| 16 | 13 | aplicación de pintura y terminaciones finales | 4h | 2017-01-16 10:45 | 2017-01-16 15:30 | 15 | 0d |  |  |
