# CAJA PTO LETORNEAU CFL07 1850

Schedule from MS Project, 2016-10-27 to 2016-11-02.

## Calendars

- MD - 2015/2016: Mon-Fri 07:45-12:30, 13:15-17:00; Sat-Sun off. Exceptions (off unless hours are given): 2015-05-01 to 2024-05-01 (Día del trabajo, recurring), 2015-05-21 to 2024-05-21 (Glorias Navales, recurring), 2015-06-27 to 2024-06-27 (San Pedro y San Pablo, recurring), 2015-07-16 to 2024-07-16 (Solemnidad de la virgen del Carmen, recurring), 2015-08-15 to 2024-08-15 (Asuncion de la Virgen, recurring), 2015-09-18 to 2024-09-18 (Fiestas Patrias, recurring), 2015-09-19 to 2024-09-19 (Glorias Del Ejercito, recurring), 2015-10-12 to 2024-10-12 (Día de Descubrimiento de 2 Mundos, recurring), 2015-10-31 to 2024-10-31 (Día de las Iglesias Evangelicas y Protestantes, recurring), 2015-11-01 to 2024-11-01 (Día de Todos Los Santos, recurring), 2015-12-08 to 2024-12-08 (Día de la inmaculada Concepción, recurring), 2015-12-25 to 2024-12-25 (Navidad, recurring), 2016-01-01 to 2025-01-01 (Año Nuevo, recurring).

## Schedule

| ID | Task | Duration | Start | Finish | Predecessors | Total slack |
| --- | --- | --- | --- | --- | --- | --- |
| 1 | posicionamiento y marcado con numeros de golpes (bomba, distanciador, tapa y carcasa) | 1h | 2016-10-27 07:45 | 2016-10-27 08:45 |  | 0d |
| 2 | desmotaje de bombas | 3h | 2016-10-27 08:45 | 2016-10-27 11:45 | 1 | 0d |
| 3 | desmontaje de tapas laterales y machon | 2.5h | 2016-10-27 11:45 | 2016-10-27 15:00 | 2 | 0d |
| 4 | desmontaje de sistema de lubricacion | 1h | 2016-10-27 15:00 | 2016-10-27 16:00 | 3 | 0d |
| 5 | desmontaje de rodamientos | 2.5h | 2016-10-27 16:00 | 2016-10-28 09:15 | 4 | 0d |
| 6 | control dimensinal (tapas, ejes y carcasa) | 2h | 2016-10-28 09:15 | 2016-10-28 11:15 | 5 | 0d |
| 7 | realizar control de partículas magnéticas fluorescentes vía húmeda a piñones y ejes | 4h | 2016-10-28 11:15 | 2016-10-28 16:00 | 6 | 0d |
| 8 | inspeccion visual a componentes | 1h | 2016-10-28 16:00 | 2016-10-28 17:00 | 7 | 0d |
| 9 | informe de reductor | 4h | 2016-11-02 07:45 | 2016-11-02 11:45 | 8 | 0d |
