# Block Cummins Qsk-60

Schedule from MS Project, 2016-08-04 to 2016-08-12.

## Calendars

- MD - 2015/2016: Mon-Fri 07:45-12:30, 13:15-17:00; Sat-Sun off. Exceptions (off unless hours are given): 2015-05-01 to 2024-05-01 (Día del trabajo, recurring), 2015-05-21 to 2024-05-21 (Glorias Navales, recurring), 2015-06-27 to 2024-06-27 (San Pedro y San Pablo, recurring), 2015-07-16 to 2024-07-16 (Solemnidad de la virgen del Carmen, recurring), 2015-08-15 to 2024-08-15 (Asuncion de la Virgen, recurring), 2015-09-18 to 2024-09-18 (Fiestas Patrias, recurring), 2015-09-19 to 2024-09-19 (Glorias Del Ejercito, recurring), 2015-10-12 to 2024-10-12 (Día de Descubrimiento de 2 Mundos, recurring), 2015-10-31 to 2024-10-31 (Día de las Iglesias Evangelicas y Protestantes, recurring), 2015-11-01 to 2024-11-01 (Día de Todos Los Santos, recurring), 2015-12-08 to 2024-12-08 (Día de la inmaculada Concepción, recurring), 2015-12-25 to 2024-12-25 (Navidad, recurring), 2016-01-01 to 2025-01-01 (Año Nuevo, recurring).

## Schedule

| ID | Task | Duration | Start | Finish | Predecessors | Total slack |
| --- | --- | --- | --- | --- | --- | --- |
| 1 | Extraer 04 tomas de levante y 32 guías de superficie plana. | 4h | 2016-08-04 07:45 | 2016-08-04 11:45 |  | 0d |
| 2 | Rectificar plano apoyo cabeza perno a 02 tapas de bancadas. Remarcar posición a tapas. | 3h | 2016-08-04 11:45 | 2016-08-04 15:30 | 1 | 0d |
| 3 | Instalar 01 camisa hilo perno culata en cilindro 7L. | 5h | 2016-08-04 15:30 | 2016-08-05 11:15 | 2 | 0d |
| 4 | Instalar inserto superior de cilindro 2L. | 2h | 2016-08-05 11:15 | 2016-08-05 14:00 | 3 | 0d |
| 5 | Montaje en Maquina | 1h | 2016-08-05 14:00 | 2016-08-05 15:00 | 4 | 0d |
| 6 | Rectificar superficie plana de ambos bancos dentro de medida 0.010". | 12h | 2016-08-05 15:00 | 2016-08-09 09:15 | 5 | 0d |
| 7 | Mecanizar cilindros a 0.010" (Calzo superior - Ajuste - Altura de pestaña). | 15h | 2016-08-09 09:15 | 2016-08-10 16:30 | 6 | 0d |
| 8 | Mecanizar e insertar calzo de oring 6L. | 6h | 2016-08-10 16:30 | 2016-08-11 14:00 | 7 | 0d |
| 9 | Desmontaje de Maquina | 1h | 2016-08-11 14:00 | 2016-08-11 15:00 | 8 | 0d |
| 10 | Pulido manual 15 calzos de o'ring | 2h | 2016-08-11 15:00 | 2016-08-11 17:00 | 9 | 0d |
| 11 | Marcar con lápiz eléctrico medidas en superficie plana de cada cilindro y marcar en costado apoyo carter "A1". | 2h | 2016-08-12 07:45 | 2016-08-12 09:45 | 10 | 0d |
| 12 | Controles finales. | 4h | 2016-08-12 09:45 | 2016-08-12 14:30 | 11 | 0d |
