# Flender B2SH12D Armado

Schedule from MS Project, 2016-08-04 to 2016-08-19.

## Calendars

- MD - 2015/2016: Mon-Fri 07:45-12:30, 13:15-17:00; Sat-Sun off. Exceptions (off unless hours are given): 2015-05-01 to 2024-05-01 (Día del trabajo, recurring), 2015-05-21 to 2024-05-21 (Glorias Navales, recurring), 2015-06-27 to 2024-06-27 (San Pedro y San Pablo, recurring), 2015-07-16 to 2024-07-16 (Solemnidad de la virgen del Carmen, recurring), 2015-08-15 to 2024-08-15 (Asuncion de la Virgen, recurring), 2015-09-18 to 2024-09-18 (Fiestas Patrias, recurring), 2015-09-19 to 2024-09-19 (Glorias Del Ejercito, recurring), 2015-10-12 to 2024-10-12 (Día de Descubrimiento de 2 Mundos, recurring), 2015-10-31 to 2024-10-31 (Día de las Iglesias Evangelicas y Protestantes, recurring), 2015-11-01 to 2024-11-01 (Día de Todos Los Santos, recurring), 2015-12-08 to 2024-12-08 (Día de la inmaculada Concepción, recurring), 2015-12-25 to 2024-12-25 (Navidad, recurring), 2016-01-01 to 2025-01-01 (Año Nuevo, recurring).

## Schedule

| ID | WBS | Task | Duration | Start | Finish | Predecessors | Total slack | Free slack | Constraint |
| --- | --- | --- | --- | --- | --- | --- | --- | --- | --- |
| 1 | 1 | Compra de Repuestos | 5d | 2016-08-05 07:45 | 2016-08-11 14:30 |  | 0d |  | start no earlier than 2016-08-05 07:45 |
| 2 | 2 | **Eje entrada** | 1.06d | 2016-08-04 07:45 | 2016-08-04 17:00 |  | 5d |  |  |
| 3 | 2.1 | Mecanizar Pista Con Grieta | 1.5h | 2016-08-04 07:45 | 2016-08-04 09:15 |  | 5d | 0d |  |
| 4 | 2.2 | Ensayo Magnaflux | 2h | 2016-08-04 09:15 | 2016-08-04 11:15 | 3 | 5d | 0d |  |
| 5 | 2.3 | Metalizar pista con Grieta | 2h | 2016-08-04 11:15 | 2016-08-04 14:00 | 4 | 5d | 0d |  |
| 6 | 2.4 | Rectificar pista de Sello | 3h | 2016-08-04 14:00 | 2016-08-04 17:00 | 5 | 5d |  |  |
| 7 | 3 | Fabricar Tuerca de Retencion SAE 1045 | 4h | 2016-08-04 07:45 | 2016-08-04 11:45 |  | 3.5d | 1.88d |  |
| 8 | 4 | Fabricar Camisa Porta Sello | 6h | 2016-08-04 07:45 | 2016-08-04 14:30 |  | 10.69d |  |  |
| 9 | 5 | Preparar Componentes para Armado | 2d | 2016-08-04 07:45 | 2016-08-05 16:00 |  | 3d |  |  |
| 10 | 6 | Armado de lineas de Engranaje | 1d | 2016-08-11 14:30 | 2016-08-12 14:00 | 6, 7, 9, 1 | 0d |  |  |
| 11 | 7 | Ajuste de Par Conico | 2d | 2016-08-12 14:00 | 2016-08-17 12:15 | 10 | 0d |  |  |
| 12 | 8 | Montaje de Lineas de Engranaje | 2h | 2016-08-17 12:15 | 2016-08-17 15:00 | 11 | 0d |  |  |
| 13 | 9 | Ajuste Final | 1d | 2016-08-17 15:00 | 2016-08-18 14:30 | 12 | 0d |  |  |
| 14 | 10 | **Prueba de Giro** | 0.62d | 2016-08-18 14:30 | 2016-08-19 10:15 |  | 0d |  |  |
| 15 | 10.1 | Montaje en Banco | 1h | 2016-08-18 14:30 | 2016-08-18 15:30 | 13 | 0d |  |  |
| 16 | 10.2 | Llenado de Aceite | 1h | 2016-08-18 15:30 | 2016-08-18 16:30 | 15 | 0d |  |  |
| 17 | 10.3 | Prueba de Giro | 1h | 2016-08-18 16:30 | 2016-08-19 08:15 | 16 | 0d |  |  |
| 18 | 10.4 | Vaciar Aceite | 1h | 2016-08-19 08:15 | 2016-08-19 09:15 | 17 | 0d |  |  |
| 19 | 10.5 | Desmontaje de Banco | 1h | 2016-08-19 09:15 | 2016-08-19 10:15 | 18 | 0d |  |  |
| 20 | 11 | **Terminaciones** | 0.5d | 2016-08-19 10:15 | 2016-08-19 15:00 |  | 0d |  |  |
| 21 | 11.1 | Montaje de Placas | 1h | 2016-08-19 10:15 | 2016-08-19 11:15 | 19 | 0d |  |  |
| 22 | 11.2 | Preparacion para Aplicación de Pintura | 1h | 2016-08-19 11:15 | 2016-08-19 12:15 | 21 | 0d |  |  |
| 23 | 11.3 | Pintar | 1h | 2016-08-19 12:15 | 2016-08-19 14:00 | 22 | 0d |  |  |
| 24 | 11.4 | Terminaciones Finales | 1h | 2016-08-19 14:00 | 2016-08-19 15:00 | 23 | 0d |  |  |

Notes:
- 7: Fabricar en acero SAE1045 tuerca de retencion M80 paso 2, OExt. 105x18mm.
- 8: Fabricar en acero SAE 4340 de Ø70x110x85mm
