# REDUCTOR KELLER KSIH 1200 BASICA

Schedule from MS Project, 2016-08-16 to 2016-08-30.

## Calendars

- MD - 2015/2016: Mon-Fri 07:45-12:30, 13:15-17:00; Sat-Sun off. Exceptions (off unless hours are given): 2015-05-01 to 2024-05-01 (Día del trabajo, recurring), 2015-05-21 to 2024-05-21 (Glorias Navales, recurring), 2015-06-27 to 2024-06-27 (San Pedro y San Pablo, recurring), 2015-07-16 to 2024-07-16 (Solemnidad de la virgen del Carmen, recurring), 2015-08-15 to 2024-08-15 (Asuncion de la Virgen, recurring), 2015-09-18 to 2024-09-18 (Fiestas Patrias, recurring), 2015-09-19 to 2024-09-19 (Glorias Del Ejercito, recurring), 2015-10-12 to 2024-10-12 (Día de Descubrimiento de 2 Mundos, recurring), 2015-10-31 to 2024-10-31 (Día de las Iglesias Evangelicas y Protestantes, recurring), 2015-11-01 to 2024-11-01 (Día de Todos Los Santos, recurring), 2015-12-08 to 2024-12-08 (Día de la inmaculada Concepción, recurring), 2015-12-25 to 2024-12-25 (Navidad, recurring), 2016-01-01 to 2025-01-01 (Año Nuevo, recurring).

## Schedule

| ID | WBS | Task | Duration | Start | Finish | Predecessors | Total slack | Free slack |
| --- | --- | --- | --- | --- | --- | --- | --- | --- |
| 1 | 1 | **Conjunto :** | 1d | 2016-08-16 07:45 | 2016-08-16 16:30 |  | 0d |  |
| 2 | 1.1 | - Limpieza exterior de reductor. | 8h | 2016-08-16 07:45 | 2016-08-16 16:30 |  | 0d |  |
| 3 | 2 | **Carcasa :** | 5.5d | 2016-08-16 16:30 | 2016-08-24 08:45 |  | 0d |  |
| 4 | 2.1 | - Desmontaje de cañerías de lubricación. | 2h | 2016-08-16 16:30 | 2016-08-17 09:15 | 2 | 0d |  |
| 5 | 2.2 | - Desmontaje de machón. | 2h | 2016-08-17 09:15 | 2016-08-17 11:15 | 4 | 0d |  |
| 6 | 2.3 | - Destorqueado de pernos de amarre en tapas laterales. | 2h | 2016-08-17 11:15 | 2016-08-17 14:00 | 5 | 0d |  |
| 7 | 2.4 | - Destorqueado de pernos de amarre en carcasa. | 2h | 2016-08-17 14:00 | 2016-08-17 16:00 | 6 | 0d |  |
| 8 | 2.5 | - Desmontar tapa superior. | 2h | 2016-08-17 16:00 | 2016-08-18 08:45 | 7 | 0d |  |
| 9 | 2.6 | - Desmontar línea de entrada. | 2h | 2016-08-18 08:45 | 2016-08-18 10:45 | 8 | 0d |  |
| 10 | 2.7 | - Desmontar línea intermedia. | 2h | 2016-08-18 10:45 | 2016-08-18 13:30 | 9 | 0d |  |
| 11 | 2.8 | - Desmontar línea de salida. | 2h | 2016-08-18 13:30 | 2016-08-18 15:30 | 10 | 0d |  |
| 12 | 2.9 | - Pulir caras planas de caja y tapa. | 2h | 2016-08-18 15:30 | 2016-08-19 08:15 | 11 | 0d |  |
| 13 | 2.10 | - Montar tapa superior en caja con guías. | 2h | 2016-08-19 08:15 | 2016-08-19 10:15 | 12 | 0d |  |
| 14 | 2.11 | - Torquear carcasa sin elementos internos. | 4h | 2016-08-19 10:15 | 2016-08-19 15:00 | 13 | 0d |  |
| 15 | 2.12 | - Control dimensional de alojamientos en caja. | 4h | 2016-08-19 15:00 | 2016-08-22 09:45 | 14 | 0d |  |
| 16 | 2.13 | - Destorquear carcasa para lavado final. | 16h | 2016-08-22 09:45 | 2016-08-24 08:45 | 15 | 2d |  |
| 17 | 3 | **Eje de entrada :** | 4d | 2016-08-22 09:45 | 2016-08-25 17:00 |  | 0d |  |
| 18 | 3.1 | - Desarmar eje de entrada. | 4h | 2016-08-22 09:45 | 2016-08-22 14:30 | 15 | 0d |  |
| 19 | 3.2 | - Control dimensional a pistas de eje de entrada. | 1h | 2016-08-22 14:30 | 2016-08-22 15:30 | 18 | 0d |  |
| 20 | 3.3 | - Control de tintas penetrantes a eje de entrada. | 3h | 2016-08-22 15:30 | 2016-08-23 09:15 | 19 | 0d |  |
| 21 | 3.4 | - Control de alineación a eje de entrada. | 8h | 2016-08-23 09:15 | 2016-08-24 08:45 | 20 | 0d |  |
| 22 | 3.5 | - Cambio de rodamientos. | 6h | 2016-08-24 08:45 | 2016-08-24 15:30 | 21 | 1.25d |  |
| 23 | 3.6 | - Ajuste y armado de eje entrada. | 16h | 2016-08-24 08:45 | 2016-08-25 17:00 | 21 | 0d |  |
| 24 | 4 | **Eje intermedio :** | 1d | 2016-08-22 09:45 | 2016-08-23 09:15 |  | 6d |  |
| 25 | 4.1 | - Lavar eje intermedio. | 4h | 2016-08-22 09:45 | 2016-08-22 14:30 | 15 | 6d | 0d |
| 26 | 4.2 | - Control tintas penetrantes. | 4h | 2016-08-22 14:30 | 2016-08-23 09:15 | 25 | 6d |  |

| ID | WBS | Task | Duration | Start | Finish | Predecessors | Total slack | Free slack |
| --- | --- | --- | --- | --- | --- | --- | --- | --- |
| 27 | 5 | **Eje de salida :** | 1d | 2016-08-22 09:45 | 2016-08-23 09:15 |  | 6d |  |
| 28 | 5.1 | - Lavar eje de salida. | 4h | 2016-08-22 09:45 | 2016-08-22 14:30 | 15 | 6d | 0d |
| 29 | 5.2 | - Control tintas penetrantes. | 4h | 2016-08-22 14:30 | 2016-08-23 09:15 | 28 | 6d |  |
| 30 | 6 | **Conjunto : ajuste y armado :** | 3d | 2016-08-26 07:45 | 2016-08-30 15:30 |  | 0d |  |
| 31 | 6.1 | - Montaje de eje de salida en carcasa. | 2h | 2016-08-26 07:45 | 2016-08-26 09:45 | 23 | 0d |  |
| 32 | 6.2 | - Montaje de eje intermedio en carcasa. | 2h | 2016-08-26 09:45 | 2016-08-26 11:45 | 31 | 0d |  |
| 33 | 6.3 | - Montaje de eje de entrada en carcasa. | 4h | 2016-08-26 11:45 | 2016-08-26 16:30 | 32 | 0d |  |
| 34 | 6.4 | - Ajuste de conjunto cónico helicoidal. | 4h | 2016-08-26 16:30 | 2016-08-29 11:15 | 33 | 0d |  |
| 35 | 6.5 | - Ajustar ejes laterales. | 4h | 2016-08-29 11:15 | 2016-08-29 16:00 | 34 | 0d |  |
| 36 | 6.6 | - Aplicar sellante y montar tapa en carcasa. | 2h | 2016-08-29 16:00 | 2016-08-30 08:45 | 35 | 0d |  |
| 37 | 6.7 | - Aplicar sellante y montar tapas laterales. | 2h | 2016-08-30 08:45 | 2016-08-30 10:45 | 36 | 0d |  |
| 38 | 6.8 | - Montar machón de entrada. | 2h | 2016-08-30 10:45 | 2016-08-30 13:30 | 37 | 0d |  |
| 39 | 6.9 | - Montar cañerías de lubricación. | 2h | 2016-08-30 13:30 | 2016-08-30 15:30 | 38 | 0d |  |
