# PARAMAX PH 9075R2 ARMADO

Schedule from MS Project, 2016-11-09 to 2016-11-18.

## Calendars

- MD - 2015/2016: Mon-Fri 07:45-12:30, 13:15-17:00; Sat-Sun off. Exceptions (off unless hours are given): 2015-05-01 to 2024-05-01 (Día del trabajo, recurring), 2015-05-21 to 2024-05-21 (Glorias Navales, recurring), 2015-06-27 to 2024-06-27 (San Pedro y San Pablo, recurring), 2015-07-16 to 2024-07-16 (Solemnidad de la virgen del Carmen, recurring), 2015-08-15 to 2024-08-15 (Asuncion de la Virgen, recurring), 2015-09-18 to 2024-09-18 (Fiestas Patrias, recurring), 2015-09-19 to 2024-09-19 (Glorias Del Ejercito, recurring), 2015-10-12 to 2024-10-12 (Día de Descubrimiento de 2 Mundos, recurring), 2015-10-31 to 2024-10-31 (Día de las Iglesias Evangelicas y Protestantes, recurring), 2015-11-01 to 2024-11-01 (Día de Todos Los Santos, recurring), 2015-12-08 to 2024-12-08 (Día de la inmaculada Concepción, recurring), 2015-12-25 to 2024-12-25 (Navidad, recurring), 2016-01-01 to 2025-01-01 (Año Nuevo, recurring).

## Schedule

| ID | WBS | Task | Duration | Start | Finish | Predecessors | Total slack |
| --- | --- | --- | --- | --- | --- | --- | --- |
| 1 | 1 | **Compra de repuestos** | 7d | 2016-11-09 07:45 | 2016-11-17 13:30 |  | 0d |
| 2 | 1.1 | Fabricacion Ventilador | 5d | 2016-11-09 07:45 | 2016-11-15 14:30 |  | 2d |
| 3 | 1.2 | Fabricacion Cubre Ventilador | 7d | 2016-11-09 07:45 | 2016-11-17 13:30 |  | 0.38d |
| 4 | 1.3 | Compra de Repuestos | 3d | 2016-11-09 07:45 | 2016-11-11 15:30 |  | 0d |
| 5 | 2 | **Reparacion** | 4.76d | 2016-11-11 15:30 | 2016-11-18 10:18 |  | 0d |
| 6 | 2.1 | Armado Lineas de Engranaje | 6h | 2016-11-11 15:30 | 2016-11-14 12:15 | 4 | 0d |
| 7 | 2.2 | Armado y Ajuste de Eje de Entrada | 4h | 2016-11-14 12:15 | 2016-11-14 17:00 | 6 | 0d |
| 8 | 2.3 | Ensamble en Carcaza Inferior | 2h | 2016-11-15 07:45 | 2016-11-15 09:45 | 7 | 0d |
| 9 | 2.4 | Ajuste Par Conico | 12h | 2016-11-15 09:45 | 2016-11-16 14:00 | 8 | 0d |
| 10 | 2.5 | Pre Ajuste de Lineas de engranaje con carcasa abierta | 2h | 2016-11-16 14:00 | 2016-11-16 16:00 | 9 | 0d |
| 11 | 2.6 | Montaje y Torqueado de Carcaza Superior | 3min | 2016-11-16 16:00 | 2016-11-16 16:03 | 10 | 0d |
| 12 | 2.7 | Ajuste de Lineas de Engranaje | 2h | 2016-11-16 16:03 | 2016-11-17 08:48 | 11 | 0d |
| 13 | 2.8 | Montaje y sellado de Tapas Laterales | 2h | 2016-11-17 08:48 | 2016-11-17 10:48 | 12 | 0d |
| 14 | 2.9 | Prueba de giro en vacio | 3h | 2016-11-17 10:48 | 2016-11-17 14:33 | 13 | 0d |
| 15 | 2.10 | Montaje de Ventilador y Cubre Ventilador | 3h | 2016-11-17 14:33 | 2016-11-18 08:18 | 14, 3, 2 | 0d |
| 16 | 2.11 | Aplicación de Pintura y Terminaciones Finales | 2h | 2016-11-18 08:18 | 2016-11-18 10:18 | 15, 14 | 0d |
