# Acople FLEXIBLE BC 41-5-50N-1 PC 8000

Schedule from MS Project, 2016-10-28 to 2016-11-03, 8.15 hours a day.

## Calendars

- MD - 2015/2016: Mon-Fri 07:45-12:30, 13:15-17:00; Sat-Sun off. Exceptions (off unless hours are given): 2015-05-01 to 2024-05-01 (Día del trabajo, recurring), 2015-05-21 to 2024-05-21 (Glorias Navales, recurring), 2015-06-27 to 2024-06-27 (San Pedro y San Pablo, recurring), 2015-07-16 to 2024-07-16 (Solemnidad de la virgen del Carmen, recurring), 2015-08-15 to 2024-08-15 (Asuncion de la Virgen, recurring), 2015-09-18 to 2024-09-18 (Fiestas Patrias, recurring), 2015-09-19 to 2024-09-19 (Glorias Del Ejercito, recurring), 2015-10-12 to 2024-10-12 (Día de Descubrimiento de 2 Mundos, recurring), 2015-10-31 to 2024-10-31 (Día de las Iglesias Evangelicas y Protestantes, recurring), 2015-11-01 to 2024-11-01 (Día de Todos Los Santos, recurring), 2015-12-08 to 2024-12-08 (Día de la inmaculada Concepción, recurring), 2015-12-25 to 2024-12-25 (Navidad, recurring), 2016-01-01 to 2025-01-01 (Año Nuevo, recurring).

## Schedule

| ID | WBS | Task | Type | Duration | Start | Finish | Predecessors | Total slack | Constraint |
| --- | --- | --- | --- | --- | --- | --- | --- | --- | --- |
| 1 | 1 | **Evaluacion** |  | 1.61d | 2016-10-28 07:45 | 2016-11-02 12:24 |  | 0d |  |
| 2 | 1.1 | Desarme Acople Flexible |  | 1h | 2016-10-28 07:45 | 2016-10-28 08:45 |  | 0d | start no earlier than 2016-10-28 07:45 |
| 3 | 1.2 | Limpieza y evaluacion de partes y piezas |  | 1h | 2016-10-28 08:45 | 2016-10-28 09:45 | 2 | 0d |  |
| 4 | 1.3 | Embalaje de Partes |  | 1h | 2016-10-28 09:45 | 2016-10-28 10:45 | 3 | 1.8d |  |
| 5 | 1.4 | Informe Técnico |  | 3h | 2016-10-28 09:45 | 2016-10-28 13:30 | 3 | 0d |  |
| 6 | 1.5 | Presupuesto |  | 1d | 2016-10-28 13:30 | 2016-11-02 12:24 | 5 | 0d |  |
| 7 | 2 | Aceptación de trabajo | milestone | 0h | 2016-11-02 12:24 | 2016-11-02 12:24 | 6 | 0d |  |
| 8 | 3 | **Armado** |  | 0.34d | 2016-11-02 12:24 | 2016-11-02 15:54 |  | 0d |  |
| 9 | 3.1 | Instalar O'rings en Flange |  | 15min | 2016-11-02 12:24 | 2016-11-02 13:24 | 7 | 0d |  |
| 10 | 3.2 | Instalar Kit de Tension en Flange |  | 30min | 2016-11-02 13:24 | 2016-11-02 13:54 | 9 | 0d |  |
| 11 | 3.3 | Side Plate, instalar O'ring, cerrar y torquear pernos |  | 45min | 2016-11-02 13:54 | 2016-11-02 14:39 | 10 | 0d |  |
| 12 | 3.4 | Inner Star: Instalar o'rings, pernos, montar e instalar Ring |  | 30min | 2016-11-02 14:39 | 2016-11-02 15:09 | 11 | 0d |  |
| 13 | 3.5 | instalar Supporting Ring en Inner Star |  | 15min | 2016-11-02 15:09 | 2016-11-02 15:24 | 12 | 0d |  |
| 14 | 3.6 | Instalar Seal Ring en conjunto |  | 15min | 2016-11-02 15:24 | 2016-11-02 15:39 | 13 | 0d |  |
| 15 | 3.7 | Instalar Tapa y Torquear |  | 15min | 2016-11-02 15:39 | 2016-11-02 15:54 | 14 | 0d |  |
| 16 | 4 | **Embalaje** |  | 0.21d | 2016-11-02 15:54 | 2016-11-03 08:24 |  | 0d |  |
| 17 | 4.1 | Lavado Exterior |  | 15min | 2016-11-02 15:54 | 2016-11-02 16:09 | 15 | 0d |  |
| 18 | 4.2 | Pintura y Secado |  | 1h | 2016-11-02 16:09 | 2016-11-03 07:54 | 17 | 0d |  |
| 19 | 4.3 | Aplicar Grasa Protectora |  | 15min | 2016-11-03 07:54 | 2016-11-03 08:09 | 18 | 0d |  |
| 20 | 4.4 | Fabricacion Cajon |  | 1h | 2016-11-02 15:54 | 2016-11-02 16:54 | 15 | 0.06d |  |
| 21 | 4.5 | Embalar |  | 15min | 2016-11-03 08:09 | 2016-11-03 08:24 | 19, 20 | 0d |  |
