# Evaluacion y Armado C5000

Schedule from MS Project, 2016-08-02 to 2016-08-05.

## Calendars

- MD - 2015/2016: Mon-Fri 07:45-12:30, 13:15-17:00; Sat-Sun off. Exceptions (off unless hours are given): 2015-05-01 to 2024-05-01 (Día del trabajo, recurring), 2015-05-21 to 2024-05-21 (Glorias Navales, recurring), 2015-06-27 to 2024-06-27 (San Pedro y San Pablo, recurring), 2015-07-16 to 2024-07-16 (Solemnidad de la virgen del Carmen, recurring), 2015-08-15 to 2024-08-15 (Asuncion de la Virgen, recurring), 2015-09-18 to 2024-09-18 (Fiestas Patrias, recurring), 2015-09-19 to 2024-09-19 (Glorias Del Ejercito, recurring), 2015-10-12 to 2024-10-12 (Día de Descubrimiento de 2 Mundos, recurring), 2015-10-31 to 2024-10-31 (Día de las Iglesias Evangelicas y Protestantes, recurring), 2015-11-01 to 2024-11-01 (Día de Todos Los Santos, recurring), 2015-12-08 to 2024-12-08 (Día de la inmaculada Concepción, recurring), 2015-12-25 to 2024-12-25 (Navidad, recurring), 2016-01-01 to 2025-01-01 (Año Nuevo, recurring).

## Schedule

| ID | WBS | Task | Type | Duration | Start | Finish | Predecessors | Total slack | Free slack | Constraint |
| --- | --- | --- | --- | --- | --- | --- | --- | --- | --- | --- |
| 1 | 1 | Limpieza exterior |  | 30min | 2016-08-02 07:45 | 2016-08-02 08:15 |  | 0.06d |  | start no earlier than 2016-08-02 07:45 |
| 2 | 2 | **Evaluacion** |  | 1.53d | 2016-08-02 08:45 | 2016-08-03 12:30 |  | 0d |  |  |
| 3 | 2.1 | Drenaje Aceite |  | 15min | 2016-08-02 08:45 | 2016-08-02 09:00 | 1 | 0d |  | start no earlier than 2016-08-02 08:45 |
| 4 | 2.2 | Desarme |  | 2h | 2016-08-02 09:00 | 2016-08-02 11:00 | 3 | 0d |  |  |
| 5 | 2.3 | limpieza partes |  | 3h | 2016-08-02 11:00 | 2016-08-02 14:45 | 4 | 0d |  |  |
| 6 | 2.4 | Evaluacion de partes |  | 3h | 2016-08-02 14:45 | 2016-08-03 08:30 | 5 | 0d |  |  |
| 7 | 2.5 | Informe Tecnico |  | 4h | 2016-08-03 08:30 | 2016-08-03 12:30 | 6 | 0d |  |  |
| 8 | 2.6 | fin evaluacion | milestone | 0d | 2016-08-03 12:30 | 2016-08-03 12:30 | 7 | 0d |  |  |
| 9 | 3 | almacenaje piezas |  | 1h | 2016-08-03 13:15 | 2016-08-03 14:15 | 8 | 0d |  |  |
| 10 | 4 | Aceptacion de trabajo | milestone | 0d | 2016-08-03 14:15 | 2016-08-03 14:15 | 9 | 0d |  |  |
| 11 | 5 | preparacion partes |  | 2h | 2016-08-03 14:15 | 2016-08-03 16:15 | 10 | 0d |  |  |
| 12 | 6 | revision repuestos |  | 1h | 2016-08-03 16:15 | 2016-08-04 08:00 | 11 | 0d |  |  |
| 13 | 7 | **Recuperaciones** |  | 0.88d | 2016-08-03 14:15 | 2016-08-04 12:00 |  | 1.18d |  |  |
| 14 | 7.1 | **Cubo Convertidor** |  | 0.38d | 2016-08-03 14:15 | 2016-08-04 08:00 |  | 1.18d |  |  |
| 15 | 7.1.1 | **Pista de sello con desgaste** |  | 0.38d | 2016-08-03 14:15 | 2016-08-04 08:00 |  | 1.18d |  |  |
| 16 | 7.1.1.1 | Metalizado de alta adherencia |  | 2h | 2016-08-03 14:15 | 2016-08-03 16:15 | 10 | 1.18d | 0d |  |
| 17 | 7.1.1.2 | dar medida final 84.15+0.02 |  | 1h | 2016-08-03 16:15 | 2016-08-04 08:00 | 16 | 1.68d |  |  |
| 18 | 7.2 | **Manchon de entrada** |  | 0.38d | 2016-08-03 16:15 | 2016-08-04 10:00 |  | 1.18d |  |  |
| 19 | 7.2.1 | **Desgaste en pista de sello** |  | 0.38d | 2016-08-03 16:15 | 2016-08-04 10:00 |  | 1.18d |  |  |
| 20 | 7.2.1.1 | Metalizado de alta adherencia |  | 2h | 2016-08-03 16:15 | 2016-08-04 09:00 | 16 | 1.18d | 0d |  |
| 21 | 7.2.1.2 | rectificar medida final 60.35+0.02 |  | 1h | 2016-08-04 09:00 | 2016-08-04 10:00 | 20 | 1.43d |  |  |
| 22 | 7.3 | **eje estator** |  | 0.38d | 2016-08-04 09:00 | 2016-08-04 12:00 |  | 1.18d |  |  |
| 23 | 7.3.1 | **Desgaste en pista de sello** |  | 0.38d | 2016-08-04 09:00 | 2016-08-04 12:00 |  | 1.18d |  |  |
| 24 | 7.3.1.1 | Metalizado de alta adherencia |  | 2h | 2016-08-04 09:00 | 2016-08-04 11:00 | 20 | 1.18d | 0d |  |
| 25 | 7.3.1.2 | dar medida final 84.15+0.02 |  | 1h | 2016-08-04 11:00 | 2016-08-04 12:00 | 24 | 1.18d |  |  |

| ID | WBS | Task | Type | Duration | Start | Finish | Predecessors | Total slack | Free slack |
| --- | --- | --- | --- | --- | --- | --- | --- | --- | --- |
| 26 | 8 | **Armado** |  | 1.68d | 2016-08-04 08:00 | 2016-08-05 13:40 |  | 0d |  |
| 27 | 8.1 | armado |  | 6h | 2016-08-04 08:00 | 2016-08-04 14:45 | 12 | 0d |  |
| 28 | 8.2 | **prueba** |  | 0.48d | 2016-08-04 14:45 | 2016-08-05 09:20 |  | 0d |  |
| 29 | 8.2.1 | montaje en banco |  | 1.5h | 2016-08-04 14:45 | 2016-08-04 16:15 | 27 | 0d |  |
| 30 | 8.2.2 | llenado de aceite |  | 20min | 2016-08-04 16:15 | 2016-08-04 16:35 | 29 | 0d |  |
| 31 | 8.2.3 | Prueba Funcionamiento |  | 2h | 2016-08-04 16:35 | 2016-08-05 09:20 | 30 | 0.25d | 0d |
| 32 | 8.2.4 | desmontar de banco |  | 1h | 2016-08-04 16:35 | 2016-08-05 08:20 | 30 | 0d |  |
| 33 | 8.2.5 | informe de prueba |  | 1h | 2016-08-05 08:20 | 2016-08-05 09:20 | 32 | 0d |  |
| 34 | 8.2.6 | fin prueba | milestone | 0d | 2016-08-05 09:20 | 2016-08-05 09:20 | 33 | 0d |  |
| 35 | 8.3 | **embalaje** |  | 0.45d | 2016-08-05 09:20 | 2016-08-05 13:40 |  | 0d |  |
| 36 | 8.3.1 | fabricación pallet |  | 1h | 2016-08-05 09:20 | 2016-08-05 10:20 | 31 | 0.25d |  |
| 37 | 8.3.2 | pintar Convertidor |  | 1h | 2016-08-05 09:20 | 2016-08-05 10:20 | 34 | 0d |  |
| 38 | 8.3.3 | secado de pintura |  | 2h | 2016-08-05 10:20 | 2016-08-05 12:20 | 37 | 0d |  |
| 39 | 8.3.4 | montar en pallet |  | 10min | 2016-08-05 12:20 | 2016-08-05 12:30 | 38, 36 | 0d |  |
| 40 | 8.3.5 | revisar tapones y tapas para despacho |  | 10min | 2016-08-05 13:15 | 2016-08-05 13:25 | 39 | 0d |  |
| 41 | 8.3.6 | instalar film de proteccion |  | 15min | 2016-08-05 13:25 | 2016-08-05 13:40 | 40 | 0d |  |
| 42 | 8.3.7 | fin embalaje | milestone | 0d | 2016-08-05 13:40 | 2016-08-05 13:40 | 41 | 0d |  |
