# Evaluacion y Armado Eje Carraro 26.25M

Schedule from MS Project, 2016-07-27 to 2016-08-09.

## Calendars

- MD - 2015/2016: Mon-Fri 07:45-12:30, 13:15-17:00; Sat-Sun off. Exceptions (off unless hours are given): 2015-05-01 to 2024-05-01 (Día del trabajo, recurring), 2015-05-21 to 2024-05-21 (Glorias Navales, recurring), 2015-06-27 to 2024-06-27 (San Pedro y San Pablo, recurring), 2015-07-16 to 2024-07-16 (Solemnidad de la virgen del Carmen, recurring), 2015-08-15 to 2024-08-15 (Asuncion de la Virgen, recurring), 2015-09-18 to 2024-09-18 (Fiestas Patrias, recurring), 2015-09-19 to 2024-09-19 (Glorias Del Ejercito, recurring), 2015-10-12 to 2024-10-12 (Día de Descubrimiento de 2 Mundos, recurring), 2015-10-31 to 2024-10-31 (Día de las Iglesias Evangelicas y Protestantes, recurring), 2015-11-01 to 2024-11-01 (Día de Todos Los Santos, recurring), 2015-12-08 to 2024-12-08 (Día de la inmaculada Concepción, recurring), 2015-12-25 to 2024-12-25 (Navidad, recurring), 2016-01-01 to 2025-01-01 (Año Nuevo, recurring).

## Schedule

| ID | WBS | Task | Type | Duration | Start | Finish | Predecessors | Total slack | Free slack | Constraint |
| --- | --- | --- | --- | --- | --- | --- | --- | --- | --- | --- |
| 1 | 1 | Limpieza exterior |  | 1h | 2016-07-27 07:45 | 2016-07-27 08:45 |  | 2.38d | 0d |  |
| 2 | 2 | **Evaluacion** |  | 2.94d | 2016-07-27 08:45 | 2016-07-29 16:00 |  | 2.12d |  |  |
| 3 | 2.1 | Drenaje Aceite |  | 0.5h | 2016-07-27 08:45 | 2016-07-27 09:15 | 1 | 2.12d | 0d |  |
| 4 | 2.2 | Desarme |  | 8h | 2016-07-27 09:15 | 2016-07-28 08:45 | 3 | 2.12d | 0d |  |
| 5 | 2.3 | limpieza partes |  | 8h | 2016-07-28 08:45 | 2016-07-29 08:15 | 4 | 2.12d | 0d |  |
| 6 | 2.4 | Evaluacion de partes |  | 4h | 2016-07-29 08:15 | 2016-07-29 12:15 | 5 | 2.12d | 0d |  |
| 7 | 2.5 | Informe Tecnico |  | 3h | 2016-07-29 12:15 | 2016-07-29 16:00 | 6 | 2.12d | 0d |  |
| 8 | 2.6 | fin evaluacion | milestone | 0d | 2016-07-29 16:00 | 2016-07-29 16:00 | 7 | 2.12d | 0d |  |
| 9 | 3 | almacenaje piezas |  | 1h | 2016-07-29 16:00 | 2016-07-29 17:00 | 8 | 2.12d | 0d |  |
| 10 | 4 | Aceptacion de trabajo | milestone | 0d | 2016-07-29 17:00 | 2016-07-29 17:00 | 9 | 2.12d | 0d |  |
| 11 | 5 | **Armado** |  | 6.59d | 2016-08-01 07:45 | 2016-08-09 09:30 |  | 0d |  |  |
| 12 | 5.1 | preparacion partes |  | 2h | 2016-08-01 07:45 | 2016-08-01 09:45 | 10 | 2.12d | 0d | start no earlier than 2016-08-01 07:45 |
| 13 | 5.2 | revision repuestos |  | 1h | 2016-08-01 09:45 | 2016-08-01 10:45 | 12 | 2.12d |  |  |
| 14 | 5.3 | armado |  | 22h | 2016-08-03 10:45 | 2016-08-05 16:30 | 13 | 0d |  | start no earlier than 2016-08-03 10:45 |
| 15 | 5.4 | **prueba** |  | 0.77d | 2016-08-05 16:30 | 2016-08-08 14:10 |  | 0d |  |  |
| 16 | 5.4.1 | montaje en banco |  | 30min | 2016-08-05 16:30 | 2016-08-05 17:00 | 14 | 0d |  |  |
| 17 | 5.4.2 | conexiónes hidraulicas |  | 20min | 2016-08-08 07:45 | 2016-08-08 08:05 | 16 | 0d |  |  |
| 18 | 5.4.3 | conexion de sensores |  | 10min | 2016-08-08 08:05 | 2016-08-08 08:15 | 17 | 0d |  |  |
| 19 | 5.4.4 | llenado de aceite |  | 30min | 2016-08-08 08:15 | 2016-08-08 08:45 | 18 | 0d |  |  |
| 20 | 5.4.5 | Prueba Funcionamiento |  | 3h | 2016-08-08 08:45 | 2016-08-08 11:45 | 19 | 0d |  |  |
| 21 | 5.4.6 | desconexion lineas |  | 10min | 2016-08-08 11:45 | 2016-08-08 11:55 | 20 | 0d |  |  |
| 22 | 5.4.7 | Drenaje Aceite |  | 20min | 2016-08-08 11:55 | 2016-08-08 12:15 | 21 | 0d |  |  |
| 23 | 5.4.8 | desmontar de banco |  | 10min | 2016-08-08 12:15 | 2016-08-08 12:25 | 22 | 0d |  |  |
| 24 | 5.4.9 | informe de prueba |  | 1h | 2016-08-08 12:25 | 2016-08-08 14:10 | 23 | 0d |  |  |
| 25 | 5.4.10 | fin prueba | milestone | 0d | 2016-08-08 14:10 | 2016-08-08 14:10 | 24 | 0d |  |  |

| ID | WBS | Task | Type | Duration | Start | Finish | Predecessors | Total slack |
| --- | --- | --- | --- | --- | --- | --- | --- | --- |
| 26 | 5.5 | **embalaje** |  | 0.78d | 2016-08-08 11:45 | 2016-08-09 09:30 |  | 0d |
| 27 | 5.5.1 | fabricación pallet |  | 1h | 2016-08-08 11:45 | 2016-08-08 13:30 | 20 | 0.58d |
| 28 | 5.5.2 | Pintar Eje |  | 1h | 2016-08-08 14:10 | 2016-08-08 15:10 | 25 | 0d |
| 29 | 5.5.3 | secado de pintura |  | 3h | 2016-08-08 15:10 | 2016-08-09 08:55 | 28 | 0d |
| 30 | 5.5.4 | montar en pallet |  | 5min | 2016-08-09 08:55 | 2016-08-09 09:00 | 29, 27 | 0d |
| 31 | 5.5.5 | revisar tapones y tapas para despacho |  | 10min | 2016-08-09 09:00 | 2016-08-09 09:10 | 30 | 0d |
| 32 | 5.5.6 | instalar film de proteccion |  | 20min | 2016-08-09 09:10 | 2016-08-09 09:30 | 31 | 0d |
| 33 | 5.5.7 | fin embalaje | milestone | 0d | 2016-08-09 09:30 | 2016-08-09 09:30 | 32 | 0d |
