# Evaluacion y Armado Eje Dana 19D

Schedule from MS Project, 2016-08-03 to 2016-09-13.

## Calendars

- MD - 2015/2016: Mon-Fri 07:45-12:30, 13:15-17:00; Sat-Sun off. Exceptions (off unless hours are given): 2015-05-01 to 2024-05-01 (Día del trabajo, recurring), 2015-05-21 to 2024-05-21 (Glorias Navales, recurring), 2015-06-27 to 2024-06-27 (San Pedro y San Pablo, recurring), 2015-07-16 to 2024-07-16 (Solemnidad de la virgen del Carmen, recurring), 2015-08-15 to 2024-08-15 (Asuncion de la Virgen, recurring), 2015-09-18 to 2024-09-18 (Fiestas Patrias, recurring), 2015-09-19 to 2024-09-19 (Glorias Del Ejercito, recurring), 2015-10-12 to 2024-10-12 (Día de Descubrimiento de 2 Mundos, recurring), 2015-10-31 to 2024-10-31 (Día de las Iglesias Evangelicas y Protestantes, recurring), 2015-11-01 to 2024-11-01 (Día de Todos Los Santos, recurring), 2015-12-08 to 2024-12-08 (Día de la inmaculada Concepción, recurring), 2015-12-25 to 2024-12-25 (Navidad, recurring), 2016-01-01 to 2025-01-01 (Año Nuevo, recurring).

## Schedule

| ID | WBS | Task | Type | Duration | Start | Finish | Predecessors | Total slack | Free slack | Constraint |
| --- | --- | --- | --- | --- | --- | --- | --- | --- | --- | --- |
| 1 | 1 | Limpieza exterior |  | 8h | 2016-08-03 07:45 | 2016-08-03 16:30 |  | 23.22d | 0d | start no earlier than 2016-08-03 07:45 |
| 2 | 2 | **Evaluacion** |  | 1.59d | 2016-08-03 16:30 | 2016-08-05 11:30 |  | 23.22d |  |  |
| 3 | 2.1 | Drenaje Aceite |  | 45min | 2016-08-03 16:30 | 2016-08-04 08:00 | 1 | 23.22d | 0d |  |
| 4 | 2.2 | Desarme |  | 8h | 2016-08-04 08:00 | 2016-08-04 16:45 | 3 | 23.22d | 0d |  |
| 5 | 2.3 | Limpieza y evaluacion de partes |  | 4h | 2016-08-04 16:45 | 2016-08-05 11:30 | 4 | 27.53d |  |  |
| 6 | 2.4 | Informe Tecnico |  | 4h | 2016-08-04 16:45 | 2016-08-05 11:30 | 4 | 23.22d | 0d |  |
| 7 | 2.5 | fin evaluacion | milestone | 0d | 2016-08-05 11:30 | 2016-08-05 11:30 | 6 | 23.22d | 0d |  |
| 8 | 3 | almacenaje piezas |  | 1h | 2016-08-05 11:30 | 2016-08-05 12:30 | 7 | 23.22d |  |  |
| 9 | 4 | Aceptacion de trabajo | milestone | 0d | 2016-09-07 11:15 | 2016-09-07 11:15 | 8 | 0d |  | start no earlier than 2016-09-07 11:15 |
| 10 | 5 | **Armado** |  | 4.19d | 2016-09-07 11:15 | 2016-09-13 10:45 |  | 0d |  |  |
| 11 | 5.1 | Peparacion de partes |  | 3h | 2016-09-07 11:15 | 2016-09-07 15:00 | 9 | 0d |  | start no earlier than 2016-08-01 07:45 |
| 12 | 5.2 | Revision repuestos |  | 1h | 2016-09-07 15:00 | 2016-09-07 16:00 | 11 | 0d |  |  |
| 13 | 5.3 | armado |  | 24h | 2016-09-07 16:00 | 2016-09-12 14:30 | 12 | 0d |  | start no earlier than 2016-08-03 10:45 |
| 14 | 5.4 | **prueba** |  | 0.56d | 2016-09-12 14:30 | 2016-09-13 09:45 |  | 0d |  |  |
| 15 | 5.4.1 | montaje en banco y llenado de aceite |  | 1h | 2016-09-12 14:30 | 2016-09-12 15:30 | 13 | 0d |  |  |
| 16 | 5.4.2 | Prueba Funcionamiento |  | 2h | 2016-09-12 15:30 | 2016-09-13 08:15 | 15 | 0d |  |  |
| 17 | 5.4.3 | Drenaje Aceite y desmontar de banco |  | 30min | 2016-09-13 08:15 | 2016-09-13 08:45 | 16 | 0d |  |  |
| 18 | 5.4.4 | informe de prueba |  | 1h | 2016-09-13 08:45 | 2016-09-13 09:45 | 17 | 0d |  |  |
| 19 | 5.4.5 | fin prueba | milestone | 0d | 2016-09-13 09:45 | 2016-09-13 09:45 | 18 | 0d |  |  |
| 20 | 5.5 | **embalaje** |  | 0.56d | 2016-09-12 15:30 | 2016-09-13 10:45 |  | 0d |  |  |
| 21 | 5.5.1 | fabricación pallet |  | 1h | 2016-09-12 15:30 | 2016-09-12 16:30 | 15, 16 | 0.38d | 0d |  |
| 22 | 5.5.2 | Pintar Eje |  | 1h | 2016-09-13 09:45 | 2016-09-13 10:45 | 19 | 0d |  |  |
| 23 | 5.5.3 | revisar tapones y Preparar para despacho |  | 30min | 2016-09-12 16:30 | 2016-09-12 17:00 | 21 | 0.38d | 0d |  |
| 24 | 5.5.4 | fin embalaje | milestone | 0d | 2016-09-12 17:00 | 2016-09-12 17:00 | 23 | 0.38d |  |  |
