# Evaluacion y Armado Eje Kessler 101.1643.3H

Schedule from MS Project, 2016-08-03 to 2016-08-12.

## Calendars

- MD - 2015/2016: Mon-Fri 07:45-12:30, 13:15-17:00; Sat-Sun off. Exceptions (off unless hours are given): 2015-05-01 to 2024-05-01 (Día del trabajo, recurring), 2015-05-21 to 2024-05-21 (Glorias Navales, recurring), 2015-06-27 to 2024-06-27 (San Pedro y San Pablo, recurring), 2015-07-16 to 2024-07-16 (Solemnidad de la virgen del Carmen, recurring), 2015-08-15 to 2024-08-15 (Asuncion de la Virgen, recurring), 2015-09-18 to 2024-09-18 (Fiestas Patrias, recurring), 2015-09-19 to 2024-09-19 (Glorias Del Ejercito, recurring), 2015-10-12 to 2024-10-12 (Día de Descubrimiento de 2 Mundos, recurring), 2015-10-31 to 2024-10-31 (Día de las Iglesias Evangelicas y Protestantes, recurring), 2015-11-01 to 2024-11-01 (Día de Todos Los Santos, recurring), 2015-12-08 to 2024-12-08 (Día de la inmaculada Concepción, recurring), 2015-12-25 to 2024-12-25 (Navidad, recurring), 2016-01-01 to 2025-01-01 (Año Nuevo, recurring).

## Schedule

| ID | WBS | Task | Type | Duration | Start | Finish | Predecessors | Total slack | Constraint |
| --- | --- | --- | --- | --- | --- | --- | --- | --- | --- |
| 1 | 1 | Limpieza exterior |  | 4h | 2016-08-03 07:45 | 2016-08-03 11:45 |  | 0d | start no earlier than 2016-08-03 07:45 |
| 2 | 2 | **Evaluacion** |  | 2.59d | 2016-08-03 11:45 | 2016-08-05 16:15 |  | 0d |  |
| 3 | 2.1 | Drenaje Aceite |  | 45min | 2016-08-03 11:45 | 2016-08-03 12:30 | 1 | 0d |  |
| 4 | 2.2 | Desarme |  | 8h | 2016-08-03 13:15 | 2016-08-04 12:00 | 3 | 0d |  |
| 5 | 2.3 | limpieza partes |  | 4h | 2016-08-04 12:00 | 2016-08-04 16:45 | 4 | 0d |  |
| 6 | 2.4 | Evaluacion de partes |  | 4h | 2016-08-04 16:45 | 2016-08-05 11:30 | 5 | 0d |  |
| 7 | 2.5 | Informe Tecnico |  | 4h | 2016-08-05 11:30 | 2016-08-05 16:15 | 6 | 0d |  |
| 8 | 2.6 | fin evaluacion | milestone | 0d | 2016-08-05 16:15 | 2016-08-05 16:15 | 7 | 0d |  |
| 9 | 3 | almacenaje piezas |  | 1h | 2016-08-05 16:15 | 2016-08-08 08:00 | 8 | 0d |  |
| 10 | 4 | Aceptacion de trabajo | milestone | 0d | 2016-08-08 08:00 | 2016-08-08 08:00 | 9 | 0d |  |
| 11 | 5 | **Armado** |  | 4.59d | 2016-08-08 08:00 | 2016-08-12 10:45 |  | 0d |  |
| 12 | 5.1 | preparacion partes |  | 3h | 2016-08-08 08:00 | 2016-08-08 11:00 | 10 | 0d | start no earlier than 2016-08-01 07:45 |
| 13 | 5.2 | revision repuestos |  | 1h | 2016-08-08 11:00 | 2016-08-08 12:00 | 12 | 0d |  |
| 14 | 5.3 | armado |  | 22h | 2016-08-08 12:00 | 2016-08-11 08:30 | 13 | 0d | start no earlier than 2016-08-03 10:45 |
| 15 | 5.4 | **prueba** |  | 0.77d | 2016-08-11 08:30 | 2016-08-11 15:25 |  | 0d |  |
| 16 | 5.4.1 | montaje en banco |  | 30min | 2016-08-11 08:30 | 2016-08-11 09:00 | 14 | 0d |  |
| 17 | 5.4.2 | conexiónes hidraulicas |  | 20min | 2016-08-11 09:00 | 2016-08-11 09:20 | 16 | 0d |  |
| 18 | 5.4.3 | conexion de sensores |  | 10min | 2016-08-11 09:20 | 2016-08-11 09:30 | 17 | 0d |  |
| 19 | 5.4.4 | llenado de aceite |  | 30min | 2016-08-11 09:30 | 2016-08-11 10:00 | 18 | 0d |  |
| 20 | 5.4.5 | Prueba Funcionamiento |  | 3h | 2016-08-11 10:00 | 2016-08-11 13:45 | 19 | 0d |  |
| 21 | 5.4.6 | desconexion lineas |  | 10min | 2016-08-11 13:45 | 2016-08-11 13:55 | 20 | 0d |  |
| 22 | 5.4.7 | Drenaje Aceite |  | 20min | 2016-08-11 13:55 | 2016-08-11 14:15 | 21 | 0d |  |
| 23 | 5.4.8 | desmontar de banco |  | 10min | 2016-08-11 14:15 | 2016-08-11 14:25 | 22 | 0d |  |
| 24 | 5.4.9 | informe de prueba |  | 1h | 2016-08-11 14:25 | 2016-08-11 15:25 | 23 | 0d |  |
| 25 | 5.4.10 | fin prueba | milestone | 0d | 2016-08-11 15:25 | 2016-08-11 15:25 | 24 | 0d |  |

| ID | WBS | Task | Type | Duration | Start | Finish | Predecessors | Total slack |
| --- | --- | --- | --- | --- | --- | --- | --- | --- |
| 26 | 5.5 | **embalaje** |  | 0.78d | 2016-08-11 13:45 | 2016-08-12 10:45 |  | 0d |
| 27 | 5.5.1 | fabricación pallet |  | 1h | 2016-08-11 13:45 | 2016-08-11 14:45 | 20 | 0.58d |
| 28 | 5.5.2 | Pintar Eje |  | 1h | 2016-08-11 15:25 | 2016-08-11 16:25 | 25 | 0d |
| 29 | 5.5.3 | secado de pintura |  | 3h | 2016-08-11 16:25 | 2016-08-12 10:10 | 28 | 0d |
| 30 | 5.5.4 | montar en pallet |  | 5min | 2016-08-12 10:10 | 2016-08-12 10:15 | 29, 27 | 0d |
| 31 | 5.5.5 | revisar tapones y tapas para despacho |  | 10min | 2016-08-12 10:15 | 2016-08-12 10:25 | 30 | 0d |
| 32 | 5.5.6 | instalar film de proteccion |  | 20min | 2016-08-12 10:25 | 2016-08-12 10:45 | 31 | 0d |
| 33 | 5.5.7 | fin embalaje | milestone | 0d | 2016-08-12 10:45 | 2016-08-12 10:45 | 32 | 0d |
