# Evaluacion y Armado R18000

Schedule from MS Project, 2016-07-27 to 2016-08-08.

## Calendars

- MD - 2015/2016: Mon-Fri 07:45-12:30, 13:15-17:00; Sat-Sun off. Exceptions (off unless hours are given): 2015-05-01 to 2024-05-01 (Día del trabajo, recurring), 2015-05-21 to 2024-05-21 (Glorias Navales, recurring), 2015-06-27 to 2024-06-27 (San Pedro y San Pablo, recurring), 2015-07-16 to 2024-07-16 (Solemnidad de la virgen del Carmen, recurring), 2015-08-15 to 2024-08-15 (Asuncion de la Virgen, recurring), 2015-09-18 to 2024-09-18 (Fiestas Patrias, recurring), 2015-09-19 to 2024-09-19 (Glorias Del Ejercito, recurring), 2015-10-12 to 2024-10-12 (Día de Descubrimiento de 2 Mundos, recurring), 2015-10-31 to 2024-10-31 (Día de las Iglesias Evangelicas y Protestantes, recurring), 2015-11-01 to 2024-11-01 (Día de Todos Los Santos, recurring), 2015-12-08 to 2024-12-08 (Día de la inmaculada Concepción, recurring), 2015-12-25 to 2024-12-25 (Navidad, recurring), 2016-01-01 to 2025-01-01 (Año Nuevo, recurring).

## Schedule

| ID | WBS | Task | Type | Duration | Start | Finish | Predecessors | Total slack |
| --- | --- | --- | --- | --- | --- | --- | --- | --- |
| 1 | 1 | Limpieza exterior |  | 1h | 2016-07-27 07:45 | 2016-07-27 08:45 |  | 0d |
| 2 | 2 | **Evaluacion** |  | 3.09d | 2016-07-27 08:45 | 2016-08-01 08:00 |  | 0d |
| 3 | 2.1 | Drenaje Aceite |  | 0.75h | 2016-07-27 08:45 | 2016-07-27 09:30 | 1 | 0d |
| 4 | 2.2 | Desarme |  | 8h | 2016-07-27 09:30 | 2016-07-28 09:00 | 3 | 0d |
| 5 | 2.3 | limpieza partes |  | 8h | 2016-07-28 09:00 | 2016-07-29 08:30 | 4 | 0d |
| 6 | 2.4 | Evaluacion de partes |  | 4h | 2016-07-29 08:30 | 2016-07-29 12:30 | 5 | 0d |
| 7 | 2.5 | Informe Tecnico |  | 4h | 2016-07-29 13:15 | 2016-08-01 08:00 | 6 | 0d |
| 8 | 2.6 | fin evaluacion | milestone | 0d | 2016-08-01 08:00 | 2016-08-01 08:00 | 7 | 0d |
| 9 | 3 | almacenaje piezas |  | 1h | 2016-08-01 08:00 | 2016-08-01 09:00 | 8 | 0d |
| 10 | 4 | Aceptacion de trabajo | milestone | 0d | 2016-08-01 09:00 | 2016-08-01 09:00 | 9 | 0d |
| 11 | 5 | preparacion partes |  | 2h | 2016-08-01 09:00 | 2016-08-01 11:00 | 10 | 0d |
| 12 | 6 | revision repuestos |  | 1h | 2016-08-01 11:00 | 2016-08-01 12:00 | 11 | 0d |
| 13 | 7 | **Armado** |  | 4.84d | 2016-08-01 12:00 | 2016-08-08 08:15 |  | 0d |
| 14 | 7.1 | armado |  | 18h | 2016-08-01 12:00 | 2016-08-03 13:45 | 12 | 0d |
| 15 | 7.2 | **prueba** |  | 1.72d | 2016-08-03 13:45 | 2016-08-05 09:45 |  | 0d |
| 16 | 7.2.1 | montaje en banco |  | 1h | 2016-08-03 13:45 | 2016-08-03 14:45 | 14 | 0d |
| 17 | 7.2.2 | conexiónes hidraulicas |  | 0.5h | 2016-08-03 14:45 | 2016-08-03 15:15 | 16 | 0d |
| 18 | 7.2.3 | conexion de sensores |  | 0.5h | 2016-08-03 15:15 | 2016-08-03 15:45 | 17 | 0d |
| 19 | 7.2.4 | llenado de aceite |  | 1h | 2016-08-03 15:45 | 2016-08-03 16:45 | 18 | 0d |
| 20 | 7.2.5 | Prueba Funcionamiento |  | 4h | 2016-08-03 16:45 | 2016-08-04 11:30 | 19 | 0d |
| 21 | 7.2.6 | desconexion lineas |  | 0.5d | 2016-08-04 11:30 | 2016-08-04 16:15 | 20 | 0d |
| 22 | 7.2.7 | Drenaje Aceite |  | 0.75h | 2016-08-04 16:15 | 2016-08-04 17:00 | 21 | 0d |
| 23 | 7.2.8 | desmontar de banco |  | 1h | 2016-08-05 07:45 | 2016-08-05 08:45 | 22 | 0d |
| 24 | 7.2.9 | informe de prueba |  | 1h | 2016-08-05 08:45 | 2016-08-05 09:45 | 23 | 0d |
| 25 | 7.2.10 | fin prueba | milestone | 0d | 2016-08-05 09:45 | 2016-08-05 09:45 | 24 | 0d |

| ID | WBS | Task | Type | Duration | Start | Finish | Predecessors | Total slack |
| --- | --- | --- | --- | --- | --- | --- | --- | --- |
| 26 | 7.3 | **embalaje** |  | 1.72d | 2016-08-04 11:30 | 2016-08-08 08:15 |  | 0d |
| 27 | 7.3.1 | fabricación pallet |  | 2h | 2016-08-04 11:30 | 2016-08-04 14:15 | 20 | 1.34d |
| 28 | 7.3.2 | pintar transmision |  | 2h | 2016-08-05 09:45 | 2016-08-05 11:45 | 25 | 0d |
| 29 | 7.3.3 | secado de pintura |  | 4h | 2016-08-05 11:45 | 2016-08-05 16:30 | 28 | 0d |
| 30 | 7.3.4 | montar en pallet |  | 10min | 2016-08-05 16:30 | 2016-08-05 16:40 | 29, 27 | 0d |
| 31 | 7.3.5 | revisar tapones y tapas para despacho |  | 20min | 2016-08-05 16:40 | 2016-08-05 17:00 | 30 | 0d |
| 32 | 7.3.6 | instalar film de proteccion |  | 30min | 2016-08-08 07:45 | 2016-08-08 08:15 | 31 | 0d |
| 33 | 7.3.7 | fin embalaje | milestone | 0d | 2016-08-08 08:15 | 2016-08-08 08:15 | 32 | 0d |
